# ABP Planificacion

How a schedule from MS Project changed from version to version. A marks actual dates.

## Version 1 (saved 2018-10-05)

Note of the change: Se pone la estructura de hito > iteracion > [asignatura]tarea

| ID | WBS | Task | Duration | Start | Finish | Total float | Constraint |
| --- | --- | --- | --- | --- | --- | --- | --- |
| 1 | 1 | **Hito 0** | 22.2d | 2018-09-10 | 2018-10-10 | 148.8d |  |
| 2 | 1.1 | **Iteracion 1** | 16.2d | 2018-09-10 | 2018-10-02 | 154.8d |  |
| 3 |  | [PM]Rellenar documento de Concepto del proyecto | 9.6h | 2018-09-10 | 2018-09-11 | 169.8d | start no earlier than 2018-09-10 |
| 4 |  | [PM]Rellenar Version inicial del documento Especificacion | 9.6h | 2018-10-01 | 2018-10-02 | 154.8d |  |
| 5 | 1.2 | **Iteracion 2** | 7.2d | 2018-10-01 | 2018-10-10 | 148.8d |  |
| 6 |  | [PM]Completar y Revisar documento Especificacion | 9.6h | 2018-10-01 | 2018-10-02 | 154.8d |  |
| 7 |  | [PM]Crear WBS del proyecto project | 28.8h | 2018-10-01 | 2018-10-04 | 152.4d |  |
| 8 |  | [PM]Crear plan general (tareas y precedencias basicas) en project | 28.8h | 2018-10-01 | 2018-10-04 | 152.4d |  |
| 9 |  | [PM]Elaborar el Presupuesto(hoja de calculo) | 57.6h | 2018-10-01 | 2018-10-10 | 148.8d |  |
| 10 | 2 | **Hito 1** | 49d? | 2018-10-01 | 2018-12-06 | 0d |  |
| 11 | 2.1 | **Iteracion 3** | 1d | 2018-10-10 | 2018-10-10 | 0d |  |
| 12 |  | <Tarea nueva> | 1d? | 2018-10-10 | 2018-10-10 |  |  |
| 13 | 2.2 | **Iteracion 4** | 1d | 2018-10-25 | 2018-10-25 | 0d |  |
| 14 |  | <Tarea nueva> | 1d? | 2018-10-25 | 2018-10-25 |  |  |
| 15 | 2.3 | **Iteracion 5** | 1d | 2018-11-08 | 2018-11-08 | 0d |  |
| 16 |  | <Tarea nueva> | 1d? | 2018-11-08 | 2018-11-08 |  |  |
| 17 | 2.4 | **Iteracion 6** | 1d | 2018-11-22 | 2018-11-22 | 0d |  |
| 18 |  | <Tarea nueva> | 1d? | 2018-11-22 | 2018-11-22 |  |  |
| 19 | 2.5 | **Iteracion 7** | 1d | 2018-12-06 | 2018-12-06 | 0d |  |
| 20 |  | <Tarea nueva> | 1d? | 2018-12-06 | 2018-12-06 |  |  |
| 21 |  | [PM]Detallar plan iteraciones del mes de Noviembre. Creación Subtareas y precedencias en Project | 1d | 2018-10-01 | 2018-10-01 | 155d |  |
| 22 |  | [PM]Detallar plan iteraciones del mes de Noviembre. Asignar recursos a las tareas en Project | 1d? | 2018-10-01 | 2018-10-01 | 155d |  |
| 23 |  | [PM]Detallar plan iteraciones del mes de Diciembre. Creación Subtareas y precedencias en Project | 1d? | 2018-10-01 | 2018-10-01 | 155d |  |
| 24 |  | [PM]Detallar plan iteraciones del mes de Diciembre. Asignar recursos a las tareas en Project | 1d? | 2018-10-01 | 2018-10-01 | 155d |  |
| 25 |  | [PM]Rellenar documento Gestión de riesgos | 1d? | 2018-10-01 | 2018-10-01 | 155d |  |
| 26 |  | [PM]Registrar tiempos y % de realización de tareas en Project | 1d? | 2018-10-01 | 2018-10-01 | 155d |  |
| 27 |  | [PM]Comparar la planificación prevista y real en Project hito 1 | 1d? | 2018-10-01 | 2018-10-01 | 155d |  |
| 28 |  | [PM]Aplicar el modelo EVA en Project | 1d? | 2018-10-01 | 2018-10-01 | 155d |  |
| 29 |  | [PM]Confeccionar Informes de iteración e informe resumen de Hito 1 | 1d? | 2018-10-01 | 2018-10-01 | 155d |  |
| 30 |  | [PM]Elaborar la presentación del Hito 1 | 1d? | 2018-10-01 | 2018-10-01 | 155d |  |
| 31 |  | [PM]Exponer la presentación del Hito 1 | 1d? | 2018-10-01 | 2018-10-01 | 155d |  |
| 32 |  | [V1]Documento de diseño de mecánicas de los NPCs | 1d | 2018-10-01 | 2018-10-01 | 155d |  |
| 33 |  | [V1]Documento de diseño de toma de decisión: espacio y métodos | 1d? | 2018-10-01 | 2018-10-01 | 155d |  |
| 34 |  | [V1]Documento de diseño técnico del motor de IA | 1d? | 2018-10-01 | 2018-10-01 | 155d |  |
| 35 |  | [V1]Sistema de toma de decisión con Behaviour Trees | 1d? | 2018-10-01 | 2018-10-01 | 155d |  |
| 36 |  | [V1]Sistema de percepción sensorial (vista, oído, olfato, canales…) | 1d? | 2018-10-01 | 2018-10-01 | 155d |  |
| 37 |  | [V2]Diseño e implementación de la arquitectura basada en objetos (diagrama de clases e implementación) | 1d | 2018-10-01 | 2018-10-01 | 155d |  |
| 38 |  | [V2]Diseño e implementación de la arquitectura basada en componentes (diagrama de clases e implementación) | 1d | 2018-10-01 | 2018-10-01 | 155d |  |
| 39 |  | [V2]Control del player: movimiento y colisiones sin motor de físicas | 1d | 2018-10-01 | 2018-10-01 | 155d |  |
| 40 |  | [V2]Mecánicas básicas entidades sin IA | 1d | 2018-10-01 | 2018-10-01 | 155d |  |
| 41 |  | [V2]Mecánicas de acción | 1d | 2018-10-01 | 2018-10-01 | 155d |  |
| 42 |  | [V2]Mecánicas de rol | 1d | 2018-10-01 | 2018-10-01 | 155d |  |
| 43 |  | [V2]Creación de un cargador de niveles | 1d | 2018-10-01 | 2018-10-01 | 155d |  |
| 44 |  | [V2]Diseño y creación de niveles | 1d | 2018-10-01 | 2018-10-01 | 155d |  |
| 45 |  | [V2]Implementación de cámara de seguimiento | 1d | 2018-10-01 | 2018-10-01 | 155d |  |
| 46 |  | [PD]Vídeo con animación del logo de la empresa | 1d | 2018-10-01 | 2018-10-01 | 155d |  |
| 47 |  | [PD]Cartel juego/proyecto | 1d | 2018-10-01 | 2018-10-01 | 155d |  |
| 48 |  | [TDS]Síntesis | 1d | 2018-10-01 | 2018-10-01 | 155d |  |
| 49 |  | [TDS]Grabaciones propias | 1d | 2018-10-01 | 2018-10-01 | 155d |  |
| 50 |  | [TDS]Sonidos externos | 1d | 2018-10-01 | 2018-10-01 | 155d |  |
| 51 |  | [TDS]Música | 1d | 2018-10-01 | 2018-10-01 | 155d |  |
| 52 |  | [TDS]Cue Sheet | 1d | 2018-10-01 | 2018-10-01 | 155d |  |
| 53 |  | [TDS]Hoja de metadatos | 1d | 2018-10-01 | 2018-10-01 | 155d |  |
| 54 |  | [TDS]Integración del motor de audio en el juego con prueba de concepto | 1d | 2018-10-01 | 2018-10-01 | 155d |  |
| 55 |  | [RV]Boceto de los personajes | 1d | 2018-10-01 | 2018-10-01 | 155d |  |
| 56 |  | [RV]Bocetos de los elementos | 1d | 2018-10-01 | 2018-10-01 | 155d |  |
| 57 |  | [RV]Bocetos del entorno | 1d | 2018-10-01 | 2018-10-01 | 155d |  |
| 58 |  | <Tarea nueva> | 1d? | 2018-10-01 | 2018-10-01 |  |  |
| 59 | 3 | **Hito 2** | 76d? | 2018-10-01 | 2019-01-14 | 52d |  |
| 60 | 3.1 | **Navidad** | 1d | 2018-12-11 | 2018-12-12 | 0d |  |
| 61 |  | <Tarea nueva> | 1d? | 2018-12-11 | 2018-12-12 |  |  |
| 62 | 3.2 | **Iteracion 8** | 1d | 2019-01-14 | 2019-01-14 | 0d |  |
| 63 |  | <Tarea nueva> | 1d? | 2019-01-14 | 2019-01-14 |  |  |
| 64 |  | [PM]Revisar especificación proyecto | 1d | 2018-10-01 | 2018-10-01 | 155d |  |
| 65 |  | [PM]Reestimar proyecto | 1d? | 2018-10-01 | 2018-10-01 | 155d |  |
| 66 |  | [PM]Detallar plan iteraciones del mes de Enero. Creación Subtareas y precedencias en Project | 1d? | 2018-10-01 | 2018-10-01 | 155d |  |
| 67 |  | [PM]Detallar plan iteraciones del mes de Enero. Asignar recursos a las tareas en Project | 1d? | 2018-10-01 | 2018-10-01 | 155d |  |
| 68 |  | [PM]Registrar tiempos y % de realización de tareas en Project | 1d? | 2018-10-01 | 2018-10-01 | 155d |  |
| 69 |  | [PM]Comparar la planificación prevista y real en Project hito 2 | 1d? | 2018-10-01 | 2018-10-01 | 155d |  |
| 70 |  | [PM]Confeccionar Informes de iteración e informe resumen de Hito 2 | 1d? | 2018-10-01 | 2018-10-01 | 155d |  |

| ID | WBS | Task | Duration | Start | Finish | Total float |
| --- | --- | --- | --- | --- | --- | --- |
| 71 |  | [V1]Sistema de depuración visual in-game de la IA | 1d | 2018-10-01 | 2018-10-01 | 155d |
| 72 |  | [V1]Sistema de distribución central de tiempo de proceso (Scheduling) | 1d? | 2018-10-01 | 2018-10-01 | 155d |
| 73 |  | [V2]Power-ups y elementos adicionales | 1d | 2018-10-01 | 2018-10-01 | 155d |
| 74 |  | [V2]Integración de librería para GUI | 1d | 2018-10-01 | 2018-10-01 | 155d |
| 75 |  | [V2]Implementación de menús | 1d | 2018-10-01 | 2018-10-01 | 155d |
| 76 |  | [V2]Implementación del HUD | 1d | 2018-10-01 | 2018-10-01 | 155d |
| 77 |  | [PD]Trailer juego/proyecto | 1d | 2018-10-01 | 2018-10-01 | 155d |
| 78 |  | [PD]Making of juego/proyecto | 1d | 2018-10-01 | 2018-10-01 | 155d |
| 79 |  | [RV]Modelado de los personajes | 1d | 2018-10-01 | 2018-10-01 | 155d |
| 80 |  | [RV]Texturizado de los personajes | 1d | 2018-10-01 | 2018-10-01 | 155d |
| 81 |  | [RV]Modelado del entorno y elementos | 1d | 2018-10-01 | 2018-10-01 | 155d |
| 82 |  | <Tarea nueva> | 1d? | 2018-10-01 | 2018-10-01 | 155d |
| 83 | 4 | **Hito 3** | 114d? | 2018-10-01 | 2019-03-07 | 42d |
| 84 | 4.1 | **Iteracion 9** | 1d | 2019-01-24 | 2019-01-24 | 0d |
| 85 |  | <Tarea nueva> | 1d? | 2019-01-24 | 2019-01-24 |  |
| 86 | 4.2 | **Iteracion 10** | 1d | 2019-02-07 | 2019-02-07 | 0d |
| 87 |  | <Tarea nueva> | 1d? | 2019-02-07 | 2019-02-07 |  |
| 88 | 4.3 | **Iteracion 11** | 1d | 2019-02-22 | 2019-02-22 | 0d |
| 89 |  | <Tarea nueva> | 1d? | 2019-02-22 | 2019-02-22 |  |
| 90 | 4.4 | **Iteracion 12** | 1d | 2019-03-07 | 2019-03-07 | 0d |
| 91 |  | <Tarea nueva> | 1d? | 2019-03-07 | 2019-03-07 |  |
| 92 |  | [PM]Detallar plan iteraciones del mes de Febrero-Marzo. Creación Subtareas y precedencias en Project | 1d | 2018-10-01 | 2018-10-01 | 155d |
| 93 |  | [PM]Detallar plan iteraciones del mes de Febrero-Marzo Asignar recursos a las tareas en Project | 1d? | 2018-10-01 | 2018-10-01 | 155d |
| 94 |  | [PM]Registrar tiempos y % de realización de tareas en Project | 1d? | 2018-10-01 | 2018-10-01 | 155d |
| 95 |  | [PM]Comparar la planificación prevista y real en Project hito 3 | 1d? | 2018-10-01 | 2018-10-01 | 155d |
| 96 |  | [PM]Confeccionar Informes de iteración e informe resumen de Hito 3 | 1d? | 2018-10-01 | 2018-10-01 | 155d |
| 97 |  | [PM]Elaborar la presentación del Hito 3 | 1d? | 2018-10-01 | 2018-10-01 | 155d |
| 98 |  | [PM]Exponer la presentación del Hito 3 | 1d? | 2018-10-01 | 2018-10-01 | 155d |
| 99 |  | [TAG]Estructura básica del nodo (array de hijos, puntero a padre, puntero a entidad, funcionalidad básica -constructor, destructor, gets, sets, manejo de hijos….) | 1d? | 2018-10-01 | 2018-10-01 | 155d |
| 100 |  | [TAG]Recorrido-dibujado del árbol | 1d? | 2018-10-01 | 2018-10-01 | 155d |
| 101 |  | [TAG]Estructura básica de la entidad (Constructor, destructor, funciones… todas virtuales, vacías) | 1d | 2018-10-01 | 2018-10-01 | 155d |
| 102 |  | [TAG]Matrices (model, view, projection) y pila estáticas y su manejo | 1d? | 2018-10-01 | 2018-10-01 | 155d |
| 103 |  | [TAG]Estructura básica de la transformación (Constructor, destructor, matriz transformación…) | 1d? | 2018-10-01 | 2018-10-01 | 155d |
| 104 |  | [TAG]Operaciones de transformación (trasladar, rotar, escalar, identidad, trasponer, invertir, todas con GLM o GLMatrix) | 1d? | 2018-10-01 | 2018-10-01 | 155d |
| 105 |  | [TAG]Dibujado (begindraw, enddraw, manejo pila y matriz model) | 1d? | 2018-10-01 | 2018-10-01 | 155d |
| 106 |  | [TAG]Estructura básica de la cámara (Constructor, destructor, matriz proyección) | 1d? | 2018-10-01 | 2018-10-01 | 155d |
| 107 |  | [TAG]Rellenar matriz perspectiva (con GLM o GLMatrix) | 1d | 2018-10-01 | 2018-10-01 | 155d |
| 108 |  | [TAG]Estructura básica de la luz (Constructor, destructor) | 1d? | 2018-10-01 | 2018-10-01 | 155d |
| 109 |  | [TAG]Datos y funciones luz puntual | 1d? | 2018-10-01 | 2018-10-01 | 155d |
| 110 |  | [TAG]Estructura básica de la malla (Constructor, destructor) | 1d? | 2018-10-01 | 2018-10-01 | 155d |
| 111 |  | [TAG]Datos de mallas, texturas, materiales… (llamadas al gestor de recursos) | 1d? | 2018-10-01 | 2018-10-01 | 155d |
| 112 |  | [TAG]Dibujado de mallas (begindraw, enddraw, matriz model…) | 1d? | 2018-10-01 | 2018-10-01 | 155d |
| 113 |  | [TAG]Estructura básica del gestor de recursos (constructor, destructor, vectores de recursos) | 1d? | 2018-10-01 | 2018-10-01 | 155d |
| 114 |  | [TAG]Obtener recurso (gestión adecuada de memoria) | 1d? | 2018-10-01 | 2018-10-01 | 155d |
| 115 |  | [TAG]Estructura básica del recurso (constructor, destructor. Es virtual, vacío) | 1d? | 2018-10-01 | 2018-10-01 | 155d |
| 116 |  | [TAG]Estructura básica de la malla (constructor, destructor) | 1d? | 2018-10-01 | 2018-10-01 | 155d |
| 117 |  | [TAG]Lectura de disco (con assimp) | 1d? | 2018-10-01 | 2018-10-01 | 155d |
| 118 |  | [TAG]Creación de buffers de vértices, normales, índices… y relleno | 1d? | 2018-10-01 | 2018-10-01 | 155d |
| 119 |  | [TAG]Dibujado de las mallas (draw, con paso de los buffers a OpenGL o WebGL) | 1d? | 2018-10-01 | 2018-10-01 | 155d |
| 120 |  | [TAG]Estructura básica del material (constructor, destructor) | 1d? | 2018-10-01 | 2018-10-01 | 155d |
| 121 |  | [TAG]Leer material de disco (con librería o con parser propio) y rellenar valores | 1d? | 2018-10-01 | 2018-10-01 | 155d |
| 122 |  | [TAG]Dibujado de los materiales (preparar los materiales y cargarlos en OpenGL o WebGL) | 1d? | 2018-10-01 | 2018-10-01 | 155d |
| 123 |  | [TAG]Estructura básica del shader (constructor, destructor) | 1d? | 2018-10-01 | 2018-10-01 | 155d |
| 124 |  | [TAG]Lectura de shaders de disco (con parser propio) y guardarlo | 1d? | 2018-10-01 | 2018-10-01 | 155d |
| 125 |  | [TAG]Estructura básica de la interfaz (constructor, destructor, inicialización motor y openGL) | 1d? | 2018-10-01 | 2018-10-01 | 155d |
| 126 |  | [TAG]Funciones para crear cámaras y gestionarlas (manejo de las cámaras, registro, cálculo de la matriz view) | 1d? | 2018-10-01 | 2018-10-01 | 155d |
| 127 |  | [TAG]Funciones para crear luces y gestionarlas (manejo de las luces registro, cálculo de la matriz light) | 1d? | 2018-10-01 | 2018-10-01 | 155d |
| 128 |  | [TAG]Funciones para crear transformaciones (creación de varios nodos con las transformaciones, manejo de las transformaciones) | 1d? | 2018-10-01 | 2018-10-01 | 155d |
| 129 |  | [TAG]Funciones para crear mallas y animaciones | 1d? | 2018-10-01 | 2018-10-01 | 155d |
| 130 |  | [TAG]Funciones para crear shaders y gestionarlos | 1d? | 2018-10-01 | 2018-10-01 | 155d |
| 131 |  | [TAG]Shader básico (Sombreado de Phong, reflexión de Phong) con materiales | 1d? | 2018-10-01 | 2018-10-01 | 155d |
| 132 |  | [TAG]Integración con la aplicación | 1d? | 2018-10-01 | 2018-10-01 | 155d |
| 133 |  | [TAG]Realización de una fachada entre el motor y la aplicación o videojuego | 1d? | 2018-10-01 | 2018-10-01 | 155d |
| 134 |  | [TAG]Librería matemática (GLM o GLMatrix) | 1d? | 2018-10-01 | 2018-10-01 | 155d |
| 135 |  | [TAG][Solo CED] Librería de lectura de mallas (assimp…) | 1d? | 2018-10-01 | 2018-10-01 | 155d |
| 136 |  | [TAG][Solo CED] Librería de ventanas, entrada/salida... (GLFW…) | 1d? | 2018-10-01 | 2018-10-01 | 155d |
| 137 |  | [V1]Flocking: comportamiento grupal emergente | 1d | 2018-10-01 | 2018-10-01 | 155d |
| 138 |  | [V1]Editor in-game de parámetros y comportamientos de la IA | 1d | 2018-10-01 | 2018-10-01 | 155d |
| 139 |  | [V1]Sistema de logros y puntuaciones web | 1d | 2018-10-01 | 2018-10-01 | 155d |
| 140 |  | [V2]Implementación de cesped y vegetación | 1d | 2018-10-01 | 2018-10-01 | 155d |

| ID | WBS | Task | Duration | Start | Finish | Total float |
| --- | --- | --- | --- | --- | --- | --- |
| 141 |  | [V2]Implementación de nubes | 1d | 2018-10-01 | 2018-10-01 | 155d |
| 142 |  | [V2]Implementación de sistemas de partículas | 1d | 2018-10-01 | 2018-10-01 | 155d |
| 143 |  | [TDS]Resto de la biblioteca (máx. 1/3), cuesheet y metadatos finales | 1d | 2018-10-01 | 2018-10-01 | 155d |
| 144 |  | <Tarea nueva> | 1d? | 2018-10-01 | 2018-10-01 | 155d |
| 145 | 5 | **hito 4** | 156d? | 2018-10-01 | 2019-05-06 | 0d |
| 146 | 5.1 | **Iteracion 13** | 1d | 2019-03-28 | 2019-03-28 | 0d |
| 147 |  | <Tarea nueva> | 1d? | 2019-03-28 | 2019-03-28 |  |
| 148 | 5.2 | **Semana santa** | 1d | 2019-04-18 | 2019-04-18 | 0d |
| 149 |  | <Tarea nueva> | 1d? | 2019-04-18 | 2019-04-18 |  |
| 150 | 5.3 | **Iteracion 14** | 1d | 2019-05-06 | 2019-05-06 | 0d |
| 151 |  | <Tarea nueva> | 1d? | 2019-05-06 | 2019-05-06 |  |
| 152 |  | [PM]Detallar plan iteraciones del mes de Abril-Mayo. Creación Subtareas y precedencias en Project | 1d | 2018-10-01 | 2018-10-01 | 155d |
| 153 |  | [PM]Detallar plan iteraciones del mes de Abril-Mayo. Asignar recursos a las tareas en Project | 1d? | 2018-10-01 | 2018-10-01 | 155d |
| 154 |  | [PM]Registrar tiempos y % de realización de tareas en Project | 1d? | 2018-10-01 | 2018-10-01 | 155d |
| 155 |  | [PM]Comparar la planificación prevista y real en Project hito 4 | 1d? | 2018-10-01 | 2018-10-01 | 155d |
| 156 |  | [PM]Confeccionar Informes de iteración e informe resumen de Hito 4 | 1d? | 2018-10-01 | 2018-10-01 | 155d |
| 157 |  | [PM]Elaborar la presentación del Hito 4 | 1d? | 2018-10-01 | 2018-10-01 | 155d |
| 158 |  | [PM]Exponer la presentación del Hito 4 | 1d? | 2018-10-01 | 2018-10-01 | 155d |
| 159 |  | [TAG]Estructura básica de la animación (Constructor, destructor) | 1d | 2018-10-01 | 2018-10-01 | 155d |
| 160 |  | [TAG]Datos de animaciones, mallas, texturas, materiales (multiples, con llamadas al gestor de recursos) | 1d? | 2018-10-01 | 2018-10-01 | 155d |
| 161 |  | [TAG]Dibujado de texturas (preparar las texturas y cargarlas en OpenGL o WebGL) | 1d? | 2018-10-01 | 2018-10-01 | 155d |
| 162 |  | [TAG]Shader básico (Sombreado de Phong, reflexión de Phong) con materiales y texturas | 1d? | 2018-10-01 | 2018-10-01 | 155d |
| 163 |  | [TAG]Shader Cartoon | 1d? | 2018-10-01 | 2018-10-01 | 155d |
| 164 |  | [TAG]Bounding boxes (incluye retocar nodos, entidades y recursos malla) | 1d? | 2018-10-01 | 2018-10-01 | 155d |
| 165 |  | [TAG]Backface culling | 1d? | 2018-10-01 | 2018-10-01 | 155d |
| 166 |  | [TAG]Frustum culling | 1d? | 2018-10-01 | 2018-10-01 | 155d |
| 167 |  | [TAG]Sombras proyectadas | 1d? | 2018-10-01 | 2018-10-01 | 155d |
| 168 |  | [TAG]Sistema de partículas (sólo la incorporación en el motor) | 1d? | 2018-10-01 | 2018-10-01 | 155d |
| 169 |  | [PD]Créditos | 1d | 2018-10-01 | 2018-10-01 | 155d |
| 170 |  | [PD]Vídeo final juego / explicación parte del proyecto | 1d | 2018-10-01 | 2018-10-01 | 155d |
| 171 |  | [TDS]Integración de sonido y música en el juego | 1d | 2018-10-01 | 2018-10-01 | 155d |
| 172 |  | [TDS]Post producción (mezcla y masterización in-game) | 1d | 2018-10-01 | 2018-10-01 | 155d |
| 173 |  | [TDS]Sonido generado proceduralmente in-game | 1d | 2018-10-01 | 2018-10-01 | 155d |
| 174 |  | [RV]Rigging de los personajes | 1d | 2018-10-01 | 2018-10-01 | 155d |
| 175 |  | [RV]Captura de movimiento | 1d | 2018-10-01 | 2018-10-01 | 155d |
| 176 |  | [RV]Animación de los personajes | 1d | 2018-10-01 | 2018-10-01 | 155d |
| 177 |  | [RV]Texturizado del entorno y elementos | 1d | 2018-10-01 | 2018-10-01 | 155d |

## Version 2 (saved 2018-10-09)

Note of the change: Se arreglan varios problemas con las fechas y se agregan los objetivos finales de cada hito

Last finish stays 2019-05-06. Complete tasks 0 → 4.

Added:

| ID | Task | Duration | Start | Finish | Predecessors | Constraint | Resources |
| --- | --- | --- | --- | --- | --- | --- | --- |
| 10 | Documento de Especificaciones realizado | 0d | 2018-10-10 | 2018-10-10 | 1 | start no earlier than 2018-10-10 |  |
| 14 | [v1] Documento de diseño de toma de decision: espacio y metodos | 32h | 2018-10-16 | 2018-10-22 | 13 |  | David Ramón Sevilla [15%]; Jose Vicente Anton Coy [20%]; Marines Ánton Castelló [20%]; Débora Galdeano González [5%] |
| 19 | [TDS]Grabaciones propias | 20h | 2018-10-11 | 2018-10-15 |  |  | David Ramón Sevilla [15%]; Jose Ramon Barea Cecilia [17%]; María Sánchez Marqués [25%]; Débora Galdeano González [10%] |
| 29 | [v2]Utilización de joints en las mecánicas jugables | 17h | 2018-10-25 | 2018-10-29 |  |  | David Ramón Sevilla [10%]; Débora Galdeano González [10%]; Jose Ramon Barea Cecilia [10%]; Jose Vicente Anton Coy [10%]; María Sánchez Marqués [10%]; Marines Ánton Castelló [10%] |
| 31 | [PM]Registrar tiempos y % de realización de tareas en Project | 2h | 2018-12-21 | 2018-12-21 |  | finish no earlier than 2018-12-21 | David Ramón Sevilla [2%]; Débora Galdeano González [2%]; Jose Ramon Barea Cecilia [2%]; Jose Vicente Anton Coy [2%]; María Sánchez Marqués [2%]; Marines Ánton Castelló [2%] |
| 37 | [v2]Formato propio para la definicion de los niveles(documentos con la especifiacion del formato) | 11h | 2018-11-08 | 2018-11-09 |  |  |  |
| 39 | [v2]Control del player: movimiento y colisiones sin motor de físicas | 40h | 2018-11-08 | 2018-11-14 |  |  |  |
| 40 | [v2]Implementacion de camara de seguimiento | 17h | 2018-11-08 | 2018-11-12 |  |  |  |
| 44 | [V1]Sistema de distribución central de tiempo de proceso (Scheduling) | 41h | 2018-11-22 | 2018-11-29 |  |  |  |
| 45 | [v1]Gestión de recursos de IA con Level-of-Detail (LoD) | 40h | 2018-11-29 | 2018-12-06 | 44 |  |  |
| 46 | [V2]Utilización de propiedades físicas en las mecánicas jugables | 17h | 2018-11-22 | 2018-11-26 |  |  |  |
| 47 | [V2]Uso de trazado de rayos y otros tests de las físicas | 17h | 2018-11-22 | 2018-11-26 |  |  |  |
| 55 | [v2]Mecanicas de puzzle | 32h | 2018-12-06 | 2018-12-11 |  |  |  |
| 57 | [v2]Uso de sistema de depuración visual de las físicas | 10h | 2018-12-06 | 2018-12-07 |  |  |  |
| 58 | [v2]Power-ups y elementos adicionales | 28h | 2018-12-06 | 2018-12-11 |  |  |  |
| 63 | Versión Alpha de mecánicas | 0d | 2018-12-22 | 2018-12-22 | 11 | start no earlier than 2018-12-22 |  |
| 87 | Version Beta del juego, que se pueda jugar | 0d | 2019-01-11 | 2019-01-11 | 64 | start no earlier than 2018-12-22 |  |
| 150 | Versión Producción - Lista para pulir | 0d | 2019-03-06 | 2019-03-06 | 88 | start no earlier than 2019-03-06 |  |
| 184 | Version terminada | 0d | 2019-05-06 | 2019-05-06 | 151 | start no earlier than 2018-10-24 |  |

Removed: 12 <Tarea nueva>; 14 <Tarea nueva>; 16 <Tarea nueva>; 18 <Tarea nueva>; 20 <Tarea nueva>; 33 [V1]Documento de diseño de toma de decisión: espacio y métodos; 39 [V2]Control del player: movimiento y colisiones sin motor de físicas; 44 [V2]Diseño y creación de niveles; 45 [V2]Implementación de cámara de seguimiento; 51 [TDS]Música; 58 <Tarea nueva>; 82 <Tarea nueva>

Changed:

| ID | Task | Start | Finish | Duration | Complete | Total float | Predecessors | Other |
| --- | --- | --- | --- | --- | --- | --- | --- | --- |
| 1 | **Hito 0** | 2018-09-10 A |  |  | 0% → 78% |  |  |  |
| 2 | **Iteracion 1** | 2018-09-10 A | 2018-10-02 A |  | 0% → 100% | 154.8d → none |  |  |
| 3 | [PM]Rellenar documento de Concepto del proyecto | 2018-09-10 A | 2018-09-11 A |  | 0% → 100% | 169.8d → none |  |  |
| 4 | [PM]Rellenar Version inicial del documento Especificacion | 2018-10-01 A | 2018-10-02 A |  | 0% → 100% | 154.8d → none |  |  |
| 5 | **Iteracion 2** | 2018-10-01 A |  |  | 0% → 75% |  |  |  |
| 6 | [PM]Completar y Revisar documento Especificacion | 2018-10-01 A |  |  | 0% → 75% |  |  |  |
| 7 | [PM]Crear WBS del proyecto project | 2018-10-01 A | 2018-10-04 A |  | 0% → 100% | 152.4d → none |  |  |
| 9 | [PM]Elaborar el Presupuesto(hoja de calculo) | 2018-10-01 A | 2018-10-10 A |  | 0% → 100% | 148.8d → none |  |  |
| 11 | **Hito 1** | 2018-10-01 → 2018-10-11 (+10d) | 2018-12-06 → 2018-12-21 (+15d) | 49d? → 52d |  | 0d → 9.75d |  | constraint none → start no earlier than 2018-10-11 |
| 12 | **Iteracion 3** | 2018-10-10 → 2018-10-11 (+1d) | 2018-10-10 → 2018-10-26 (+16d) | 1d → 12d |  | 0d → 9.75d |  | constraint none → start no earlier than 2018-10-11 |
| 13 | [V1]Documento de diseño de mecánicas de los NPCs | 2018-10-01 → 2018-10-11 (+10d) | 2018-10-01 → 2018-10-16 (+15d) | 1d → 27h |  | 155d → 129.62d |  | resources none → David Ramón Sevilla [25%]; Débora Galdeano González [12%]; Jose Vicente Anton Coy [25%]; Marines Ánton Castelló [25%] |
| 15 | [V1]Documento de diseño técnico del motor de IA | 2018-10-01 → 2018-10-22 (+21d) | 2018-10-01 → 2018-10-26 (+25d) | 1d? → 37h |  | 155d → 129.62d | none → 14 | resources none → David Ramón Sevilla [25%]; Débora Galdeano González [12%]; Jose Vicente Anton Coy [25%]; Marines Ánton Castelló [25%] |
| 16 | [V2]Diseño e implementación de la arquitectura basada en objetos (diagrama de clases e implementación) | 2018-10-01 → 2018-10-11 (+10d) | 2018-10-01 → 2018-10-24 (+23d) | 1d → 75h |  | 155d → 138.62d |  | resources none → David Ramón Sevilla [10%]; Débora Galdeano González [8%]; Jose Ramon Barea Cecilia [10%]; Jose Vicente Anton Coy [10%]; María Sánchez Marqués [30%]; Marines Ánton Castelló [20%] |
| 17 | [TDS]Grabaciones propias | 2018-10-01 → 2018-10-11 (+10d) | 2018-10-01 → 2018-10-16 (+15d) | 1d → 32h |  | 155d → 137.62d |  | resources none → David Ramón Sevilla [15%]; Débora Galdeano González [12%]; Jose Vicente Anton Coy [25%]; Marines Ánton Castelló [25%] |
| 18 | [TDS]Síntesis | 2018-10-01 → 2018-10-11 (+10d) | 2018-10-01 → 2018-10-15 (+14d) | 1d → 20h |  | 155d → 145.5d |  | resources none → David Ramón Sevilla [18%]; Jose Ramon Barea Cecilia [30%]; María Sánchez Marqués [30%]; Débora Galdeano González [18%] |
| 20 | [RV]Boceto de los personajes | 2018-10-01 → 2018-10-11 (+10d) | 2018-10-01 → 2018-10-16 (+15d) | 1d → 30h |  | 155d → 144.25d |  | resources none → Débora Galdeano González [10%] |
| 21 | [PD]Vídeo con animación del logo de la empresa | 2018-10-01 → 2018-10-11 (+10d) | 2018-10-01 → 2018-10-22 (+21d) | 1d → 60h |  | 155d → 140.5d |  | resources none → Jose Ramon Barea Cecilia [30%] |
| 22 | [PM]Registrar tiempos y % de realización de tareas en Project | 2018-10-01 → 2018-10-24 (+23d) | 2018-10-01 → 2018-10-24 (+23d) | 1d? → 2h |  | 155d → 0d |  | constraint none → must finish on 2018-10-24; resources none → David Ramón Sevilla [2%]; Débora Galdeano González [2%]; Jose Ramon Barea Cecilia [4%]; Jose Vicente Anton Coy [2%]; María Sánchez Marqués [4%]; Marines Ánton Castelló [2%] |
| 23 | **Iteracion 4** |  | 2018-10-25 → 2018-12-21 (+57d) | 1d → 42d |  | 0d → 96d |  | constraint none → start no earlier than 2018-10-25 |
| 24 | [PM]Rellenar documento Gestión de riesgos | 2018-10-01 → 2018-10-25 (+24d) | 2018-10-01 → 2018-10-29 (+28d) | 1d? → 23.04h |  | 155d → 135.12d |  | resources none → David Ramón Sevilla [2%]; Débora Galdeano González [2%]; Jose Ramon Barea Cecilia [2%]; María Sánchez Marqués [2%]; Marines Ánton Castelló [2%]; Jose Vicente Anton Coy [2%] |
| 25 | [RV]Bocetos de los elementos | 2018-10-01 → 2018-10-25 (+24d) | 2018-10-01 → 2018-10-29 (+28d) | 1d → 18h |  | 155d → 135.75d |  | resources none → Débora Galdeano González [8%]; Marines Ánton Castelló [8%]; María Sánchez Marqués [8%] |
| 26 | [V1]Sistema de toma de decisión con Behaviour Trees | 2018-10-01 → 2018-11-01 (+31d) | 2018-10-01 → 2018-11-12 (+42d) | 1d? → 51h |  | 155d → 125.88d | none → 27, 17, 15 | resources none → David Ramón Sevilla [15%]; Débora Galdeano González [15%]; Jose Vicente Anton Coy [15%]; Marines Ánton Castelló [15%] |
| 27 | [V1]Sistema de percepción sensorial (vista, oído, olfato, canales…) | 2018-10-01 → 2018-10-25 (+24d) | 2018-10-01 → 2018-11-01 (+31d) | 1d? → 46h |  | 155d → 125.88d | none → 13 | resources none → David Ramón Sevilla [15%]; Débora Galdeano González [15%]; Jose Vicente Anton Coy [15%]; Marines Ánton Castelló [15%] |
| 28 | [V2]Diseño e implementación de la arquitectura basada en componentes (diagrama de clases e implementación) | 2018-10-01 → 2018-10-25 (+24d) | 2018-10-01 → 2018-11-12 (+42d) | 1d → 100h |  | 155d → 125.5d |  | resources none → David Ramón Sevilla [10%]; Débora Galdeano González [10%]; Jose Ramon Barea Cecilia [10%]; Jose Vicente Anton Coy [10%]; María Sánchez Marqués [10%]; Marines Ánton Castelló [10%] |
| 30 | [V2]Mecánicas básicas entidades sin IA | 2018-10-01 → 2018-10-25 (+24d) | 2018-10-01 → 2018-10-30 (+29d) | 1d → 30h |  | 155d → 134.25d |  | resources none → David Ramón Sevilla [15%]; Débora Galdeano González [15%]; Jose Ramon Barea Cecilia [15%]; Jose Vicente Anton Coy [15%]; María Sánchez Marqués [15%]; Marines Ánton Castelló [15%] |
| 32 | **Iteracion 5** |  | 2018-11-08 → 2018-11-15 (+7d) | 1d → 5.76d |  | 0d → 122.24d |  | constraint none → start no earlier than 2018-11-08 |
| 33 | [PM]Aplicar el modelo EVA en Project | 2018-10-01 → 2018-11-08 (+38d) | 2018-10-01 → 2018-11-12 (+42d) | 1d? → 21.6h |  | 155d → 125.3d |  | resources none → David Ramón Sevilla [8%]; Débora Galdeano González [8%]; Jose Ramon Barea Cecilia [8%]; Jose Vicente Anton Coy [8%]; María Sánchez Marqués [8%]; Marines Ánton Castelló [8%]; Jesus Valiente |
| 34 | [PM]Detallar plan iteraciones del mes de Noviembre. Creación Subtareas y precedencias en Project | 2018-10-01 → 2018-11-08 (+38d) | 2018-10-01 → 2018-11-12 (+42d) | 1d → 23.04h |  | 155d → 122.24d |  | resources none → Jose Vicente Anton Coy [20%]; David Ramón Sevilla [15%] |
| 35 | [PM]Detallar plan iteraciones del mes de Noviembre. Asignar recursos a las tareas en Project | 2018-10-01 → 2018-11-12 (+42d) | 2018-10-01 → 2018-11-15 (+45d) | 1d? → 23.04h |  | 155d → 122.24d | none → 34 | resources none → David Ramón Sevilla [20%]; Jose Vicente Anton Coy [20%] |
| 36 | [TDS]Sonidos externos | 2018-10-01 → 2018-11-08 (+38d) | 2018-10-01 → 2018-11-12 (+42d) | 1d → 20h |  | 155d → 125.5d |  | resources none → David Ramón Sevilla [15%]; Jose Ramon Barea Cecilia [15%]; María Sánchez Marqués [15%]; Débora Galdeano González [15%] |
| 38 | [V2]Creación de un cargador de niveles | 2018-10-01 → 2018-11-09 (+39d) | 2018-10-01 → 2018-11-14 (+44d) | 1d → 28h |  | 155d → 123.12d | none → 37 |  |
| 41 | **Iteracion 6** |  | 2018-11-22 → 2018-12-06 (+14d) | 1d → 10.12d |  | 0d → 107.88d |  | constraint none → start no earlier than 2018-11-22 |
| 42 | [RV]Bocetos del entorno | 2018-10-01 → 2018-11-22 (+52d) | 2018-10-01 → 2018-11-26 (+56d) | 1d → 18h |  | 155d → 115.75d |  |  |
| 43 | [TDS]Cue Sheet | 2018-10-01 → 2018-11-22 (+52d) | 2018-10-01 → 2018-11-23 (+53d) | 1d → 10h |  | 155d → 116.75d |  | resources none → David Ramón Sevilla [15%]; Jose Ramon Barea Cecilia [15%]; María Sánchez Marqués [15%]; Débora Galdeano González [15%] |
| 48 | [V2]Mecánicas de acción | 2018-10-01 → 2018-11-22 (+52d) | 2018-10-01 → 2018-11-27 (+57d) | 1d → 30h |  | 155d → 114.25d |  |  |
| 49 | **Iteracion 7** |  | 2018-12-06 → 2018-12-17 (+11d) | 1d → 7.5d |  | 0d → 100.5d |  | constraint none → start no earlier than 2018-12-06 |
| 50 | [PM]Detallar plan iteraciones del mes de Diciembre. Creación Subtareas y precedencias en Project | 2018-10-01 → 2018-12-06 (+66d) | 2018-10-01 → 2018-12-10 (+70d) | 1d? → 23.04h |  | 155d → 102.24d |  |  |
| 51 | [PM]Detallar plan iteraciones del mes de Diciembre. Asignar recursos a las tareas en Project | 2018-10-01 → 2018-12-10 (+70d) | 2018-10-01 → 2018-12-13 (+73d) | 1d? → 23.04h |  | 155d → 102.24d | none → 50 |  |
| 52 | [TDS]Integración del motor de audio en el juego con prueba de concepto | 2018-10-01 → 2018-12-06 (+66d) | 2018-10-01 → 2018-12-07 (+67d) | 1d → 10h |  | 155d → 106.75d |  | resources none → David Ramón Sevilla [15%]; Jose Ramon Barea Cecilia [15%]; María Sánchez Marqués [15%]; Débora Galdeano González [15%] |
| 53 | [PD]Cartel juego/proyecto | 2018-10-01 → 2018-12-06 (+66d) | 2018-10-01 → 2018-12-17 (+77d) | 1d → 60h |  | 155d → 100.5d |  |  |
| 54 | [TDS]Hoja de metadatos | 2018-10-01 → 2018-12-06 (+66d) | 2018-10-01 → 2018-12-07 (+67d) | 1d → 10h |  | 155d → 106.75d |  | resources none → David Ramón Sevilla [15%]; Jose Ramon Barea Cecilia [15%]; María Sánchez Marqués [15%]; Débora Galdeano González [15%] |
| 56 | [V2]Mecánicas de rol | 2018-10-01 → 2018-12-06 (+66d) | 2018-10-01 → 2018-12-11 (+71d) | 1d → 30h |  | 155d → 104.25d |  |  |
| 59 | [PM]Comparar la planificación prevista y real en Project hito 1 | 2018-10-01 → 2018-10-11 (+10d) | 2018-10-01 → 2018-10-15 (+14d) | 1d? → 21.6h |  | 155d → 139d |  |  |
| 60 | [PM]Confeccionar Informes de iteración e informe resumen de Hito 1 | 2018-10-01 → 2018-10-15 (+14d) | 2018-10-01 → 2018-10-18 (+17d) | 1d? → 21.6h |  | 155d → 139d | none → 59 |  |
| 61 | [PM]Elaborar la presentación del Hito 1 | 2018-10-01 → 2018-10-18 (+17d) | 2018-10-01 → 2018-10-22 (+21d) | 1d? → 14.4h |  | 155d → 139d | none → 60 |  |
| 62 | [PM]Exponer la presentación del Hito 1 | 2018-10-01 → 2018-10-22 (+21d) | 2018-10-01 → 2018-10-23 (+22d) | 1d? → 14.4h |  | 155d → 139d | none → 61 |  |
| 64 | **Hito 2** | 2018-10-01 → 2018-12-24 (+84d) | 2019-01-14 → 2019-01-11 (-3d) | 76d? → 15d? |  | 52d → 10d |  |  |
| 65 | **Navidad** | 2018-12-11 → 2018-12-24 (+13d) | 2018-12-12 → 2018-12-24 (+12d) | 1d → 1d? |  | 0d → 24d |  | constraint none → start no earlier than 2018-12-22 |
| 66 | <Tarea nueva> | 2018-12-11 → 2018-12-24 (+13d) | 2018-12-12 → 2018-12-24 (+12d) |  |  | none → 24d |  |  |
| 67 | **Iteracion 8** | 2019-01-14 → 2019-01-11 (-3d) | 2019-01-14 → 2019-01-11 (-3d) | 1d → 1d? |  | 0d → 10d |  | constraint none → start no earlier than 2019-01-11 |
| 68 | <Tarea nueva> | 2019-01-14 → 2019-01-11 (-3d) | 2019-01-14 → 2019-01-11 (-3d) |  |  | none → 10d |  |  |
| 69 | [PM]Revisar especificación proyecto | 2018-10-01 → 2018-12-24 (+84d) | 2018-10-01 → 2018-12-24 (+84d) |  |  | 155d → 24d |  | constraint none → start no earlier than 2018-12-22 |
| 70 | [PM]Reestimar proyecto | 2018-10-01 → 2018-12-24 (+84d) | 2018-10-01 → 2018-12-24 (+84d) |  |  | 155d → 24d |  | constraint none → start no earlier than 2018-12-22 |
| 71 | [PM]Detallar plan iteraciones del mes de Enero. Creación Subtareas y precedencias en Project | 2018-10-01 → 2018-12-24 (+84d) | 2018-10-01 → 2018-12-24 (+84d) |  |  | 155d → 24d |  | constraint none → start no earlier than 2018-12-22 |
| 72 | [PM]Detallar plan iteraciones del mes de Enero. Asignar recursos a las tareas en Project | 2018-10-01 → 2018-12-24 (+84d) | 2018-10-01 → 2018-12-24 (+84d) |  |  | 155d → 24d |  | constraint none → start no earlier than 2018-12-22 |
| 73 | [PM]Registrar tiempos y % de realización de tareas en Project | 2018-10-01 → 2018-12-24 (+84d) | 2018-10-01 → 2018-12-24 (+84d) |  |  | 155d → 24d |  | constraint none → start no earlier than 2018-12-22 |
| 74 | [PM]Comparar la planificación prevista y real en Project hito 2 | 2018-10-01 → 2018-12-24 (+84d) | 2018-10-01 → 2018-12-24 (+84d) |  |  | 155d → 24d |  | constraint none → start no earlier than 2018-12-22 |
| 75 | [PM]Confeccionar Informes de iteración e informe resumen de Hito 2 | 2018-10-01 → 2018-12-24 (+84d) | 2018-10-01 → 2018-12-24 (+84d) |  |  | 155d → 24d |  | constraint none → start no earlier than 2018-12-22 |
| 76 | [V1]Sistema de depuración visual in-game de la IA | 2018-10-01 → 2018-12-24 (+84d) | 2018-10-01 → 2018-12-24 (+84d) |  |  | 155d → 24d |  | constraint none → start no earlier than 2018-12-22 |
| 77 | [V1]Sistema de distribución central de tiempo de proceso (Scheduling) | 2018-10-01 → 2018-12-24 (+84d) | 2018-10-01 → 2018-12-24 (+84d) |  |  | 155d → 24d |  | constraint none → start no earlier than 2018-12-22 |
| 78 | [V2]Power-ups y elementos adicionales | 2018-10-01 → 2018-12-24 (+84d) | 2018-10-01 → 2018-12-24 (+84d) |  |  | 155d → 24d |  | constraint none → start no earlier than 2018-12-22 |
| 79 | [V2]Integración de librería para GUI | 2018-10-01 → 2018-12-24 (+84d) | 2018-10-01 → 2018-12-24 (+84d) |  |  | 155d → 24d |  | constraint none → start no earlier than 2018-12-22 |
| 80 | [V2]Implementación de menús | 2018-10-01 → 2018-12-24 (+84d) | 2018-10-01 → 2018-12-24 (+84d) |  |  | 155d → 24d |  | constraint none → start no earlier than 2018-12-22 |
| 81 | [V2]Implementación del HUD | 2018-10-01 → 2018-12-24 (+84d) | 2018-10-01 → 2018-12-24 (+84d) |  |  | 155d → 24d |  | constraint none → start no earlier than 2018-12-22 |
| 82 | [PD]Trailer juego/proyecto | 2018-10-01 → 2018-12-24 (+84d) | 2018-10-01 → 2018-12-24 (+84d) |  |  | 155d → 24d |  | constraint none → start no earlier than 2018-12-22 |
| 83 | [PD]Making of juego/proyecto | 2018-10-01 → 2018-12-24 (+84d) | 2018-10-01 → 2018-12-24 (+84d) |  |  | 155d → 24d |  | constraint none → start no earlier than 2018-12-22 |
| 84 | [RV]Modelado de los personajes | 2018-10-01 → 2018-12-24 (+84d) | 2018-10-01 → 2018-12-24 (+84d) |  |  | 155d → 24d |  | constraint none → start no earlier than 2018-12-22 |
| 85 | [RV]Texturizado de los personajes | 2018-10-01 → 2018-12-24 (+84d) | 2018-10-01 → 2018-12-24 (+84d) |  |  | 155d → 24d |  | constraint none → start no earlier than 2018-12-22 |
| 86 | [RV]Modelado del entorno y elementos | 2018-10-01 → 2018-12-24 (+84d) | 2018-10-01 → 2018-12-24 (+84d) |  |  | 155d → 24d |  | constraint none → start no earlier than 2018-12-22 |
| 88 | **Hito 3** | 2018-10-01 → 2019-01-24 (+115d) | 2019-03-07 → 2019-03-06 (-1d) | 114d? → 30d? |  | 42d → 14d |  | constraint none → finish no later than 2019-03-26 |

| ID | Task | Start | Finish | Duration | Total float | Other |
| --- | --- | --- | --- | --- | --- | --- |
| 89 | **Iteracion 9** | 2019-01-24 → 2019-01-25 (+1d) | 2019-01-24 → 2019-01-25 (+1d) | 1d → 1d? | 0d → 42d | constraint none → start no earlier than 2019-01-25 |
| 90 | <Tarea nueva> | 2019-01-24 → 2019-01-25 (+1d) | 2019-01-24 → 2019-01-25 (+1d) |  | none → 42d |  |
| 91 | **Iteracion 10** | 2019-02-07 → 2019-02-06 (-1d) | 2019-02-07 → 2019-02-06 (-1d) | 1d → 1d? | 0d → 34d | constraint none → start no earlier than 2019-02-06 |
| 92 | <Tarea nueva> | 2019-02-07 → 2019-02-06 (-1d) | 2019-02-07 → 2019-02-06 (-1d) |  | none → 34d |  |
| 93 | **Iteracion 11** | 2019-02-22 → 2019-02-20 (-2d) | 2019-02-22 → 2019-02-20 (-2d) | 1d → 1d? | 0d → 24d | constraint none → start no earlier than 2019-02-20 |
| 94 | <Tarea nueva> | 2019-02-22 → 2019-02-20 (-2d) | 2019-02-22 → 2019-02-20 (-2d) |  | none → 24d |  |
| 95 | **Iteracion 12** | 2019-03-07 → 2019-03-06 (-1d) | 2019-03-07 → 2019-03-06 (-1d) | 1d → 1d? | 0d → 14d | constraint none → start no earlier than 2019-03-06 |
| 96 | <Tarea nueva> | 2019-03-07 → 2019-03-06 (-1d) | 2019-03-07 → 2019-03-06 (-1d) |  | none → 14d |  |
| 97 | [PM]Detallar plan iteraciones del mes de Febrero-Marzo. Creación Subtareas y precedencias en Project | 2018-10-01 → 2019-01-24 (+115d) | 2018-10-01 → 2019-01-24 (+115d) |  | 155d → 43d | constraint none → start no earlier than 2019-01-24 |
| 98 | [PM]Detallar plan iteraciones del mes de Febrero-Marzo Asignar recursos a las tareas en Project | 2018-10-01 → 2019-01-24 (+115d) | 2018-10-01 → 2019-01-24 (+115d) |  | 155d → 43d | constraint none → start no earlier than 2019-01-24 |
| 99 | [PM]Registrar tiempos y % de realización de tareas en Project | 2018-10-01 → 2019-01-24 (+115d) | 2018-10-01 → 2019-01-24 (+115d) |  | 155d → 43d | constraint none → start no earlier than 2019-01-24 |
| 100 | [PM]Comparar la planificación prevista y real en Project hito 3 | 2018-10-01 → 2019-01-24 (+115d) | 2018-10-01 → 2019-01-24 (+115d) |  | 155d → 43d | constraint none → start no earlier than 2019-01-24 |
| 101 | [PM]Confeccionar Informes de iteración e informe resumen de Hito 3 | 2018-10-01 → 2019-01-24 (+115d) | 2018-10-01 → 2019-01-24 (+115d) |  | 155d → 43d | constraint none → start no earlier than 2019-01-24 |
| 102 | [PM]Elaborar la presentación del Hito 3 | 2018-10-01 → 2019-01-24 (+115d) | 2018-10-01 → 2019-01-24 (+115d) |  | 155d → 43d | constraint none → start no earlier than 2019-01-24 |
| 103 | [PM]Exponer la presentación del Hito 3 | 2018-10-01 → 2019-01-24 (+115d) | 2018-10-01 → 2019-01-24 (+115d) |  | 155d → 43d | constraint none → start no earlier than 2019-01-24 |
| 104 | [TAG]Estructura básica del nodo (array de hijos, puntero a padre, puntero a entidad, funcionalidad básica -constructor, destructor, gets, sets, manejo de hijos….) | 2018-10-01 → 2019-01-24 (+115d) | 2018-10-01 → 2019-01-24 (+115d) |  | 155d → 43d | constraint none → start no earlier than 2019-01-24 |
| 105 | [TAG]Recorrido-dibujado del árbol | 2018-10-01 → 2019-01-24 (+115d) | 2018-10-01 → 2019-01-24 (+115d) |  | 155d → 43d | constraint none → start no earlier than 2019-01-24 |
| 106 | [TAG]Estructura básica de la entidad (Constructor, destructor, funciones… todas virtuales, vacías) | 2018-10-01 → 2019-01-24 (+115d) | 2018-10-01 → 2019-01-24 (+115d) |  | 155d → 43d | constraint none → start no earlier than 2019-01-24 |
| 107 | [TAG]Matrices (model, view, projection) y pila estáticas y su manejo | 2018-10-01 → 2019-01-24 (+115d) | 2018-10-01 → 2019-01-24 (+115d) |  | 155d → 43d | constraint none → start no earlier than 2019-01-24 |
| 108 | [TAG]Estructura básica de la transformación (Constructor, destructor, matriz transformación…) | 2018-10-01 → 2019-01-24 (+115d) | 2018-10-01 → 2019-01-24 (+115d) |  | 155d → 43d | constraint none → start no earlier than 2019-01-24 |
| 109 | [TAG]Operaciones de transformación (trasladar, rotar, escalar, identidad, trasponer, invertir, todas con GLM o GLMatrix) | 2018-10-01 → 2019-01-24 (+115d) | 2018-10-01 → 2019-01-24 (+115d) |  | 155d → 43d | constraint none → start no earlier than 2019-01-24 |
| 110 | [TAG]Dibujado (begindraw, enddraw, manejo pila y matriz model) | 2018-10-01 → 2019-01-24 (+115d) | 2018-10-01 → 2019-01-24 (+115d) |  | 155d → 43d | constraint none → start no earlier than 2019-01-24 |
| 111 | [TAG]Estructura básica de la cámara (Constructor, destructor, matriz proyección) | 2018-10-01 → 2019-01-24 (+115d) | 2018-10-01 → 2019-01-24 (+115d) |  | 155d → 43d | constraint none → start no earlier than 2019-01-24 |
| 112 | [TAG]Rellenar matriz perspectiva (con GLM o GLMatrix) | 2018-10-01 → 2019-01-24 (+115d) | 2018-10-01 → 2019-01-24 (+115d) |  | 155d → 43d | constraint none → start no earlier than 2019-01-24 |
| 113 | [TAG]Estructura básica de la luz (Constructor, destructor) | 2018-10-01 → 2019-01-24 (+115d) | 2018-10-01 → 2019-01-24 (+115d) |  | 155d → 43d | constraint none → start no earlier than 2019-01-24 |
| 114 | [TAG]Datos y funciones luz puntual | 2018-10-01 → 2019-01-24 (+115d) | 2018-10-01 → 2019-01-24 (+115d) |  | 155d → 43d | constraint none → start no earlier than 2019-01-24 |
| 115 | [TAG]Estructura básica de la malla (Constructor, destructor) | 2018-10-01 → 2019-01-24 (+115d) | 2018-10-01 → 2019-01-24 (+115d) |  | 155d → 43d | constraint none → start no earlier than 2019-01-24 |
| 116 | [TAG]Datos de mallas, texturas, materiales… (llamadas al gestor de recursos) | 2018-10-01 → 2019-01-24 (+115d) | 2018-10-01 → 2019-01-24 (+115d) |  | 155d → 43d | constraint none → start no earlier than 2019-01-24 |
| 117 | [TAG]Dibujado de mallas (begindraw, enddraw, matriz model…) | 2018-10-01 → 2019-01-24 (+115d) | 2018-10-01 → 2019-01-24 (+115d) |  | 155d → 43d | constraint none → start no earlier than 2019-01-24 |
| 118 | [TAG]Estructura básica del gestor de recursos (constructor, destructor, vectores de recursos) | 2018-10-01 → 2019-01-24 (+115d) | 2018-10-01 → 2019-01-24 (+115d) |  | 155d → 43d | constraint none → start no earlier than 2019-01-24 |
| 119 | [TAG]Obtener recurso (gestión adecuada de memoria) | 2018-10-01 → 2019-01-24 (+115d) | 2018-10-01 → 2019-01-24 (+115d) |  | 155d → 43d | constraint none → start no earlier than 2019-01-24 |
| 120 | [TAG]Estructura básica del recurso (constructor, destructor. Es virtual, vacío) | 2018-10-01 → 2019-01-24 (+115d) | 2018-10-01 → 2019-01-24 (+115d) |  | 155d → 43d | constraint none → start no earlier than 2019-01-24 |
| 121 | [TAG]Estructura básica de la malla (constructor, destructor) | 2018-10-01 → 2019-01-24 (+115d) | 2018-10-01 → 2019-01-24 (+115d) |  | 155d → 43d | constraint none → start no earlier than 2019-01-24 |
| 122 | [TAG]Lectura de disco (con assimp) | 2018-10-01 → 2019-01-24 (+115d) | 2018-10-01 → 2019-01-24 (+115d) |  | 155d → 43d | constraint none → start no earlier than 2019-01-24 |
| 123 | [TAG]Creación de buffers de vértices, normales, índices… y relleno | 2018-10-01 → 2019-01-24 (+115d) | 2018-10-01 → 2019-01-24 (+115d) |  | 155d → 43d | constraint none → start no earlier than 2019-01-24 |
| 124 | [TAG]Dibujado de las mallas (draw, con paso de los buffers a OpenGL o WebGL) | 2018-10-01 → 2019-01-24 (+115d) | 2018-10-01 → 2019-01-24 (+115d) |  | 155d → 43d | constraint none → start no earlier than 2019-01-24 |
| 125 | [TAG]Estructura básica del material (constructor, destructor) | 2018-10-01 → 2019-01-24 (+115d) | 2018-10-01 → 2019-01-24 (+115d) |  | 155d → 43d | constraint none → start no earlier than 2019-01-24 |
| 126 | [TAG]Leer material de disco (con librería o con parser propio) y rellenar valores | 2018-10-01 → 2019-01-24 (+115d) | 2018-10-01 → 2019-01-24 (+115d) |  | 155d → 43d | constraint none → start no earlier than 2019-01-24 |
| 127 | [TAG]Dibujado de los materiales (preparar los materiales y cargarlos en OpenGL o WebGL) | 2018-10-01 → 2019-01-24 (+115d) | 2018-10-01 → 2019-01-24 (+115d) |  | 155d → 43d | constraint none → start no earlier than 2019-01-24 |
| 128 | [TAG]Estructura básica del shader (constructor, destructor) | 2018-10-01 → 2019-01-24 (+115d) | 2018-10-01 → 2019-01-24 (+115d) |  | 155d → 43d | constraint none → start no earlier than 2019-01-24 |
| 129 | [TAG]Lectura de shaders de disco (con parser propio) y guardarlo | 2018-10-01 → 2019-01-24 (+115d) | 2018-10-01 → 2019-01-24 (+115d) |  | 155d → 43d | constraint none → start no earlier than 2019-01-24 |
| 130 | [TAG]Estructura básica de la interfaz (constructor, destructor, inicialización motor y openGL) | 2018-10-01 → 2019-01-24 (+115d) | 2018-10-01 → 2019-01-24 (+115d) |  | 155d → 43d | constraint none → start no earlier than 2019-01-24 |
| 131 | [TAG]Funciones para crear cámaras y gestionarlas (manejo de las cámaras, registro, cálculo de la matriz view) | 2018-10-01 → 2019-01-24 (+115d) | 2018-10-01 → 2019-01-24 (+115d) |  | 155d → 43d | constraint none → start no earlier than 2019-01-24 |
| 132 | [TAG]Funciones para crear luces y gestionarlas (manejo de las luces registro, cálculo de la matriz light) | 2018-10-01 → 2019-01-24 (+115d) | 2018-10-01 → 2019-01-24 (+115d) |  | 155d → 43d | constraint none → start no earlier than 2019-01-24 |
| 133 | [TAG]Funciones para crear transformaciones (creación de varios nodos con las transformaciones, manejo de las transformaciones) | 2018-10-01 → 2019-01-24 (+115d) | 2018-10-01 → 2019-01-24 (+115d) |  | 155d → 43d | constraint none → start no earlier than 2019-01-24 |
| 134 | [TAG]Funciones para crear mallas y animaciones | 2018-10-01 → 2019-01-24 (+115d) | 2018-10-01 → 2019-01-24 (+115d) |  | 155d → 43d | constraint none → start no earlier than 2019-01-24 |
| 135 | [TAG]Funciones para crear shaders y gestionarlos | 2018-10-01 → 2019-01-24 (+115d) | 2018-10-01 → 2019-01-24 (+115d) |  | 155d → 43d | constraint none → start no earlier than 2019-01-24 |
| 136 | [TAG]Shader básico (Sombreado de Phong, reflexión de Phong) con materiales | 2018-10-01 → 2019-01-24 (+115d) | 2018-10-01 → 2019-01-24 (+115d) |  | 155d → 43d | constraint none → start no earlier than 2019-01-24 |
| 137 | [TAG]Integración con la aplicación | 2018-10-01 → 2019-01-24 (+115d) | 2018-10-01 → 2019-01-24 (+115d) |  | 155d → 43d | constraint none → start no earlier than 2019-01-24 |
| 138 | [TAG]Realización de una fachada entre el motor y la aplicación o videojuego | 2018-10-01 → 2019-01-24 (+115d) | 2018-10-01 → 2019-01-24 (+115d) |  | 155d → 43d | constraint none → start no earlier than 2019-01-24 |
| 139 | [TAG]Librería matemática (GLM o GLMatrix) | 2018-10-01 → 2019-01-24 (+115d) | 2018-10-01 → 2019-01-24 (+115d) |  | 155d → 43d | constraint none → start no earlier than 2019-01-24 |
| 140 | [TAG][Solo CED] Librería de lectura de mallas (assimp…) | 2018-10-01 → 2019-01-24 (+115d) | 2018-10-01 → 2019-01-24 (+115d) |  | 155d → 43d | constraint none → start no earlier than 2019-01-24 |
| 141 | [TAG][Solo CED] Librería de ventanas, entrada/salida... (GLFW…) | 2018-10-01 → 2019-01-24 (+115d) | 2018-10-01 → 2019-01-24 (+115d) |  | 155d → 43d | constraint none → start no earlier than 2019-01-24 |
| 142 | [V1]Flocking: comportamiento grupal emergente | 2018-10-01 → 2019-01-24 (+115d) | 2018-10-01 → 2019-01-24 (+115d) |  | 155d → 43d | constraint none → start no earlier than 2019-01-24 |
| 143 | [V1]Editor in-game de parámetros y comportamientos de la IA | 2018-10-01 → 2019-01-24 (+115d) | 2018-10-01 → 2019-01-24 (+115d) |  | 155d → 43d | constraint none → start no earlier than 2019-01-24 |
| 144 | [V1]Sistema de logros y puntuaciones web | 2018-10-01 → 2019-01-24 (+115d) | 2018-10-01 → 2019-01-24 (+115d) |  | 155d → 43d | constraint none → start no earlier than 2019-01-24 |
| 145 | [V2]Implementación de cesped y vegetación | 2018-10-01 → 2019-01-24 (+115d) | 2018-10-01 → 2019-01-24 (+115d) |  | 155d → 43d | constraint none → start no earlier than 2019-01-24 |
| 146 | [V2]Implementación de nubes | 2018-10-01 → 2019-01-24 (+115d) | 2018-10-01 → 2019-01-24 (+115d) |  | 155d → 43d | constraint none → start no earlier than 2019-01-24 |
| 147 | [V2]Implementación de sistemas de partículas | 2018-10-01 → 2019-01-24 (+115d) | 2018-10-01 → 2019-01-24 (+115d) |  | 155d → 43d | constraint none → start no earlier than 2019-01-24 |
| 148 | [TDS]Resto de la biblioteca (máx. 1/3), cuesheet y metadatos finales | 2018-10-01 → 2019-01-24 (+115d) | 2018-10-01 → 2019-01-24 (+115d) |  | 155d → 43d | constraint none → start no earlier than 2019-01-24 |
| 149 | <Tarea nueva> | 2018-10-01 → 2019-01-24 (+115d) | 2018-10-01 → 2019-01-24 (+115d) |  | 155d → 43d | constraint none → start no earlier than 2019-01-24 |
| 151 | **hito 4** | 2018-10-01 → 2019-03-27 (+177d) |  | 156d? → 29d? |  | constraint none → finish no later than 2019-05-23 |
| 152 | **Iteracion 13** | 2019-03-28 → 2019-03-27 (-1d) | 2019-03-28 → 2019-03-27 (-1d) | 1d → 1d? | 0d → 28d | constraint none → start no earlier than 2019-03-27 |
| 153 | <Tarea nueva> | 2019-03-28 → 2019-03-27 (-1d) | 2019-03-28 → 2019-03-27 (-1d) |  | none → 28d |  |
| 154 | **Semana santa** | 2019-04-18 → 2019-04-17 (-1d) | 2019-04-18 → 2019-04-17 (-1d) | 1d → 1d? | 0d → 13d | constraint none → start no earlier than 2019-04-17 |
| 155 | <Tarea nueva> | 2019-04-18 → 2019-04-17 (-1d) | 2019-04-18 → 2019-04-17 (-1d) |  | none → 13d |  |
| 156 | **Iteracion 14** |  |  | 1d → 1d? |  | constraint none → start no earlier than 2019-05-05 |
| 158 | [PM]Detallar plan iteraciones del mes de Abril-Mayo. Creación Subtareas y precedencias en Project | 2018-10-01 → 2019-03-27 (+177d) | 2018-10-01 → 2019-03-27 (+177d) |  | 155d → 28d | constraint none → start no earlier than 2019-03-27 |
| 159 | [PM]Detallar plan iteraciones del mes de Abril-Mayo. Asignar recursos a las tareas en Project | 2018-10-01 → 2019-03-27 (+177d) | 2018-10-01 → 2019-03-27 (+177d) |  | 155d → 28d | constraint none → start no earlier than 2019-03-27 |
| 160 | [PM]Registrar tiempos y % de realización de tareas en Project | 2018-10-01 → 2019-03-27 (+177d) | 2018-10-01 → 2019-03-27 (+177d) |  | 155d → 28d | constraint none → start no earlier than 2019-03-27 |

| ID | Task | Start | Finish | Total float | Other |
| --- | --- | --- | --- | --- | --- |
| 161 | [PM]Comparar la planificación prevista y real en Project hito 4 | 2018-10-01 → 2019-03-27 (+177d) | 2018-10-01 → 2019-03-27 (+177d) | 155d → 28d | constraint none → start no earlier than 2019-03-27 |
| 162 | [PM]Confeccionar Informes de iteración e informe resumen de Hito 4 | 2018-10-01 → 2019-03-27 (+177d) | 2018-10-01 → 2019-03-27 (+177d) | 155d → 28d | constraint none → start no earlier than 2019-03-27 |
| 163 | [PM]Elaborar la presentación del Hito 4 | 2018-10-01 → 2019-03-27 (+177d) | 2018-10-01 → 2019-03-27 (+177d) | 155d → 28d | constraint none → start no earlier than 2019-03-27 |
| 164 | [PM]Exponer la presentación del Hito 4 | 2018-10-01 → 2019-03-27 (+177d) | 2018-10-01 → 2019-03-27 (+177d) | 155d → 28d | constraint none → start no earlier than 2019-03-27 |
| 165 | [TAG]Estructura básica de la animación (Constructor, destructor) | 2018-10-01 → 2019-03-27 (+177d) | 2018-10-01 → 2019-03-27 (+177d) | 155d → 28d | constraint none → start no earlier than 2019-03-27 |
| 166 | [TAG]Datos de animaciones, mallas, texturas, materiales (multiples, con llamadas al gestor de recursos) | 2018-10-01 → 2019-03-27 (+177d) | 2018-10-01 → 2019-03-27 (+177d) | 155d → 28d | constraint none → start no earlier than 2019-03-27 |
| 167 | [TAG]Dibujado de texturas (preparar las texturas y cargarlas en OpenGL o WebGL) | 2018-10-01 → 2019-03-27 (+177d) | 2018-10-01 → 2019-03-27 (+177d) | 155d → 28d | constraint none → start no earlier than 2019-03-27 |
| 168 | [TAG]Shader básico (Sombreado de Phong, reflexión de Phong) con materiales y texturas | 2018-10-01 → 2019-03-27 (+177d) | 2018-10-01 → 2019-03-27 (+177d) | 155d → 28d | constraint none → start no earlier than 2019-03-27 |
| 169 | [TAG]Shader Cartoon | 2018-10-01 → 2019-03-27 (+177d) | 2018-10-01 → 2019-03-27 (+177d) | 155d → 28d | constraint none → start no earlier than 2019-03-27 |
| 170 | [TAG]Bounding boxes (incluye retocar nodos, entidades y recursos malla) | 2018-10-01 → 2019-03-27 (+177d) | 2018-10-01 → 2019-03-27 (+177d) | 155d → 28d | constraint none → start no earlier than 2019-03-27 |
| 171 | [TAG]Backface culling | 2018-10-01 → 2019-03-27 (+177d) | 2018-10-01 → 2019-03-27 (+177d) | 155d → 28d | constraint none → start no earlier than 2019-03-27 |
| 172 | [TAG]Frustum culling | 2018-10-01 → 2019-03-27 (+177d) | 2018-10-01 → 2019-03-27 (+177d) | 155d → 28d | constraint none → start no earlier than 2019-03-27 |
| 173 | [TAG]Sombras proyectadas | 2018-10-01 → 2019-03-27 (+177d) | 2018-10-01 → 2019-03-27 (+177d) | 155d → 28d | constraint none → start no earlier than 2019-03-27 |
| 174 | [TAG]Sistema de partículas (sólo la incorporación en el motor) | 2018-10-01 → 2019-03-27 (+177d) | 2018-10-01 → 2019-03-27 (+177d) | 155d → 28d | constraint none → start no earlier than 2019-03-27 |
| 175 | [PD]Créditos | 2018-10-01 → 2019-03-27 (+177d) | 2018-10-01 → 2019-03-27 (+177d) | 155d → 28d | constraint none → start no earlier than 2019-03-27 |
| 176 | [PD]Vídeo final juego / explicación parte del proyecto | 2018-10-01 → 2019-03-27 (+177d) | 2018-10-01 → 2019-03-27 (+177d) | 155d → 28d | constraint none → start no earlier than 2019-03-27 |
| 177 | [TDS]Integración de sonido y música en el juego | 2018-10-01 → 2019-03-27 (+177d) | 2018-10-01 → 2019-03-27 (+177d) | 155d → 28d | constraint none → start no earlier than 2019-03-27 |
| 178 | [TDS]Post producción (mezcla y masterización in-game) | 2018-10-01 → 2019-03-27 (+177d) | 2018-10-01 → 2019-03-27 (+177d) | 155d → 28d | constraint none → start no earlier than 2019-03-27 |
| 179 | [TDS]Sonido generado proceduralmente in-game | 2018-10-01 → 2019-03-27 (+177d) | 2018-10-01 → 2019-03-27 (+177d) | 155d → 28d | constraint none → start no earlier than 2019-03-27 |
| 180 | [RV]Rigging de los personajes | 2018-10-01 → 2019-03-27 (+177d) | 2018-10-01 → 2019-03-27 (+177d) | 155d → 28d | constraint none → start no earlier than 2019-03-27 |
| 181 | [RV]Captura de movimiento | 2018-10-01 → 2019-03-27 (+177d) | 2018-10-01 → 2019-03-27 (+177d) | 155d → 28d | constraint none → start no earlier than 2019-03-27 |
| 182 | [RV]Animación de los personajes | 2018-10-01 → 2019-03-27 (+177d) | 2018-10-01 → 2019-03-27 (+177d) | 155d → 28d | constraint none → start no earlier than 2019-03-27 |
| 183 | [RV]Texturizado del entorno y elementos | 2018-10-01 → 2019-03-27 (+177d) | 2018-10-01 → 2019-03-27 (+177d) | 155d → 28d | constraint none → start no earlier than 2019-03-27 |

## Version 3 (saved 2018-10-15)

Note of the change: se agrega tareas de musica hasta hito 2, si presionan el resumen les sale lo que tienen que dedicar en cada, iteraccion supuestamente

Last finish stays 2019-05-06. Complete tasks 4 → 7.

Added:

| ID | Task | Duration | Start | Finish | Constraint | Resources |
| --- | --- | --- | --- | --- | --- | --- |
| 16 | **[V2]Diseño e implementación b.objetos (1/10)** | 0.44d | 2018-10-11 | 2018-10-11 |  | Jose Ramon Barea Cecilia [50%]; María Sánchez Marqués [50%] |
| 17 | Implementacion | 3.5h | 2018-10-11 | 2018-10-11 |  |  |
| 18 | Diseño | 3.5h | 2018-10-11 | 2018-10-11 |  |  |
| 19 | **[TDS]Realizar sonidos para el juego 1/7** | 0.36d | 2018-10-11 | 2018-10-11 |  |  |
| 20 | Síntesis | 2.85h | 2018-10-11 | 2018-10-11 |  | David Ramón Sevilla [15%]; Jose Ramon Barea Cecilia [15%]; Débora Galdeano González [15%]; María Sánchez Marqués [15%] |
| 21 | Grabaciones propias | 2.85h | 2018-10-11 | 2018-10-11 |  | David Ramón Sevilla [15%]; Jose Ramon Barea Cecilia [15%]; Débora Galdeano González [15%]; María Sánchez Marqués [15%] |
| 22 | Sonidos externos | 2.85h | 2018-10-11 | 2018-10-11 |  | David Ramón Sevilla [15%]; Jose Ramon Barea Cecilia [15%]; Débora Galdeano González [15%]; María Sánchez Marqués [15%] |
| 23 | Música | 2.85h | 2018-10-11 | 2018-10-11 |  | David Ramón Sevilla [15%]; Jose Ramon Barea Cecilia [15%]; Débora Galdeano González [15%]; María Sánchez Marqués [15%] |
| 24 | Cue Sheet | 1.42h | 2018-10-11 | 2018-10-11 |  | David Ramón Sevilla [15%]; Jose Ramon Barea Cecilia [15%]; Débora Galdeano González [15%]; María Sánchez Marqués [15%] |
| 25 | Hoja de metadatos | 1.42h | 2018-10-11 | 2018-10-11 |  | David Ramón Sevilla [15%]; Jose Ramon Barea Cecilia [15%]; Débora Galdeano González [15%]; María Sánchez Marqués [15%] |
| 26 | Integración del motor de audio en el juego con prueba de concepto | 2.85h | 2018-10-11 | 2018-10-11 |  | David Ramón Sevilla [15%]; Jose Ramon Barea Cecilia [15%]; Débora Galdeano González [15%]; María Sánchez Marqués [15%] |
| 35 | **[TDS]Realizar sonidos para el juego 2/7** | 0.36d | 2018-10-25 | 2018-10-25 |  |  |
| 36 | Síntesis | 2.85h | 2018-10-25 | 2018-10-25 |  | David Ramón Sevilla [15%]; Jose Ramon Barea Cecilia [15%]; Débora Galdeano González [15%]; María Sánchez Marqués [15%] |
| 37 | Grabaciones propias | 2.85h | 2018-10-25 | 2018-10-25 |  | David Ramón Sevilla [15%]; Jose Ramon Barea Cecilia [15%]; Débora Galdeano González [15%]; María Sánchez Marqués [15%] |
| 38 | Sonidos externos | 2.85h | 2018-10-25 | 2018-10-25 |  | David Ramón Sevilla [15%]; Jose Ramon Barea Cecilia [15%]; Débora Galdeano González [15%]; María Sánchez Marqués [15%] |
| 39 | Música | 2.85h | 2018-10-25 | 2018-10-25 |  | David Ramón Sevilla [15%]; Jose Ramon Barea Cecilia [15%]; Débora Galdeano González [15%]; María Sánchez Marqués [15%] |
| 40 | Cue Sheet | 1.42h | 2018-10-25 | 2018-10-25 |  | David Ramón Sevilla [15%]; Jose Ramon Barea Cecilia [15%]; Débora Galdeano González [15%]; María Sánchez Marqués [15%] |
| 41 | Hoja de metadatos | 1.42h | 2018-10-25 | 2018-10-25 |  | David Ramón Sevilla [15%]; Jose Ramon Barea Cecilia [15%]; Débora Galdeano González [15%]; María Sánchez Marqués [15%] |
| 42 | Integración del motor de audio en el juego con prueba de concepto | 2.85h | 2018-10-25 | 2018-10-25 |  | David Ramón Sevilla [15%]; Jose Ramon Barea Cecilia [15%]; Débora Galdeano González [15%]; María Sánchez Marqués [15%] |
| 43 | [V2]Diseño e implementación b.objetos (2/10) | 7h | 2018-10-25 | 2018-10-25 |  |  |
| 44 | [v2]Diseño e implementacion b.componentes 1 | 10h | 2018-10-25 | 2018-10-26 | start no earlier than 2018-10-01 |  |
| 52 | **[TDS]Realizar sonidos para el juego 3/7** | 0.36d | 2018-11-08 | 2018-11-08 |  |  |
| 53 | Síntesis | 2.85h | 2018-11-08 | 2018-11-08 |  | David Ramón Sevilla [15%]; Jose Ramon Barea Cecilia [15%]; Débora Galdeano González [15%]; María Sánchez Marqués [15%] |
| 54 | Grabaciones propias | 2.85h | 2018-11-08 | 2018-11-08 |  | David Ramón Sevilla [15%]; Jose Ramon Barea Cecilia [15%]; Débora Galdeano González [15%]; María Sánchez Marqués [15%] |
| 55 | Sonidos externos | 2.85h | 2018-11-08 | 2018-11-08 |  | David Ramón Sevilla [15%]; Jose Ramon Barea Cecilia [15%]; Débora Galdeano González [15%]; María Sánchez Marqués [15%] |
| 56 | Música | 2.85h | 2018-11-08 | 2018-11-08 |  | David Ramón Sevilla [15%]; Jose Ramon Barea Cecilia [15%]; Débora Galdeano González [15%]; María Sánchez Marqués [15%] |
| 57 | Cue Sheet | 1.42h | 2018-11-08 | 2018-11-08 |  | David Ramón Sevilla [15%]; Jose Ramon Barea Cecilia [15%]; Débora Galdeano González [15%]; María Sánchez Marqués [15%] |
| 58 | Hoja de metadatos | 1.42h | 2018-11-08 | 2018-11-08 |  | David Ramón Sevilla [15%]; Jose Ramon Barea Cecilia [15%]; Débora Galdeano González [15%]; María Sánchez Marqués [15%] |
| 59 | Integración del motor de audio en el juego con prueba de concepto | 2.85h | 2018-11-08 | 2018-11-08 |  | David Ramón Sevilla [15%]; Jose Ramon Barea Cecilia [15%]; Débora Galdeano González [15%]; María Sánchez Marqués [15%] |
| 60 | [V2]Diseño e implementación b.objetos (3/10) | 7h | 2018-11-08 | 2018-11-08 |  |  |
| 61 | [v2]Diseño e implementacion b.componentes 2 | 10h | 2018-11-08 | 2018-11-09 | start no earlier than 2018-10-15 |  |
| 68 | **[TDS]Realizar sonidos para el juego 4/7** | 0.36d | 2018-11-22 | 2018-11-22 |  |  |
| 69 | Síntesis | 2.85h | 2018-11-22 | 2018-11-22 |  | David Ramón Sevilla [15%]; Jose Ramon Barea Cecilia [15%]; Débora Galdeano González [15%]; María Sánchez Marqués [15%] |
| 70 | Grabaciones propias | 2.85h | 2018-11-22 | 2018-11-22 |  | David Ramón Sevilla [15%]; Jose Ramon Barea Cecilia [15%]; Débora Galdeano González [15%]; María Sánchez Marqués [15%] |
| 71 | Sonidos externos | 2.85h | 2018-11-22 | 2018-11-22 |  | David Ramón Sevilla [15%]; Jose Ramon Barea Cecilia [15%]; Débora Galdeano González [15%]; María Sánchez Marqués [15%] |
| 72 | Música | 2.85h | 2018-11-22 | 2018-11-22 |  | David Ramón Sevilla [15%]; Jose Ramon Barea Cecilia [15%]; Débora Galdeano González [15%]; María Sánchez Marqués [15%] |
| 73 | Cue Sheet | 1.42h | 2018-11-22 | 2018-11-22 |  | David Ramón Sevilla [15%]; Jose Ramon Barea Cecilia [15%]; Débora Galdeano González [15%]; María Sánchez Marqués [15%] |
| 74 | Hoja de metadatos | 1.42h | 2018-11-22 | 2018-11-22 |  | David Ramón Sevilla [15%]; Jose Ramon Barea Cecilia [15%]; Débora Galdeano González [15%]; María Sánchez Marqués [15%] |
| 75 | Integración del motor de audio en el juego con prueba de concepto | 2.85h | 2018-11-22 | 2018-11-22 |  | David Ramón Sevilla [15%]; Jose Ramon Barea Cecilia [15%]; Débora Galdeano González [15%]; María Sánchez Marqués [15%] |
| 78 | [V2]Diseño e implementación b.objetos (4/10) | 7h | 2018-11-22 | 2018-11-22 |  |  |
| 79 | [v2]Diseño e implementacion b.componentes 3 | 10h | 2018-11-22 | 2018-11-23 | start no earlier than 2018-10-29 |  |
| 87 | **[TDS]Realizar sonidos para el juego 5/7** | 0.36d | 2018-12-06 | 2018-12-06 |  |  |
| 88 | Síntesis | 2.85h | 2018-12-06 | 2018-12-06 |  | David Ramón Sevilla [15%]; Jose Ramon Barea Cecilia [15%]; Débora Galdeano González [15%]; María Sánchez Marqués [15%] |
| 89 | Grabaciones propias | 2.85h | 2018-12-06 | 2018-12-06 |  | David Ramón Sevilla [15%]; Jose Ramon Barea Cecilia [15%]; Débora Galdeano González [15%]; María Sánchez Marqués [15%] |
| 90 | Sonidos externos | 2.85h | 2018-12-06 | 2018-12-06 |  | David Ramón Sevilla [15%]; Jose Ramon Barea Cecilia [15%]; Débora Galdeano González [15%]; María Sánchez Marqués [15%] |
| 91 | Música | 2.85h | 2018-12-06 | 2018-12-06 |  | David Ramón Sevilla [15%]; Jose Ramon Barea Cecilia [15%]; Débora Galdeano González [15%]; María Sánchez Marqués [15%] |
| 92 | Cue Sheet | 1.42h | 2018-12-06 | 2018-12-06 |  | David Ramón Sevilla [15%]; Jose Ramon Barea Cecilia [15%]; Débora Galdeano González [15%]; María Sánchez Marqués [15%] |
| 93 | Hoja de metadatos | 1.42h | 2018-12-06 | 2018-12-06 |  | David Ramón Sevilla [15%]; Jose Ramon Barea Cecilia [15%]; Débora Galdeano González [15%]; María Sánchez Marqués [15%] |
| 94 | Integración del motor de audio en el juego con prueba de concepto | 2.85h | 2018-12-06 | 2018-12-06 |  | David Ramón Sevilla [15%]; Jose Ramon Barea Cecilia [15%]; Débora Galdeano González [15%]; María Sánchez Marqués [15%] |
| 95 | [V2]Diseño e implementación b.objetos (5/10) | 7h | 2018-12-06 | 2018-12-06 |  |  |
| 96 | [v2]Diseño e implementacion b.componentes 5 | 10h | 2018-12-06 | 2018-12-07 | start no earlier than 2018-11-26 |  |
| 108 | [V2]Diseño e implementación b.objetos (6/10) | 7h | 2018-12-24 | 2018-12-24 |  |  |
| 109 | [v2]Diseño e implementacion b.componentes 6 | 10h | 2018-12-24 | 2018-12-25 | start no earlier than 2018-12-10 |  |
| 110 | **[TDS]Realizar sonidos para el juego 6/7** | 0.36d | 2018-12-24 | 2018-12-24 |  |  |
| 111 | Síntesis | 2.85h | 2018-12-24 | 2018-12-24 |  | David Ramón Sevilla [15%]; Jose Ramon Barea Cecilia [15%]; Débora Galdeano González [15%]; María Sánchez Marqués [15%] |
| 112 | Grabaciones propias | 2.85h | 2018-12-24 | 2018-12-24 |  | David Ramón Sevilla [15%]; Jose Ramon Barea Cecilia [15%]; Débora Galdeano González [15%]; María Sánchez Marqués [15%] |
| 113 | Sonidos externos | 2.85h | 2018-12-24 | 2018-12-24 |  | David Ramón Sevilla [15%]; Jose Ramon Barea Cecilia [15%]; Débora Galdeano González [15%]; María Sánchez Marqués [15%] |
| 114 | Música | 2.85h | 2018-12-24 | 2018-12-24 |  | David Ramón Sevilla [15%]; Jose Ramon Barea Cecilia [15%]; Débora Galdeano González [15%]; María Sánchez Marqués [15%] |
| 115 | Cue Sheet | 1.42h | 2018-12-24 | 2018-12-24 |  | David Ramón Sevilla [15%]; Jose Ramon Barea Cecilia [15%]; Débora Galdeano González [15%]; María Sánchez Marqués [15%] |
| 116 | Hoja de metadatos | 1.42h | 2018-12-24 | 2018-12-24 |  | David Ramón Sevilla [15%]; Jose Ramon Barea Cecilia [15%]; Débora Galdeano González [15%]; María Sánchez Marqués [15%] |
| 117 | Integración del motor de audio en el juego con prueba de concepto | 2.85h | 2018-12-24 | 2018-12-24 |  | David Ramón Sevilla [15%]; Jose Ramon Barea Cecilia [15%]; Débora Galdeano González [15%]; María Sánchez Marqués [15%] |
| 120 | [V2]Diseño e implementación b.objetos (7/10) | 7h | 2019-01-11 | 2019-01-11 |  |  |
| 121 | [v2]Diseño e implementacion b.componentes 7 | 10h | 2019-01-11 | 2019-01-14 | start no earlier than 2018-12-24 |  |
| 122 | **[TDS]Realizar sonidos para el juego 7/7** | 0.36d | 2019-01-11 | 2019-01-11 |  |  |
| 123 | Síntesis | 2.85h | 2019-01-11 | 2019-01-11 |  | David Ramón Sevilla [15%]; Jose Ramon Barea Cecilia [15%]; Débora Galdeano González [15%]; María Sánchez Marqués [15%] |
| 124 | Grabaciones propias | 2.85h | 2019-01-11 | 2019-01-11 |  | David Ramón Sevilla [15%]; Jose Ramon Barea Cecilia [15%]; Débora Galdeano González [15%]; María Sánchez Marqués [15%] |
| 125 | Sonidos externos | 2.85h | 2019-01-11 | 2019-01-11 |  | David Ramón Sevilla [15%]; Jose Ramon Barea Cecilia [15%]; Débora Galdeano González [15%]; María Sánchez Marqués [15%] |
| 126 | Música | 2.85h | 2019-01-11 | 2019-01-11 |  | David Ramón Sevilla [15%]; Jose Ramon Barea Cecilia [15%]; Débora Galdeano González [15%]; María Sánchez Marqués [15%] |
| 127 | Cue Sheet | 1.42h | 2019-01-11 | 2019-01-11 |  | David Ramón Sevilla [15%]; Jose Ramon Barea Cecilia [15%]; Débora Galdeano González [15%]; María Sánchez Marqués [15%] |
| 128 | Hoja de metadatos | 1.42h | 2019-01-11 | 2019-01-11 |  | David Ramón Sevilla [15%]; Jose Ramon Barea Cecilia [15%]; Débora Galdeano González [15%]; María Sánchez Marqués [15%] |
| 129 | Integración del motor de audio en el juego con prueba de concepto | 2.85h | 2019-01-11 | 2019-01-11 |  | David Ramón Sevilla [15%]; Jose Ramon Barea Cecilia [15%]; Débora Galdeano González [15%]; María Sánchez Marqués [15%] |
| 152 | [V2]Diseño e implementación b.objetos (8/10) | 7h | 2019-01-25 | 2019-01-25 |  |  |
| 153 | [v2]Diseño e implementacion b.componentes 8 | 10h | 2019-01-25 | 2019-01-28 | start no earlier than 2019-01-07 |  |
| 156 | [V2]Diseño e implementación b.objetos (9/10) | 7h | 2019-02-06 | 2019-02-06 |  |  |
| 157 | [v2]Diseño e implementacion b.componentes 9 | 10h | 2019-02-06 | 2019-02-07 | start no earlier than 2019-01-21 |  |
| 160 | [V2]Diseño e implementación b.objetos (final) | 7h | 2019-02-20 | 2019-02-20 |  |  |
| 161 | [v2]Diseño e implementacion b.componentes (final) | 10h | 2019-02-20 | 2019-02-21 | start no earlier than 2019-02-04 |  |

Removed: 16 [V2]Diseño e implementación de la arquitectura basada en objetos (diagrama de clases e implementación); 17 [TDS]Grabaciones propias; 18 [TDS]Síntesis; 19 [TDS]Grabaciones propias; 28 [V2]Diseño e implementación de la arquitectura basada en componentes (diagrama de clases e implementación); 36 [TDS]Sonidos externos; 43 [TDS]Cue Sheet; 52 [TDS]Integración del motor de audio en el juego con prueba de concepto; 54 [TDS]Hoja de metadatos

Changed:

| ID | Task | Start | Finish | Duration | Complete | Total float | Predecessors | Other |
| --- | --- | --- | --- | --- | --- | --- | --- | --- |
| 1 | **Hito 0** |  | 2018-10-10 A |  | 78% → 100% | 148.8d → none |  |  |
| 5 | **Iteracion 2** |  | 2018-10-10 A |  | 75% → 100% | 148.8d → none |  |  |
| 6 | [PM]Completar y Revisar documento Especificacion |  | 2018-10-02 A |  | 75% → 100% | 154.8d → none |  |  |
| 8 | [PM]Crear plan general (tareas y precedencias basicas) en project | 2018-10-01 A | 2018-10-04 A |  | 0% → 100% | 152.4d → none |  |  |
| 10 | Documento de Especificaciones realizado | 2018-10-10 A | 2018-10-10 A |  | 0% → 100% | 148.8d → none |  |  |
| 13 | [V1]Documento de diseño de mecánicas de los NPCs |  |  |  |  |  |  | resources David Ramón Sevilla [25%]; Débora Galdeano González [12%]; Jose Vicente Anton Coy [25%]; Marines Ánton Castelló [25%] → David Ramón Sevilla [20%]; Débora Galdeano González [12%]; Jose Vicente Anton Coy [20%]; Marines Ánton Castelló [20%] |
| 15 | [V1]Documento de diseño técnico del motor de IA |  |  |  |  |  |  | resources David Ramón Sevilla [25%]; Débora Galdeano González [12%]; Jose Vicente Anton Coy [25%]; Marines Ánton Castelló [25%] → David Ramón Sevilla [20%]; Débora Galdeano González [12%]; Jose Vicente Anton Coy [20%]; Marines Ánton Castelló [20%] |
| 27 | [RV]Boceto de los personajes |  |  |  |  |  |  | resources Débora Galdeano González [10%] → Débora Galdeano González [20%] |
| 28 | [PD]Vídeo con animación del logo de la empresa |  |  |  |  |  |  | resources Jose Ramon Barea Cecilia [30%] → Jose Ramon Barea Cecilia [30%]; Jose Vicente Anton Coy [20%]; Marines Ánton Castelló [20%]; David Ramón Sevilla [20%] |
| 29 | [PM]Registrar tiempos y % de realización de tareas en Project |  |  | 2h → 1h |  |  |  | resources David Ramón Sevilla [2%]; Débora Galdeano González [2%]; Jose Ramon Barea Cecilia [4%]; Jose Vicente Anton Coy [2%]; María Sánchez Marqués [4%]; Marines Ánton Castelló [2%] → David Ramón Sevilla [2%]; Débora Galdeano González [2%]; Jose Ramon Barea Cecilia [2%]; Jose Vicente Anton Coy [2%]; María Sánchez Marqués [2%]; Marines Ánton Castelló [2%] |
| 33 | [V1]Sistema de toma de decisión con Behaviour Trees |  |  |  |  |  | 34, [TDS]Grabaciones propias, 15 → 34, 15 |  |
| 106 | **Hito 2** |  | 2019-01-11 → 2019-01-14 (+3d) | 15d? → 15.25d? |  | 10d → 9.75d |  |  |
| 107 | **Navidad** |  | 2018-12-24 → 2018-12-25 (+1d) | 1d? → 1.25d? |  | 24d → 23.75d |  |  |
| 119 | **Iteracion 8** |  | 2019-01-11 → 2019-01-14 (+3d) | 1d? → 1.25d? |  | 10d → 9.75d |  |  |
| 149 | Version Beta del juego, que se pueda jugar | 2019-01-11 → 2019-01-14 (+3d) | 2019-01-11 → 2019-01-14 (+3d) |  |  | 81d → 80.75d |  |  |
| 151 | **Iteracion 9** |  | 2019-01-25 → 2019-01-28 (+3d) | 1d? → 1.25d? |  | 42d → 41.75d |  |  |
| 155 | **Iteracion 10** |  | 2019-02-06 → 2019-02-07 (+1d) | 1d? → 1.25d? |  | 34d → 33.75d |  |  |
| 159 | **Iteracion 11** |  | 2019-02-20 → 2019-02-21 (+1d) | 1d? → 1.25d? |  | 24d → 23.75d |  |  |

## Version 4 (saved 2018-10-22)

Note of the change: Se organizan las tareas en paralelo. (casi una hora por tarea) Version Final para iteracion 4 falta aprobado por grupo.

Last finish stays 2019-05-06. Complete tasks 7 → 20.

Added:

| ID | Task | Duration | Start | Finish | Predecessors | Constraint | Resources |
| --- | --- | --- | --- | --- | --- | --- | --- |
| 17 | Investigacion | 3.5h | 2018-10-11 A | 2018-10-11 A |  |  |  |
| 31 | [v1] Documento de diseño de toma de decision: espacio y metodos | 32h | 2018-10-25 | 2018-10-30 | 13 | finish no later than 2018-11-07 | David Ramón Sevilla [10%]; Jose Vicente Anton Coy [10%]; Marines Ánton Castelló [10%]; Débora Galdeano González [10%] |
| 32 | [V1]Documento de diseño técnico del motor de IA | 37h | 2018-10-31 | 2018-11-06 | 31 | finish no later than 2018-11-07 | David Ramón Sevilla [10%]; Débora Galdeano González [10%]; Jose Vicente Anton Coy [10%]; Marines Ánton Castelló [10%] |
| 34 | Investigacion | 10h | 2018-10-29 | 2018-10-30 |  | start no earlier than 2018-10-27 |  |
| 35 | Diseño | 5h | 2018-10-30 | 2018-10-30 | 34 |  |  |
| 36 | Implementar | 36h | 2018-10-30 | 2018-11-06 | 35 |  |  |
| 37 | [V1]Documento de diseño de mecánicas de los NPCs 2/2 | 22h | 2018-10-25 | 2018-10-29 |  | finish no later than 2018-11-07 | Débora Galdeano González [10%]; Marines Ánton Castelló [10%]; David Ramón Sevilla [10%]; Jose Vicente Anton Coy [10%] |
| 39 | Diseño | 2h | 2018-10-30 | 2018-10-30 |  | start no earlier than 2018-10-30 |  |
| 42 | Investigar | 5h | 2018-10-31 | 2018-10-31 |  | start no earlier than 2018-10-31 |  |
| 43 | Diseñar | 5h | 2018-10-31 | 2018-11-01 | 42 |  |  |
| 46 | [RV]Boceto de los personajes 2/2 | 15h | 2018-11-02 | 2018-11-05 |  | start no earlier than 2018-11-02 | María Sánchez Marqués [5%]; Débora Galdeano González [10%]; Marines Ánton Castelló [5%] |
| 77 | [PM]Registrar tiempos y % de realización de tareas en Project | 1h | 2018-11-08 | 2018-11-08 |  | finish no later than 2018-11-21 | David Ramón Sevilla [2%]; Débora Galdeano González [2%]; Jose Ramon Barea Cecilia [2%]; Jose Vicente Anton Coy [2%]; María Sánchez Marqués [2%]; Marines Ánton Castelló [2%] |
| 116 | **[V1]Sistema de percepción sensorial (vista, oído, olfato, canales…)** | 5.75d | 2018-11-08 | 2018-11-15 |  | start no earlier than 2018-11-08 | David Ramón Sevilla [10%]; Débora Galdeano González [10%]; Jose Vicente Anton Coy [10%]; Marines Ánton Castelló [10%] |
| 117 | Investigacion | 16h | 2018-11-08 | 2018-11-09 |  |  |  |
| 118 | Diseño | 6h | 2018-11-12 | 2018-11-12 | 117 |  |  |
| 119 | Implementar | 24h | 2018-11-12 | 2018-11-15 | 118 |  |  |

Removed: 34 [V1]Sistema de percepción sensorial (vista, oído, olfato, canales…)

Changed:

| ID | Task | Start | Finish | Duration | Complete | Total float | Predecessors | Other |
| --- | --- | --- | --- | --- | --- | --- | --- | --- |
| 11 | **Hito 1** | 2018-10-11 → 2018-10-01 A (-10d) | 2018-12-21 → 2018-12-17 (-4d) | 52d → 55.5d | 0% → 7% | 9.88d → 100.5d |  | constraint start no earlier than 2018-10-11 → none |
| 12 | **Iteracion 3** | 2018-10-11 A | 2018-10-26 → 2018-10-24 (-2d) | 12d → 10d | 0% → 55% | 9.88d → 0d |  |  |
| 13 | [V1]Documento de diseño de mecánicas de los NPCs | 2018-10-11 A | 2018-10-16 → 2018-10-12 A (-4d) | 27h → 15h | 0% → 100% | 129.62d → none |  | constraint none → must finish on 2018-10-24 |
| 14 | [v1] Documento de diseño de toma de decision: espacio y metodos | 2018-10-16 → 2018-10-19 (+3d) | 2018-10-22 → 2018-10-24 (+2d) |  |  | 129.62d → 0d |  | constraint none → must finish on 2018-10-24 |
| 15 | [V1]Documento de diseño técnico del motor de IA | 2018-10-22 → 2018-10-18 (-4d) | 2018-10-26 → 2018-10-24 (-2d) |  |  | 129.62d → -4.62d |  | constraint none → must finish on 2018-10-24 |
| 16 | **[V2]Diseño e implementación b.objetos (1/10)** | 2018-10-11 A | 2018-10-11 A |  | 0% → 100% | 147.56d → none |  |  |
| 18 | Diseño | 2018-10-11 A | 2018-10-11 A |  | 0% → 100% | 147.56d → none |  |  |
| 19 | **[TDS]Realizar sonidos para el juego (1/7)** | 2018-10-11 A | 2018-10-11 A |  | 0% → 100% | 147.64d → none |  | was named [TDS]Realizar sonidos para el juego 1/7 |
| 20 | Síntesis | 2018-10-11 A | 2018-10-11 A |  | 0% → 100% | 147.64d → none |  |  |
| 21 | Grabaciones propias | 2018-10-11 A | 2018-10-11 A |  | 0% → 100% | 147.64d → none |  |  |
| 22 | Sonidos externos | 2018-10-11 A | 2018-10-11 A |  | 0% → 100% | 147.64d → none |  |  |
| 23 | Música | 2018-10-11 A | 2018-10-11 A |  | 0% → 100% | 147.64d → none |  |  |
| 24 | Cue Sheet | 2018-10-11 A | 2018-10-11 A |  | 0% → 100% | 147.82d → none |  |  |
| 25 | Hoja de metadatos | 2018-10-11 A | 2018-10-11 A |  | 0% → 100% | 147.82d → none |  |  |
| 26 | Integración del motor de audio en el juego con prueba de concepto | 2018-10-11 A | 2018-10-11 A |  | 0% → 100% | 147.64d → none |  |  |
| 27 | [RV]Boceto de los personajes (1/2) | 2018-10-11 A | 2018-10-16 → 2018-10-12 A (-4d) | 30h → 15h | 0% → 100% | 144.25d → none |  | was named [RV]Boceto de los personajes; constraint none → must finish on 2018-10-24 |
| 28 | [PD]Vídeo con animación del logo de la empresa (1/2) | 2018-10-11 A | 2018-10-22 → 2018-10-16 A (-6d) | 60h → 30h | 0% → 100% | 140.5d → none |  | was named [PD]Vídeo con animación del logo de la empresa; constraint none → must finish on 2018-10-24 |
| 29 | [PM]Registrar tiempos y % de realización de tareas en Project | 2018-10-24 A | 2018-10-24 A |  | 0% → 100% | 0d → none |  |  |
| 30 | **Iteracion 4** |  | 2018-12-21 → 2018-11-07 (-44d) | 42d → 9.25d |  | 96d → 0.75d |  |  |
| 33 | **[V1]Sistema de toma de decisión con Behaviour Trees** | 2018-11-01 → 2018-10-29 (-3d) | 2018-11-12 → 2018-11-06 (-6d) | 51h → 6.38d |  | 125.88d → 1.62d | [V1]Sistema de percepción sensorial (vista, oído, olfato, canales…), 15 → 15 | resources David Ramón Sevilla [15%]; Débora Galdeano González [15%]; Jose Vicente Anton Coy [15%]; Marines Ánton Castelló [15%] → David Ramón Sevilla [10%]; Débora Galdeano González [10%]; Jose Vicente Anton Coy [10%]; Marines Ánton Castelló [10%] |
| 38 | **[V2]Diseño e implementación b.objetos (2/10)** | 2018-10-25 → 2018-10-30 (+5d) | 2018-10-25 → 2018-10-30 (+5d) | 7h → 0.88d |  | 137.12d → 6.12d |  | constraint none → finish no later than 2018-11-07; resources none → María Sánchez Marqués [10%]; Jose Ramon Barea Cecilia [10%]; David Ramón Sevilla [10%]; Débora Galdeano González [10%]; Jose Vicente Anton Coy [10%]; Marines Ánton Castelló [10%] |
| 40 | Implementacion | 2018-10-11 → 2018-10-30 (+19d) | 2018-10-11 → 2018-10-30 (+19d) | 3.5h → 5h |  | 147.56d → 6.12d | none → 39 |  |
| 41 | **[v2]Diseño e implementacion b.componentes 1** | 2018-10-25 → 2018-10-31 (+6d) | 2018-10-26 → 2018-11-01 (+6d) | 10h → 1.25d |  | 136.75d → 4.75d |  | constraint start no earlier than 2018-10-01 → finish no later than 2018-11-07; resources none → David Ramón Sevilla [10%]; Jose Ramon Barea Cecilia [10%]; Jose Vicente Anton Coy [10%]; María Sánchez Marqués [10%]; Marines Ánton Castelló [10%]; Débora Galdeano González [10%] |
| 44 | [v2]Utilización de joints en las mecánicas jugables |  |  |  |  | 135.88d → 4.12d |  | constraint none → finish no later than 2018-11-07 |
| 45 | [V2]Mecánicas básicas entidades sin IA | 2018-10-25 → 2018-10-29 (+4d) | 2018-10-30 → 2018-11-01 (+2d) |  |  | 134.25d → 4.12d | none → 44 | constraint none → finish no later than 2018-11-07 |
| 47 | **[TDS]Realizar sonidos para el juego 2/7** |  |  |  |  | 137.64d → 9.64d |  | constraint none → finish no later than 2018-11-07; resources none → David Ramón Sevilla [15%]; Débora Galdeano González [15%]; María Sánchez Marqués [15%]; Jose Ramon Barea Cecilia [15%] |
| 55 | [PM]Registrar tiempos y % de realización de tareas en Project | 2018-12-21 → 2018-11-07 (-44d) | 2018-12-21 → 2018-11-07 (-44d) |  |  | 96d → 0.75d |  | constraint finish no earlier than 2018-12-21 → start no earlier than 2018-11-07 |
| 56 | [PM]Rellenar documento Gestión de riesgos | 2018-10-25 → 2018-11-02 (+8d) | 2018-10-29 → 2018-11-06 (+8d) |  |  | 135.12d → 1.12d |  | constraint none → start no earlier than 2018-11-02 |
| 58 | [PM]Aplicar el modelo EVA en Project |  |  |  |  | 125.3d → 7.3d |  | constraint none → finish no later than 2018-11-21; resources David Ramón Sevilla [8%]; Débora Galdeano González [8%]; Jose Ramon Barea Cecilia [8%]; Jose Vicente Anton Coy [8%]; María Sánchez Marqués [8%]; Marines Ánton Castelló [8%]; Jesus Valiente → David Ramón Sevilla [8%]; Débora Galdeano González [8%]; Jose Ramon Barea Cecilia [8%]; Jose Vicente Anton Coy [8%]; María Sánchez Marqués [8%]; Marines Ánton Castelló [8%] |
| 59 | [PM]Detallar plan iteraciones del mes de Noviembre. Creación Subtareas y precedencias en Project |  |  |  |  | 122.24d → 4.24d |  | constraint none → finish no later than 2018-11-21 |
| 60 | [RV]Bocetos de los elementos | 2018-10-25 → 2018-11-08 (+14d) | 2018-10-29 → 2018-11-12 (+14d) |  |  | 135.75d → 7.75d |  | constraint none → finish no later than 2018-11-21 |
| 61 | [PM]Detallar plan iteraciones del mes de Noviembre. Asignar recursos a las tareas en Project |  |  |  |  | 122.24d → 4.24d |  | constraint none → finish no later than 2018-11-21 |
| 62 | **[TDS]Realizar sonidos para el juego 3/7** |  |  |  |  | 127.64d → 9.64d |  | constraint none → finish no later than 2018-11-21 |
| 70 | [V2]Diseño e implementación b.objetos (3/10) |  |  |  |  | 127.12d → 9.12d |  | constraint none → finish no later than 2018-11-21 |
| 71 | [v2]Diseño e implementacion b.componentes 2 |  |  |  |  | 126.75d → 8.75d |  | constraint start no earlier than 2018-10-15 → finish no later than 2018-11-21 |
| 72 | [v2]Formato propio para la definicion de los niveles(documentos con la especifiacion del formato) |  |  |  |  | 123.12d → 5.12d |  | constraint none → finish no later than 2018-11-21 |
| 73 | [V2]Creación de un cargador de niveles |  |  |  |  | 123.12d → 5.12d |  | constraint none → finish no later than 2018-11-21 |
| 74 | [v2]Control del player: movimiento y colisiones sin motor de físicas |  |  |  |  | 123d → 5d |  | constraint none → finish no later than 2018-11-21 |
| 75 | [v2]Implementacion de camara de seguimiento |  |  |  |  | 125.88d → 7.88d |  | constraint none → finish no later than 2018-11-21 |
| 76 | [V2]Utilización de propiedades físicas en las mecánicas jugables | 2018-11-22 → 2018-11-08 (-14d) | 2018-11-26 → 2018-11-12 (-14d) |  |  | 115.88d → 7.88d |  | constraint none → finish no later than 2018-11-21 |
| 112 | [PM]Comparar la planificación prevista y real en Project hito 1 | 2018-10-11 → 2018-10-01 (-10d) | 2018-10-15 → 2018-10-03 (-12d) |  |  | 139d → 147d |  |  |
| 113 | [PM]Confeccionar Informes de iteración e informe resumen de Hito 1 | 2018-10-15 → 2018-10-03 (-12d) | 2018-10-18 → 2018-10-08 (-10d) |  |  | 139d → 147d |  |  |
| 114 | [PM]Elaborar la presentación del Hito 1 | 2018-10-18 → 2018-10-08 (-10d) | 2018-10-22 → 2018-10-10 (-12d) |  |  | 139d → 147d |  |  |
| 115 | [PM]Exponer la presentación del Hito 1 | 2018-10-22 → 2018-10-10 (-12d) | 2018-10-23 → 2018-10-11 (-12d) |  |  | 139d → 147d |  |  |

## Version 5 (saved 2018-10-23)

Note of the change: Se aplica linea base.

Last finish stays 2019-05-06.

Changed:

| ID | Task | Other |
| --- | --- | --- |
| 1 | **Hito 0** | baseline start none → 2018-09-10; baseline finish none → 2018-10-10 |
| 2 | **Iteracion 1** | baseline start none → 2018-09-10; baseline finish none → 2018-10-02 |
| 3 | [PM]Rellenar documento de Concepto del proyecto | baseline start none → 2018-09-10; baseline finish none → 2018-09-11 |
| 4 | [PM]Rellenar Version inicial del documento Especificacion | baseline start none → 2018-10-01; baseline finish none → 2018-10-02 |
| 5 | **Iteracion 2** | baseline start none → 2018-10-01; baseline finish none → 2018-10-10 |
| 6 | [PM]Completar y Revisar documento Especificacion | baseline start none → 2018-10-01; baseline finish none → 2018-10-02 |
| 7 | [PM]Crear WBS del proyecto project | baseline start none → 2018-10-01; baseline finish none → 2018-10-04 |
| 8 | [PM]Crear plan general (tareas y precedencias basicas) en project | baseline start none → 2018-10-01; baseline finish none → 2018-10-04 |
| 9 | [PM]Elaborar el Presupuesto(hoja de calculo) | baseline start none → 2018-10-01; baseline finish none → 2018-10-10 |
| 10 | Documento de Especificaciones realizado | baseline start none → 2018-10-10; baseline finish none → 2018-10-10 |
| 11 | **Hito 1** | baseline start none → 2018-10-01; baseline finish none → 2018-12-17 |
| 12 | **Iteracion 3** | baseline start none → 2018-10-11; baseline finish none → 2018-10-24 |
| 13 | [V1]Documento de diseño de mecánicas de los NPCs | baseline start none → 2018-10-11; baseline finish none → 2018-10-12 |
| 14 | [v1] Documento de diseño de toma de decision: espacio y metodos | baseline start none → 2018-10-19; baseline finish none → 2018-10-24 |
| 15 | [V1]Documento de diseño técnico del motor de IA | baseline start none → 2018-10-18; baseline finish none → 2018-10-24 |
| 16 | **[V2]Diseño e implementación b.objetos (1/10)** | baseline start none → 2018-10-11; baseline finish none → 2018-10-11 |
| 17 | Investigacion | baseline start none → 2018-10-11; baseline finish none → 2018-10-11 |
| 18 | Diseño | baseline start none → 2018-10-11; baseline finish none → 2018-10-11 |
| 19 | **[TDS]Realizar sonidos para el juego (1/7)** | baseline start none → 2018-10-11; baseline finish none → 2018-10-11 |
| 20 | Síntesis | baseline start none → 2018-10-11; baseline finish none → 2018-10-11 |
| 21 | Grabaciones propias | baseline start none → 2018-10-11; baseline finish none → 2018-10-11 |
| 22 | Sonidos externos | baseline start none → 2018-10-11; baseline finish none → 2018-10-11 |
| 23 | Música | baseline start none → 2018-10-11; baseline finish none → 2018-10-11 |
| 24 | Cue Sheet | baseline start none → 2018-10-11; baseline finish none → 2018-10-11 |
| 25 | Hoja de metadatos | baseline start none → 2018-10-11; baseline finish none → 2018-10-11 |
| 26 | Integración del motor de audio en el juego con prueba de concepto | baseline start none → 2018-10-11; baseline finish none → 2018-10-11 |
| 27 | [RV]Boceto de los personajes (1/2) | baseline start none → 2018-10-11; baseline finish none → 2018-10-12 |
| 28 | [PD]Vídeo con animación del logo de la empresa (1/2) | baseline start none → 2018-10-11; baseline finish none → 2018-10-16 |
| 29 | [PM]Registrar tiempos y % de realización de tareas en Project | baseline start none → 2018-10-24; baseline finish none → 2018-10-24 |
| 30 | **Iteracion 4** | baseline start none → 2018-10-25; baseline finish none → 2018-11-07 |
| 31 | [v1] Documento de diseño de toma de decision: espacio y metodos | baseline start none → 2018-10-25; baseline finish none → 2018-10-30 |
| 32 | [V1]Documento de diseño técnico del motor de IA | baseline start none → 2018-10-31; baseline finish none → 2018-11-06 |
| 33 | **[V1]Sistema de toma de decisión con Behaviour Trees** | baseline start none → 2018-10-29; baseline finish none → 2018-11-06 |
| 34 | Investigacion | baseline start none → 2018-10-29; baseline finish none → 2018-10-30 |
| 35 | Diseño | baseline start none → 2018-10-30; baseline finish none → 2018-10-30 |
| 36 | Implementar | baseline start none → 2018-10-30; baseline finish none → 2018-11-06 |
| 37 | [V1]Documento de diseño de mecánicas de los NPCs 2/2 | baseline start none → 2018-10-25; baseline finish none → 2018-10-29 |
| 38 | **[V2]Diseño e implementación b.objetos (2/10)** | baseline start none → 2018-10-30; baseline finish none → 2018-10-30 |
| 39 | Diseño | baseline start none → 2018-10-30; baseline finish none → 2018-10-30 |
| 40 | Implementacion | baseline start none → 2018-10-30; baseline finish none → 2018-10-30 |
| 41 | **[v2]Diseño e implementacion b.componentes 1** | baseline start none → 2018-10-31; baseline finish none → 2018-11-01 |
| 42 | Investigar | baseline start none → 2018-10-31; baseline finish none → 2018-10-31 |
| 43 | Diseñar | baseline start none → 2018-10-31; baseline finish none → 2018-11-01 |
| 44 | [v2]Utilización de joints en las mecánicas jugables | baseline start none → 2018-10-25; baseline finish none → 2018-10-29 |
| 45 | [V2]Mecánicas básicas entidades sin IA | baseline start none → 2018-10-29; baseline finish none → 2018-11-01 |
| 46 | [RV]Boceto de los personajes 2/2 | baseline start none → 2018-11-02; baseline finish none → 2018-11-05 |
| 47 | **[TDS]Realizar sonidos para el juego 2/7** | baseline start none → 2018-10-25; baseline finish none → 2018-10-25 |
| 48 | Síntesis | baseline start none → 2018-10-25; baseline finish none → 2018-10-25 |
| 49 | Grabaciones propias | baseline start none → 2018-10-25; baseline finish none → 2018-10-25 |
| 50 | Sonidos externos | baseline start none → 2018-10-25; baseline finish none → 2018-10-25 |
| 51 | Música | baseline start none → 2018-10-25; baseline finish none → 2018-10-25 |
| 52 | Cue Sheet | baseline start none → 2018-10-25; baseline finish none → 2018-10-25 |
| 53 | Hoja de metadatos | baseline start none → 2018-10-25; baseline finish none → 2018-10-25 |
| 54 | Integración del motor de audio en el juego con prueba de concepto | baseline start none → 2018-10-25; baseline finish none → 2018-10-25 |
| 55 | [PM]Registrar tiempos y % de realización de tareas en Project | baseline start none → 2018-11-07; baseline finish none → 2018-11-07 |
| 56 | [PM]Rellenar documento Gestión de riesgos | baseline start none → 2018-11-02; baseline finish none → 2018-11-06 |
| 57 | **Iteracion 5** | baseline start none → 2018-11-08; baseline finish none → 2018-11-15 |
| 58 | [PM]Aplicar el modelo EVA en Project | baseline start none → 2018-11-08; baseline finish none → 2018-11-12 |
| 59 | [PM]Detallar plan iteraciones del mes de Noviembre. Creación Subtareas y precedencias en Project | baseline start none → 2018-11-08; baseline finish none → 2018-11-12 |
| 60 | [RV]Bocetos de los elementos | baseline start none → 2018-11-08; baseline finish none → 2018-11-12 |
| 61 | [PM]Detallar plan iteraciones del mes de Noviembre. Asignar recursos a las tareas en Project | baseline start none → 2018-11-12; baseline finish none → 2018-11-15 |
| 62 | **[TDS]Realizar sonidos para el juego 3/7** | baseline start none → 2018-11-08; baseline finish none → 2018-11-08 |
| 63 | Síntesis | baseline start none → 2018-11-08; baseline finish none → 2018-11-08 |
| 64 | Grabaciones propias | baseline start none → 2018-11-08; baseline finish none → 2018-11-08 |
| 65 | Sonidos externos | baseline start none → 2018-11-08; baseline finish none → 2018-11-08 |
| 66 | Música | baseline start none → 2018-11-08; baseline finish none → 2018-11-08 |
| 67 | Cue Sheet | baseline start none → 2018-11-08; baseline finish none → 2018-11-08 |
| 68 | Hoja de metadatos | baseline start none → 2018-11-08; baseline finish none → 2018-11-08 |
| 69 | Integración del motor de audio en el juego con prueba de concepto | baseline start none → 2018-11-08; baseline finish none → 2018-11-08 |
| 70 | [V2]Diseño e implementación b.objetos (3/10) | baseline start none → 2018-11-08; baseline finish none → 2018-11-08 |

| ID | Task | Other |
| --- | --- | --- |
| 71 | [v2]Diseño e implementacion b.componentes 2 | baseline start none → 2018-11-08; baseline finish none → 2018-11-09 |
| 72 | [v2]Formato propio para la definicion de los niveles(documentos con la especifiacion del formato) | baseline start none → 2018-11-08; baseline finish none → 2018-11-09 |
| 73 | [V2]Creación de un cargador de niveles | baseline start none → 2018-11-09; baseline finish none → 2018-11-14 |
| 74 | [v2]Control del player: movimiento y colisiones sin motor de físicas | baseline start none → 2018-11-08; baseline finish none → 2018-11-14 |
| 75 | [v2]Implementacion de camara de seguimiento | baseline start none → 2018-11-08; baseline finish none → 2018-11-12 |
| 76 | [V2]Utilización de propiedades físicas en las mecánicas jugables | baseline start none → 2018-11-08; baseline finish none → 2018-11-12 |
| 77 | [PM]Registrar tiempos y % de realización de tareas en Project | baseline start none → 2018-11-08; baseline finish none → 2018-11-08 |
| 78 | **Iteracion 6** | baseline start none → 2018-11-22; baseline finish none → 2018-12-06 |
| 79 | [RV]Bocetos del entorno | baseline start none → 2018-11-22; baseline finish none → 2018-11-26 |
| 80 | **[TDS]Realizar sonidos para el juego 4/7** | baseline start none → 2018-11-22; baseline finish none → 2018-11-22 |
| 81 | Síntesis | baseline start none → 2018-11-22; baseline finish none → 2018-11-22 |
| 82 | Grabaciones propias | baseline start none → 2018-11-22; baseline finish none → 2018-11-22 |
| 83 | Sonidos externos | baseline start none → 2018-11-22; baseline finish none → 2018-11-22 |
| 84 | Música | baseline start none → 2018-11-22; baseline finish none → 2018-11-22 |
| 85 | Cue Sheet | baseline start none → 2018-11-22; baseline finish none → 2018-11-22 |
| 86 | Hoja de metadatos | baseline start none → 2018-11-22; baseline finish none → 2018-11-22 |
| 87 | Integración del motor de audio en el juego con prueba de concepto | baseline start none → 2018-11-22; baseline finish none → 2018-11-22 |
| 88 | [V1]Sistema de distribución central de tiempo de proceso (Scheduling) | baseline start none → 2018-11-22; baseline finish none → 2018-11-29 |
| 89 | [v1]Gestión de recursos de IA con Level-of-Detail (LoD) | baseline start none → 2018-11-29; baseline finish none → 2018-12-06 |
| 90 | [V2]Diseño e implementación b.objetos (4/10) | baseline start none → 2018-11-22; baseline finish none → 2018-11-22 |
| 91 | [v2]Diseño e implementacion b.componentes 3 | baseline start none → 2018-11-22; baseline finish none → 2018-11-23 |
| 92 | [V2]Uso de trazado de rayos y otros tests de las físicas | baseline start none → 2018-11-22; baseline finish none → 2018-11-26 |
| 93 | [V2]Mecánicas de acción | baseline start none → 2018-11-22; baseline finish none → 2018-11-27 |
| 94 | **Iteracion 7** | baseline start none → 2018-12-06; baseline finish none → 2018-12-17 |
| 95 | [PM]Detallar plan iteraciones del mes de Diciembre. Creación Subtareas y precedencias en Project | baseline start none → 2018-12-06; baseline finish none → 2018-12-10 |
| 96 | [PM]Detallar plan iteraciones del mes de Diciembre. Asignar recursos a las tareas en Project | baseline start none → 2018-12-10; baseline finish none → 2018-12-13 |
| 97 | [PD]Cartel juego/proyecto | baseline start none → 2018-12-06; baseline finish none → 2018-12-17 |
| 98 | **[TDS]Realizar sonidos para el juego 5/7** | baseline start none → 2018-12-06; baseline finish none → 2018-12-06 |
| 99 | Síntesis | baseline start none → 2018-12-06; baseline finish none → 2018-12-06 |
| 100 | Grabaciones propias | baseline start none → 2018-12-06; baseline finish none → 2018-12-06 |
| 101 | Sonidos externos | baseline start none → 2018-12-06; baseline finish none → 2018-12-06 |
| 102 | Música | baseline start none → 2018-12-06; baseline finish none → 2018-12-06 |
| 103 | Cue Sheet | baseline start none → 2018-12-06; baseline finish none → 2018-12-06 |
| 104 | Hoja de metadatos | baseline start none → 2018-12-06; baseline finish none → 2018-12-06 |
| 105 | Integración del motor de audio en el juego con prueba de concepto | baseline start none → 2018-12-06; baseline finish none → 2018-12-06 |
| 106 | [V2]Diseño e implementación b.objetos (5/10) | baseline start none → 2018-12-06; baseline finish none → 2018-12-06 |
| 107 | [v2]Diseño e implementacion b.componentes 5 | baseline start none → 2018-12-06; baseline finish none → 2018-12-07 |
| 108 | [v2]Mecanicas de puzzle | baseline start none → 2018-12-06; baseline finish none → 2018-12-11 |
| 109 | [V2]Mecánicas de rol | baseline start none → 2018-12-06; baseline finish none → 2018-12-11 |
| 110 | [v2]Uso de sistema de depuración visual de las físicas | baseline start none → 2018-12-06; baseline finish none → 2018-12-07 |
| 111 | [v2]Power-ups y elementos adicionales | baseline start none → 2018-12-06; baseline finish none → 2018-12-11 |
| 112 | [PM]Comparar la planificación prevista y real en Project hito 1 | baseline start none → 2018-10-01; baseline finish none → 2018-10-03 |
| 113 | [PM]Confeccionar Informes de iteración e informe resumen de Hito 1 | baseline start none → 2018-10-03; baseline finish none → 2018-10-08 |
| 114 | [PM]Elaborar la presentación del Hito 1 | baseline start none → 2018-10-08; baseline finish none → 2018-10-10 |
| 115 | [PM]Exponer la presentación del Hito 1 | baseline start none → 2018-10-10; baseline finish none → 2018-10-11 |
| 116 | **[V1]Sistema de percepción sensorial (vista, oído, olfato, canales…)** | baseline start none → 2018-11-08; baseline finish none → 2018-11-15 |
| 117 | Investigacion | baseline start none → 2018-11-08; baseline finish none → 2018-11-09 |
| 118 | Diseño | baseline start none → 2018-11-12; baseline finish none → 2018-11-12 |
| 119 | Implementar | baseline start none → 2018-11-12; baseline finish none → 2018-11-15 |
| 120 | Versión Alpha de mecánicas | baseline start none → 2018-12-22; baseline finish none → 2018-12-22 |
| 121 | **Hito 2** | baseline start none → 2018-12-24; baseline finish none → 2019-01-14 |
| 122 | **Navidad** | baseline start none → 2018-12-24; baseline finish none → 2018-12-25 |
| 123 | [V2]Diseño e implementación b.objetos (6/10) | baseline start none → 2018-12-24; baseline finish none → 2018-12-24 |
| 124 | [v2]Diseño e implementacion b.componentes 6 | baseline start none → 2018-12-24; baseline finish none → 2018-12-25 |
| 125 | **[TDS]Realizar sonidos para el juego 6/7** | baseline start none → 2018-12-24; baseline finish none → 2018-12-24 |
| 126 | Síntesis | baseline start none → 2018-12-24; baseline finish none → 2018-12-24 |
| 127 | Grabaciones propias | baseline start none → 2018-12-24; baseline finish none → 2018-12-24 |
| 128 | Sonidos externos | baseline start none → 2018-12-24; baseline finish none → 2018-12-24 |
| 129 | Música | baseline start none → 2018-12-24; baseline finish none → 2018-12-24 |
| 130 | Cue Sheet | baseline start none → 2018-12-24; baseline finish none → 2018-12-24 |
| 131 | Hoja de metadatos | baseline start none → 2018-12-24; baseline finish none → 2018-12-24 |
| 132 | Integración del motor de audio en el juego con prueba de concepto | baseline start none → 2018-12-24; baseline finish none → 2018-12-24 |
| 133 | <Tarea nueva> | baseline start none → 2018-12-24; baseline finish none → 2018-12-24 |
| 134 | **Iteracion 8** | baseline start none → 2019-01-11; baseline finish none → 2019-01-14 |
| 135 | [V2]Diseño e implementación b.objetos (7/10) | baseline start none → 2019-01-11; baseline finish none → 2019-01-11 |
| 136 | [v2]Diseño e implementacion b.componentes 7 | baseline start none → 2019-01-11; baseline finish none → 2019-01-14 |
| 137 | **[TDS]Realizar sonidos para el juego 7/7** | baseline start none → 2019-01-11; baseline finish none → 2019-01-11 |
| 138 | Síntesis | baseline start none → 2019-01-11; baseline finish none → 2019-01-11 |
| 139 | Grabaciones propias | baseline start none → 2019-01-11; baseline finish none → 2019-01-11 |
| 140 | Sonidos externos | baseline start none → 2019-01-11; baseline finish none → 2019-01-11 |

| ID | Task | Other |
| --- | --- | --- |
| 141 | Música | baseline start none → 2019-01-11; baseline finish none → 2019-01-11 |
| 142 | Cue Sheet | baseline start none → 2019-01-11; baseline finish none → 2019-01-11 |
| 143 | Hoja de metadatos | baseline start none → 2019-01-11; baseline finish none → 2019-01-11 |
| 144 | Integración del motor de audio en el juego con prueba de concepto | baseline start none → 2019-01-11; baseline finish none → 2019-01-11 |
| 145 | <Tarea nueva> | baseline start none → 2019-01-11; baseline finish none → 2019-01-11 |
| 146 | [PM]Revisar especificación proyecto | baseline start none → 2018-12-24; baseline finish none → 2018-12-24 |
| 147 | [PM]Reestimar proyecto | baseline start none → 2018-12-24; baseline finish none → 2018-12-24 |
| 148 | [PM]Detallar plan iteraciones del mes de Enero. Creación Subtareas y precedencias en Project | baseline start none → 2018-12-24; baseline finish none → 2018-12-24 |
| 149 | [PM]Detallar plan iteraciones del mes de Enero. Asignar recursos a las tareas en Project | baseline start none → 2018-12-24; baseline finish none → 2018-12-24 |
| 150 | [PM]Registrar tiempos y % de realización de tareas en Project | baseline start none → 2018-12-24; baseline finish none → 2018-12-24 |
| 151 | [PM]Comparar la planificación prevista y real en Project hito 2 | baseline start none → 2018-12-24; baseline finish none → 2018-12-24 |
| 152 | [PM]Confeccionar Informes de iteración e informe resumen de Hito 2 | baseline start none → 2018-12-24; baseline finish none → 2018-12-24 |
| 153 | [V1]Sistema de depuración visual in-game de la IA | baseline start none → 2018-12-24; baseline finish none → 2018-12-24 |
| 154 | [V1]Sistema de distribución central de tiempo de proceso (Scheduling) | baseline start none → 2018-12-24; baseline finish none → 2018-12-24 |
| 155 | [V2]Power-ups y elementos adicionales | baseline start none → 2018-12-24; baseline finish none → 2018-12-24 |
| 156 | [V2]Integración de librería para GUI | baseline start none → 2018-12-24; baseline finish none → 2018-12-24 |
| 157 | [V2]Implementación de menús | baseline start none → 2018-12-24; baseline finish none → 2018-12-24 |
| 158 | [V2]Implementación del HUD | baseline start none → 2018-12-24; baseline finish none → 2018-12-24 |
| 159 | [PD]Trailer juego/proyecto | baseline start none → 2018-12-24; baseline finish none → 2018-12-24 |
| 160 | [PD]Making of juego/proyecto | baseline start none → 2018-12-24; baseline finish none → 2018-12-24 |
| 161 | [RV]Modelado de los personajes | baseline start none → 2018-12-24; baseline finish none → 2018-12-24 |
| 162 | [RV]Texturizado de los personajes | baseline start none → 2018-12-24; baseline finish none → 2018-12-24 |
| 163 | [RV]Modelado del entorno y elementos | baseline start none → 2018-12-24; baseline finish none → 2018-12-24 |
| 164 | Version Beta del juego, que se pueda jugar | baseline start none → 2019-01-14; baseline finish none → 2019-01-14 |
| 165 | **Hito 3** | baseline start none → 2019-01-24; baseline finish none → 2019-03-06 |
| 166 | **Iteracion 9** | baseline start none → 2019-01-25; baseline finish none → 2019-01-28 |
| 167 | [V2]Diseño e implementación b.objetos (8/10) | baseline start none → 2019-01-25; baseline finish none → 2019-01-25 |
| 168 | [v2]Diseño e implementacion b.componentes 8 | baseline start none → 2019-01-25; baseline finish none → 2019-01-28 |
| 169 | <Tarea nueva> | baseline start none → 2019-01-25; baseline finish none → 2019-01-25 |
| 170 | **Iteracion 10** | baseline start none → 2019-02-06; baseline finish none → 2019-02-07 |
| 171 | [V2]Diseño e implementación b.objetos (9/10) | baseline start none → 2019-02-06; baseline finish none → 2019-02-06 |
| 172 | [v2]Diseño e implementacion b.componentes 9 | baseline start none → 2019-02-06; baseline finish none → 2019-02-07 |
| 173 | <Tarea nueva> | baseline start none → 2019-02-06; baseline finish none → 2019-02-06 |
| 174 | **Iteracion 11** | baseline start none → 2019-02-20; baseline finish none → 2019-02-21 |
| 175 | [V2]Diseño e implementación b.objetos (final) | baseline start none → 2019-02-20; baseline finish none → 2019-02-20 |
| 176 | [v2]Diseño e implementacion b.componentes (final) | baseline start none → 2019-02-20; baseline finish none → 2019-02-21 |
| 177 | <Tarea nueva> | baseline start none → 2019-02-20; baseline finish none → 2019-02-20 |
| 178 | **Iteracion 12** | baseline start none → 2019-03-06; baseline finish none → 2019-03-06 |
| 179 | <Tarea nueva> | baseline start none → 2019-03-06; baseline finish none → 2019-03-06 |
| 180 | [PM]Detallar plan iteraciones del mes de Febrero-Marzo. Creación Subtareas y precedencias en Project | baseline start none → 2019-01-24; baseline finish none → 2019-01-24 |
| 181 | [PM]Detallar plan iteraciones del mes de Febrero-Marzo Asignar recursos a las tareas en Project | baseline start none → 2019-01-24; baseline finish none → 2019-01-24 |
| 182 | [PM]Registrar tiempos y % de realización de tareas en Project | baseline start none → 2019-01-24; baseline finish none → 2019-01-24 |
| 183 | [PM]Comparar la planificación prevista y real en Project hito 3 | baseline start none → 2019-01-24; baseline finish none → 2019-01-24 |
| 184 | [PM]Confeccionar Informes de iteración e informe resumen de Hito 3 | baseline start none → 2019-01-24; baseline finish none → 2019-01-24 |
| 185 | [PM]Elaborar la presentación del Hito 3 | baseline start none → 2019-01-24; baseline finish none → 2019-01-24 |
| 186 | [PM]Exponer la presentación del Hito 3 | baseline start none → 2019-01-24; baseline finish none → 2019-01-24 |
| 187 | [TAG]Estructura básica del nodo (array de hijos, puntero a padre, puntero a entidad, funcionalidad básica -constructor, destructor, gets, sets, manejo de hijos….) | baseline start none → 2019-01-24; baseline finish none → 2019-01-24 |
| 188 | [TAG]Recorrido-dibujado del árbol | baseline start none → 2019-01-24; baseline finish none → 2019-01-24 |
| 189 | [TAG]Estructura básica de la entidad (Constructor, destructor, funciones… todas virtuales, vacías) | baseline start none → 2019-01-24; baseline finish none → 2019-01-24 |
| 190 | [TAG]Matrices (model, view, projection) y pila estáticas y su manejo | baseline start none → 2019-01-24; baseline finish none → 2019-01-24 |
| 191 | [TAG]Estructura básica de la transformación (Constructor, destructor, matriz transformación…) | baseline start none → 2019-01-24; baseline finish none → 2019-01-24 |
| 192 | [TAG]Operaciones de transformación (trasladar, rotar, escalar, identidad, trasponer, invertir, todas con GLM o GLMatrix) | baseline start none → 2019-01-24; baseline finish none → 2019-01-24 |
| 193 | [TAG]Dibujado (begindraw, enddraw, manejo pila y matriz model) | baseline start none → 2019-01-24; baseline finish none → 2019-01-24 |
| 194 | [TAG]Estructura básica de la cámara (Constructor, destructor, matriz proyección) | baseline start none → 2019-01-24; baseline finish none → 2019-01-24 |
| 195 | [TAG]Rellenar matriz perspectiva (con GLM o GLMatrix) | baseline start none → 2019-01-24; baseline finish none → 2019-01-24 |
| 196 | [TAG]Estructura básica de la luz (Constructor, destructor) | baseline start none → 2019-01-24; baseline finish none → 2019-01-24 |
| 197 | [TAG]Datos y funciones luz puntual | baseline start none → 2019-01-24; baseline finish none → 2019-01-24 |
| 198 | [TAG]Estructura básica de la malla (Constructor, destructor) | baseline start none → 2019-01-24; baseline finish none → 2019-01-24 |
| 199 | [TAG]Datos de mallas, texturas, materiales… (llamadas al gestor de recursos) | baseline start none → 2019-01-24; baseline finish none → 2019-01-24 |
| 200 | [TAG]Dibujado de mallas (begindraw, enddraw, matriz model…) | baseline start none → 2019-01-24; baseline finish none → 2019-01-24 |
| 201 | [TAG]Estructura básica del gestor de recursos (constructor, destructor, vectores de recursos) | baseline start none → 2019-01-24; baseline finish none → 2019-01-24 |
| 202 | [TAG]Obtener recurso (gestión adecuada de memoria) | baseline start none → 2019-01-24; baseline finish none → 2019-01-24 |
| 203 | [TAG]Estructura básica del recurso (constructor, destructor. Es virtual, vacío) | baseline start none → 2019-01-24; baseline finish none → 2019-01-24 |
| 204 | [TAG]Estructura básica de la malla (constructor, destructor) | baseline start none → 2019-01-24; baseline finish none → 2019-01-24 |
| 205 | [TAG]Lectura de disco (con assimp) | baseline start none → 2019-01-24; baseline finish none → 2019-01-24 |
| 206 | [TAG]Creación de buffers de vértices, normales, índices… y relleno | baseline start none → 2019-01-24; baseline finish none → 2019-01-24 |
| 207 | [TAG]Dibujado de las mallas (draw, con paso de los buffers a OpenGL o WebGL) | baseline start none → 2019-01-24; baseline finish none → 2019-01-24 |
| 208 | [TAG]Estructura básica del material (constructor, destructor) | baseline start none → 2019-01-24; baseline finish none → 2019-01-24 |
| 209 | [TAG]Leer material de disco (con librería o con parser propio) y rellenar valores | baseline start none → 2019-01-24; baseline finish none → 2019-01-24 |
| 210 | [TAG]Dibujado de los materiales (preparar los materiales y cargarlos en OpenGL o WebGL) | baseline start none → 2019-01-24; baseline finish none → 2019-01-24 |

| ID | Task | Other |
| --- | --- | --- |
| 211 | [TAG]Estructura básica del shader (constructor, destructor) | baseline start none → 2019-01-24; baseline finish none → 2019-01-24 |
| 212 | [TAG]Lectura de shaders de disco (con parser propio) y guardarlo | baseline start none → 2019-01-24; baseline finish none → 2019-01-24 |
| 213 | [TAG]Estructura básica de la interfaz (constructor, destructor, inicialización motor y openGL) | baseline start none → 2019-01-24; baseline finish none → 2019-01-24 |
| 214 | [TAG]Funciones para crear cámaras y gestionarlas (manejo de las cámaras, registro, cálculo de la matriz view) | baseline start none → 2019-01-24; baseline finish none → 2019-01-24 |
| 215 | [TAG]Funciones para crear luces y gestionarlas (manejo de las luces registro, cálculo de la matriz light) | baseline start none → 2019-01-24; baseline finish none → 2019-01-24 |
| 216 | [TAG]Funciones para crear transformaciones (creación de varios nodos con las transformaciones, manejo de las transformaciones) | baseline start none → 2019-01-24; baseline finish none → 2019-01-24 |
| 217 | [TAG]Funciones para crear mallas y animaciones | baseline start none → 2019-01-24; baseline finish none → 2019-01-24 |
| 218 | [TAG]Funciones para crear shaders y gestionarlos | baseline start none → 2019-01-24; baseline finish none → 2019-01-24 |
| 219 | [TAG]Shader básico (Sombreado de Phong, reflexión de Phong) con materiales | baseline start none → 2019-01-24; baseline finish none → 2019-01-24 |
| 220 | [TAG]Integración con la aplicación | baseline start none → 2019-01-24; baseline finish none → 2019-01-24 |
| 221 | [TAG]Realización de una fachada entre el motor y la aplicación o videojuego | baseline start none → 2019-01-24; baseline finish none → 2019-01-24 |
| 222 | [TAG]Librería matemática (GLM o GLMatrix) | baseline start none → 2019-01-24; baseline finish none → 2019-01-24 |
| 223 | [TAG][Solo CED] Librería de lectura de mallas (assimp…) | baseline start none → 2019-01-24; baseline finish none → 2019-01-24 |
| 224 | [TAG][Solo CED] Librería de ventanas, entrada/salida... (GLFW…) | baseline start none → 2019-01-24; baseline finish none → 2019-01-24 |
| 225 | [V1]Flocking: comportamiento grupal emergente | baseline start none → 2019-01-24; baseline finish none → 2019-01-24 |
| 226 | [V1]Editor in-game de parámetros y comportamientos de la IA | baseline start none → 2019-01-24; baseline finish none → 2019-01-24 |
| 227 | [V1]Sistema de logros y puntuaciones web | baseline start none → 2019-01-24; baseline finish none → 2019-01-24 |
| 228 | [V2]Implementación de cesped y vegetación | baseline start none → 2019-01-24; baseline finish none → 2019-01-24 |
| 229 | [V2]Implementación de nubes | baseline start none → 2019-01-24; baseline finish none → 2019-01-24 |
| 230 | [V2]Implementación de sistemas de partículas | baseline start none → 2019-01-24; baseline finish none → 2019-01-24 |
| 231 | [TDS]Resto de la biblioteca (máx. 1/3), cuesheet y metadatos finales | baseline start none → 2019-01-24; baseline finish none → 2019-01-24 |
| 232 | <Tarea nueva> | baseline start none → 2019-01-24; baseline finish none → 2019-01-24 |
| 233 | Versión Producción - Lista para pulir | baseline start none → 2019-03-06; baseline finish none → 2019-03-06 |
| 234 | **hito 4** | baseline start none → 2019-03-27; baseline finish none → 2019-05-06 |
| 235 | **Iteracion 13** | baseline start none → 2019-03-27; baseline finish none → 2019-03-27 |
| 236 | <Tarea nueva> | baseline start none → 2019-03-27; baseline finish none → 2019-03-27 |
| 237 | **Semana santa** | baseline start none → 2019-04-17; baseline finish none → 2019-04-17 |
| 238 | <Tarea nueva> | baseline start none → 2019-04-17; baseline finish none → 2019-04-17 |
| 239 | **Iteracion 14** | baseline start none → 2019-05-06; baseline finish none → 2019-05-06 |
| 240 | <Tarea nueva> | baseline start none → 2019-05-06; baseline finish none → 2019-05-06 |
| 241 | [PM]Detallar plan iteraciones del mes de Abril-Mayo. Creación Subtareas y precedencias en Project | baseline start none → 2019-03-27; baseline finish none → 2019-03-27 |
| 242 | [PM]Detallar plan iteraciones del mes de Abril-Mayo. Asignar recursos a las tareas en Project | baseline start none → 2019-03-27; baseline finish none → 2019-03-27 |
| 243 | [PM]Registrar tiempos y % de realización de tareas en Project | baseline start none → 2019-03-27; baseline finish none → 2019-03-27 |
| 244 | [PM]Comparar la planificación prevista y real en Project hito 4 | baseline start none → 2019-03-27; baseline finish none → 2019-03-27 |
| 245 | [PM]Confeccionar Informes de iteración e informe resumen de Hito 4 | baseline start none → 2019-03-27; baseline finish none → 2019-03-27 |
| 246 | [PM]Elaborar la presentación del Hito 4 | baseline start none → 2019-03-27; baseline finish none → 2019-03-27 |
| 247 | [PM]Exponer la presentación del Hito 4 | baseline start none → 2019-03-27; baseline finish none → 2019-03-27 |
| 248 | [TAG]Estructura básica de la animación (Constructor, destructor) | baseline start none → 2019-03-27; baseline finish none → 2019-03-27 |
| 249 | [TAG]Datos de animaciones, mallas, texturas, materiales (multiples, con llamadas al gestor de recursos) | baseline start none → 2019-03-27; baseline finish none → 2019-03-27 |
| 250 | [TAG]Dibujado de texturas (preparar las texturas y cargarlas en OpenGL o WebGL) | baseline start none → 2019-03-27; baseline finish none → 2019-03-27 |
| 251 | [TAG]Shader básico (Sombreado de Phong, reflexión de Phong) con materiales y texturas | baseline start none → 2019-03-27; baseline finish none → 2019-03-27 |
| 252 | [TAG]Shader Cartoon | baseline start none → 2019-03-27; baseline finish none → 2019-03-27 |
| 253 | [TAG]Bounding boxes (incluye retocar nodos, entidades y recursos malla) | baseline start none → 2019-03-27; baseline finish none → 2019-03-27 |
| 254 | [TAG]Backface culling | baseline start none → 2019-03-27; baseline finish none → 2019-03-27 |
| 255 | [TAG]Frustum culling | baseline start none → 2019-03-27; baseline finish none → 2019-03-27 |
| 256 | [TAG]Sombras proyectadas | baseline start none → 2019-03-27; baseline finish none → 2019-03-27 |
| 257 | [TAG]Sistema de partículas (sólo la incorporación en el motor) | baseline start none → 2019-03-27; baseline finish none → 2019-03-27 |
| 258 | [PD]Créditos | baseline start none → 2019-03-27; baseline finish none → 2019-03-27 |
| 259 | [PD]Vídeo final juego / explicación parte del proyecto | baseline start none → 2019-03-27; baseline finish none → 2019-03-27 |
| 260 | [TDS]Integración de sonido y música en el juego | baseline start none → 2019-03-27; baseline finish none → 2019-03-27 |
| 261 | [TDS]Post producción (mezcla y masterización in-game) | baseline start none → 2019-03-27; baseline finish none → 2019-03-27 |
| 262 | [TDS]Sonido generado proceduralmente in-game | baseline start none → 2019-03-27; baseline finish none → 2019-03-27 |
| 263 | [RV]Rigging de los personajes | baseline start none → 2019-03-27; baseline finish none → 2019-03-27 |
| 264 | [RV]Captura de movimiento | baseline start none → 2019-03-27; baseline finish none → 2019-03-27 |
| 265 | [RV]Animación de los personajes | baseline start none → 2019-03-27; baseline finish none → 2019-03-27 |
| 266 | [RV]Texturizado del entorno y elementos | baseline start none → 2019-03-27; baseline finish none → 2019-03-27 |
| 267 | Version terminada | baseline start none → 2019-05-06; baseline finish none → 2019-05-06 |

## Version 6 (saved 2018-11-07)

Note of the change: Se pone a jose ramon como encargado de la tarea joints.

Last finish stays 2019-05-06. Complete tasks 20 → 42.

Added:

| ID | Task | Duration | Start | Finish | Constraint | Resources |
| --- | --- | --- | --- | --- | --- | --- |
| 47 | [PD]Vídeo con animación del logo de la empresa (2/2) | 30h | 2018-10-25 09:00 A | 2018-10-30 17:00 A |  | David Ramón Sevilla [10%]; Jose Vicente Anton Coy [10%]; Marines Ánton Castelló [10%] |
| 59 | [RV]Boceto de los personajes 3/3 | 4h | 2018-11-08 09:00 | 2018-11-08 13:00 |  | Débora Galdeano González [50%]; Marines Ánton Castelló [50%] |
| 60 | [v1] Documento de diseño de toma de decision: espacio y metodos (2/2) | 28h | 2018-11-08 09:00 | 2018-11-13 13:00 |  | David Ramón Sevilla [50%]; Jose Vicente Anton Coy [50%] |
| 61 | [V1]Documento de diseño técnico del motor de IA (2/2) | 29h | 2018-11-09 09:00 | 2018-11-14 16:00 | start no earlier than 2018-11-09 09:00 | Marines Ánton Castelló [80%] |
| 62 | [V1]Sistema de toma de decisión con Behaviour Trees (2/2) | 36h | 2018-11-09 09:00 | 2018-11-15 13:00 | start no earlier than 2018-11-09 09:00 | Débora Galdeano González [80%] |
| 63 | [v2]Utilización de joints en las mecánicas jugables (2/2) | 13h | 2018-11-09 09:00 | 2018-11-12 16:00 | start no earlier than 2018-11-09 09:00 | Jose Ramon Barea Cecilia [80%] |
| 64 | [V2]Mecánicas básicas entidades sin IA | 48h | 2018-11-08 09:00 | 2018-11-15 19:00 |  | María Sánchez Marqués [50%] |
| 70 | Implementacion | 7h | 2018-11-15 09:00 | 2018-11-15 18:00 | start no earlier than 2018-11-15 09:00 |  |
| 102 | [PM]Registrar tiempos y % de realización de tareas en Project | 48min | 2018-12-04 18:12 | 2018-12-04 19:00 | finish no earlier than 2018-12-04 19:00 | David Ramón Sevilla [2%]; Débora Galdeano González [2%]; Jose Ramon Barea Cecilia [2%]; Jose Vicente Anton Coy [2%]; María Sánchez Marqués [2%]; Marines Ánton Castelló [2%] |

Changed:

| ID | Task | Start | Finish | Duration | Complete | Total float | Other |
| --- | --- | --- | --- | --- | --- | --- | --- |
| 1 | **Hito 0** | 2018-09-10 A → 2018-09-10 09:00 A | 2018-10-10 A → 2018-10-10 10:36 A |  |  |  | baseline start 2018-09-10 → 2018-09-10 09:00; baseline finish 2018-10-10 → 2018-10-10 10:36 |
| 2 | **Iteracion 1** | 2018-09-10 A → 2018-09-10 09:00 A | 2018-10-02 A → 2018-10-02 10:36 A |  |  |  | baseline start 2018-09-10 → 2018-09-10 09:00; baseline finish 2018-10-02 → 2018-10-02 10:36 |
| 3 | [PM]Rellenar documento de Concepto del proyecto | 2018-09-10 A → 2018-09-10 09:00 A | 2018-09-11 A → 2018-09-11 10:36 A |  |  |  | constraint start no earlier than 2018-09-10 → start no earlier than 2018-09-10 09:00; baseline start 2018-09-10 → 2018-09-10 09:00; baseline finish 2018-09-11 → 2018-09-11 10:36 |
| 4 | [PM]Rellenar Version inicial del documento Especificacion | 2018-10-01 A → 2018-10-01 09:00 A | 2018-10-02 A → 2018-10-02 10:36 A |  |  |  | baseline start 2018-10-01 → 2018-10-01 09:00; baseline finish 2018-10-02 → 2018-10-02 10:36 |
| 5 | **Iteracion 2** | 2018-10-01 A → 2018-10-01 09:00 A | 2018-10-10 A → 2018-10-10 10:36 A |  |  |  | baseline start 2018-10-01 → 2018-10-01 09:00; baseline finish 2018-10-10 → 2018-10-10 10:36 |
| 6 | [PM]Completar y Revisar documento Especificacion | 2018-10-01 A → 2018-10-01 09:00 A | 2018-10-02 A → 2018-10-02 10:36 A |  |  |  | baseline start 2018-10-01 → 2018-10-01 09:00; baseline finish 2018-10-02 → 2018-10-02 10:36 |
| 7 | [PM]Crear WBS del proyecto project | 2018-10-01 A → 2018-10-01 09:00 A | 2018-10-04 A → 2018-10-04 15:48 A |  |  |  | baseline start 2018-10-01 → 2018-10-01 09:00; baseline finish 2018-10-04 → 2018-10-04 15:48 |
| 8 | [PM]Crear plan general (tareas y precedencias basicas) en project | 2018-10-01 A → 2018-10-01 09:00 A | 2018-10-04 A → 2018-10-04 15:48 A |  |  |  | baseline start 2018-10-01 → 2018-10-01 09:00; baseline finish 2018-10-04 → 2018-10-04 15:48 |
| 9 | [PM]Elaborar el Presupuesto(hoja de calculo) | 2018-10-01 A → 2018-10-01 09:00 A | 2018-10-10 A → 2018-10-10 10:36 A |  |  |  | baseline start 2018-10-01 → 2018-10-01 09:00; baseline finish 2018-10-10 → 2018-10-10 10:36 |
| 10 | Documento de Especificaciones realizado | 2018-10-10 A → 2018-10-10 10:36 A | 2018-10-10 A → 2018-10-10 10:36 A |  |  |  | constraint start no earlier than 2018-10-10 → start no earlier than 2018-10-10 09:00; baseline start 2018-10-10 → 2018-10-10 10:36; baseline finish 2018-10-10 → 2018-10-10 10:36 |
| 11 | **Hito 1** | 2018-10-01 A → 2018-10-01 09:00 A | 2018-12-17 → 2018-12-17 13:00 |  | 7% → 19% |  | baseline start 2018-10-01 → 2018-10-01 09:00; baseline finish 2018-12-17 → 2018-12-17 13:00 |
| 12 | **Iteracion 3** | 2018-10-11 A → 2018-10-11 09:00 A | 2018-10-24 → 2018-10-24 19:00 |  |  |  | constraint start no earlier than 2018-10-11 → start no earlier than 2018-10-11 09:00; baseline start 2018-10-11 → 2018-10-11 09:00; baseline finish 2018-10-24 → 2018-10-24 19:00 |
| 13 | [V1]Documento de diseño de mecánicas de los NPCs | 2018-10-11 A → 2018-10-11 09:00 A | 2018-10-12 A → 2018-10-12 18:00 A |  |  |  | constraint must finish on 2018-10-24 → must finish on 2018-10-24 19:00; baseline start 2018-10-11 → 2018-10-11 09:00; baseline finish 2018-10-12 → 2018-10-12 18:00 |
| 14 | [v1] Documento de diseño de toma de decision: espacio y metodos | 2018-10-19 → 2018-10-19 09:00 | 2018-10-24 → 2018-10-24 19:00 |  |  |  | constraint must finish on 2018-10-24 → must finish on 2018-10-24 19:00; baseline start 2018-10-19 → 2018-10-19 09:00; baseline finish 2018-10-24 → 2018-10-24 19:00 |
| 15 | [V1]Documento de diseño técnico del motor de IA | 2018-10-18 → 2018-10-18 12:00 | 2018-10-24 → 2018-10-24 19:00 |  |  |  | constraint must finish on 2018-10-24 → must finish on 2018-10-24 19:00; baseline start 2018-10-18 → 2018-10-18 12:00; baseline finish 2018-10-24 → 2018-10-24 19:00 |
| 16 | **[V2]Diseño e implementación b.objetos (1/10)** | 2018-10-11 A → 2018-10-11 09:00 A | 2018-10-11 A → 2018-10-11 12:30 A |  |  |  | baseline start 2018-10-11 → 2018-10-11 09:00; baseline finish 2018-10-11 → 2018-10-11 12:30 |
| 17 | Investigacion | 2018-10-11 A → 2018-10-11 09:00 A | 2018-10-11 A → 2018-10-11 12:30 A |  |  |  | baseline start 2018-10-11 → 2018-10-11 09:00; baseline finish 2018-10-11 → 2018-10-11 12:30 |
| 18 | Diseño | 2018-10-11 A → 2018-10-11 09:00 A | 2018-10-11 A → 2018-10-11 12:30 A |  |  |  | baseline start 2018-10-11 → 2018-10-11 09:00; baseline finish 2018-10-11 → 2018-10-11 12:30 |
| 19 | **[TDS]Realizar sonidos para el juego (1/7)** | 2018-10-11 A → 2018-10-11 09:00 A | 2018-10-11 A → 2018-10-11 11:51 A |  |  |  | baseline start 2018-10-11 → 2018-10-11 09:00; baseline finish 2018-10-11 → 2018-10-11 11:51 |
| 20 | Síntesis | 2018-10-11 A → 2018-10-11 09:00 A | 2018-10-11 A → 2018-10-11 11:51 A |  |  |  | baseline start 2018-10-11 → 2018-10-11 09:00; baseline finish 2018-10-11 → 2018-10-11 11:51 |
| 21 | Grabaciones propias | 2018-10-11 A → 2018-10-11 09:00 A | 2018-10-11 A → 2018-10-11 11:51 A |  |  |  | baseline start 2018-10-11 → 2018-10-11 09:00; baseline finish 2018-10-11 → 2018-10-11 11:51 |
| 22 | Sonidos externos | 2018-10-11 A → 2018-10-11 09:00 A | 2018-10-11 A → 2018-10-11 11:51 A |  |  |  | baseline start 2018-10-11 → 2018-10-11 09:00; baseline finish 2018-10-11 → 2018-10-11 11:51 |
| 23 | Música | 2018-10-11 A → 2018-10-11 09:00 A | 2018-10-11 A → 2018-10-11 11:51 A |  |  |  | baseline start 2018-10-11 → 2018-10-11 09:00; baseline finish 2018-10-11 → 2018-10-11 11:51 |
| 24 | Cue Sheet | 2018-10-11 A → 2018-10-11 09:00 A | 2018-10-11 A → 2018-10-11 10:25 A |  |  |  | baseline start 2018-10-11 → 2018-10-11 09:00; baseline finish 2018-10-11 → 2018-10-11 10:25 |
| 25 | Hoja de metadatos | 2018-10-11 A → 2018-10-11 09:00 A | 2018-10-11 A → 2018-10-11 10:25 A |  |  |  | baseline start 2018-10-11 → 2018-10-11 09:00; baseline finish 2018-10-11 → 2018-10-11 10:25 |
| 26 | Integración del motor de audio en el juego con prueba de concepto | 2018-10-11 A → 2018-10-11 09:00 A | 2018-10-11 A → 2018-10-11 11:51 A |  |  |  | baseline start 2018-10-11 → 2018-10-11 09:00; baseline finish 2018-10-11 → 2018-10-11 11:51 |
| 27 | [RV]Boceto de los personajes (1/2) | 2018-10-11 A → 2018-10-11 09:00 A | 2018-10-12 A → 2018-10-12 18:00 A |  |  |  | constraint must finish on 2018-10-24 → must finish on 2018-10-24 19:00; baseline start 2018-10-11 → 2018-10-11 09:00; baseline finish 2018-10-12 → 2018-10-12 18:00 |
| 28 | [PD]Vídeo con animación del logo de la empresa (1/2) | 2018-10-11 A → 2018-10-11 09:00 A | 2018-10-16 A → 2018-10-16 17:00 A |  |  |  | constraint must finish on 2018-10-24 → must finish on 2018-10-24 19:00; baseline start 2018-10-11 → 2018-10-11 09:00; baseline finish 2018-10-16 → 2018-10-16 17:00 |
| 29 | [PM]Registrar tiempos y % de realización de tareas en Project | 2018-10-24 A → 2018-10-24 18:00 A | 2018-10-24 A → 2018-10-24 19:00 A |  |  |  | constraint must finish on 2018-10-24 → must finish on 2018-10-24 19:00; baseline start 2018-10-24 → 2018-10-24 18:00; baseline finish 2018-10-24 → 2018-10-24 19:00 |
| 30 | **Iteracion 4** | 2018-10-25 → 2018-10-25 09:00 A | 2018-11-07 → 2018-11-07 09:48 | 9.25d → 9.1d | 0% → 99% | 0.75d → 0.9d | constraint start no earlier than 2018-10-25 → start no earlier than 2018-10-25 09:00; baseline start 2018-10-25 → 2018-10-25 09:00; baseline finish 2018-11-07 → 2018-11-07 11:00 |
| 31 | [v1] Documento de diseño de toma de decision: espacio y metodos (1/2) | 2018-10-25 → 2018-10-25 09:00 A | 2018-10-30 → 2018-10-25 13:00 A (-5d) | 32h → 4h | 0% → 100% | 1.38d → none | was named [v1] Documento de diseño de toma de decision: espacio y metodos; constraint finish no later than 2018-11-07 → none; baseline start 2018-10-25 → 2018-10-25 09:00; baseline finish 2018-10-30 → 2018-10-30 19:00 |
| 32 | [V1]Documento de diseño técnico del motor de IA (1/2) | 2018-10-31 → 2018-10-31 09:00 A | 2018-11-06 → 2018-10-31 19:00 A (-6d) | 37h → 8h | 0% → 100% | 1.38d → none | was named [V1]Documento de diseño técnico del motor de IA; constraint finish no later than 2018-11-07 → none; baseline start 2018-10-31 → 2018-10-31 09:00; baseline finish 2018-11-06 → 2018-11-06 16:00 |
| 33 | **[V1]Sistema de toma de decisión con Behaviour Trees (1/2)** | 2018-10-29 → 2018-10-29 09:00 A | 2018-11-06 → 2018-10-30 18:00 A (-7d) | 6.38d → 1.88d | 0% → 100% | 1.62d → none | was named [V1]Sistema de toma de decisión con Behaviour Trees; baseline start 2018-10-29 → 2018-10-29 09:00; baseline finish 2018-11-06 → 2018-11-06 12:00 |
| 34 | Investigacion | 2018-10-29 → 2018-10-29 09:00 A | 2018-10-30 → 2018-10-30 11:00 A |  | 0% → 100% | 1.62d → none | constraint start no earlier than 2018-10-27 → start no earlier than 2018-10-27 09:00; baseline start 2018-10-29 → 2018-10-29 09:00; baseline finish 2018-10-30 → 2018-10-30 11:00 |
| 35 | Diseño | 2018-10-30 → 2018-10-30 11:00 A | 2018-10-30 → 2018-10-30 18:00 A |  | 0% → 100% | 1.62d → none | baseline start 2018-10-30 → 2018-10-30 11:00; baseline finish 2018-10-30 → 2018-10-30 18:00 |
| 36 | Implementar | 2018-10-30 → 2018-10-30 18:00 A | 2018-11-06 → 2018-10-30 18:00 A (-7d) | 36h → 0h | 0% → 100% | 1.62d → none | baseline start 2018-10-30 → 2018-10-30 18:00; baseline finish 2018-11-06 → 2018-11-06 12:00 |
| 37 | [V1]Documento de diseño de mecánicas de los NPCs 2/2 | 2018-10-25 → 2018-10-25 09:00 A | 2018-10-29 → 2018-10-29 17:00 A |  | 0% → 100% | 7.25d → none | constraint finish no later than 2018-11-07 → finish no later than 2018-11-07 19:00; baseline start 2018-10-25 → 2018-10-25 09:00; baseline finish 2018-10-29 → 2018-10-29 17:00 |
| 38 | **[V2]Diseño e implementación b.objetos (2/10)** | 2018-10-30 → 2018-10-30 09:00 A | 2018-10-30 → 2018-10-30 18:00 A |  | 0% → 100% | 6.12d → none | constraint finish no later than 2018-11-07 → finish no later than 2018-11-07 19:00; baseline start 2018-10-30 → 2018-10-30 09:00; baseline finish 2018-10-30 → 2018-10-30 18:00 |
| 39 | Diseño | 2018-10-30 → 2018-10-30 09:00 A | 2018-10-30 → 2018-10-30 11:00 A |  | 0% → 100% | 6.12d → none | constraint start no earlier than 2018-10-30 → start no earlier than 2018-10-30 09:00; baseline start 2018-10-30 → 2018-10-30 09:00; baseline finish 2018-10-30 → 2018-10-30 11:00 |
| 40 | Implementacion | 2018-10-30 → 2018-10-30 11:00 A | 2018-10-30 → 2018-10-30 18:00 A |  | 0% → 100% | 6.12d → none | baseline start 2018-10-30 → 2018-10-30 11:00; baseline finish 2018-10-30 → 2018-10-30 18:00 |
| 41 | **[v2]Diseño e implementacion b.componentes 1** | 2018-10-31 → 2018-10-31 09:00 A | 2018-11-01 → 2018-11-01 11:00 A |  | 0% → 100% | 4.75d → none | constraint finish no later than 2018-11-07 → finish no later than 2018-11-07 19:00; baseline start 2018-10-31 → 2018-10-31 09:00; baseline finish 2018-11-01 → 2018-11-01 11:00 |
| 42 | Investigar | 2018-10-31 → 2018-10-31 09:00 A | 2018-10-31 → 2018-10-31 16:00 A |  | 0% → 100% | 4.75d → none | constraint start no earlier than 2018-10-31 → start no earlier than 2018-10-31 09:00; baseline start 2018-10-31 → 2018-10-31 09:00; baseline finish 2018-10-31 → 2018-10-31 16:00 |
| 43 | Diseñar | 2018-10-31 → 2018-10-31 16:00 A | 2018-11-01 → 2018-11-01 11:00 A |  | 0% → 100% | 4.75d → none | baseline start 2018-10-31 → 2018-10-31 16:00; baseline finish 2018-11-01 → 2018-11-01 11:00 |
| 44 | [v2]Utilización de joints en las mecánicas jugables (1/2) | 2018-10-25 → 2018-10-25 09:00 A | 2018-10-29 → 2018-10-25 13:00 A (-4d) | 17h → 4h | 0% → 100% | 4.12d → none | was named [v2]Utilización de joints en las mecánicas jugables; constraint finish no later than 2018-11-07 → none; baseline start 2018-10-25 → 2018-10-25 09:00; baseline finish 2018-10-29 → 2018-10-29 10:00 |
| 45 | [V2]Mecánicas básicas entidades sin IA | 2018-10-29 → 2018-10-25 15:00 (-4d) | 2018-11-01 → 2018-10-25 16:00 (-7d) | 30h → 1h |  | 4.12d → 9.38d | constraint finish no later than 2018-11-07 → finish no later than 2018-11-07 19:00; baseline start 2018-10-29 → 2018-10-29 10:00; baseline finish 2018-11-01 → 2018-11-01 18:00 |
| 46 | [RV]Boceto de los personajes 2/3 | 2018-11-02 → 2018-11-02 09:00 A | 2018-11-05 → 2018-11-05 18:00 A |  | 0% → 100% | 2.12d → none | was named [RV]Boceto de los personajes 2/2; constraint start no earlier than 2018-11-02 → start no earlier than 2018-11-02 09:00; baseline start 2018-11-02 → 2018-11-02 09:00; baseline finish 2018-11-05 → 2018-11-05 18:00 |
| 48 | **[TDS]Realizar sonidos para el juego 2/7** | 2018-10-25 → 2018-10-25 09:00 A | 2018-10-25 → 2018-10-25 11:51 A |  | 0% → 100% | 9.64d → none | constraint finish no later than 2018-11-07 → finish no later than 2018-11-07 19:00; baseline start 2018-10-25 → 2018-10-25 09:00; baseline finish 2018-10-25 → 2018-10-25 11:51 |
| 49 | Síntesis | 2018-10-25 → 2018-10-25 09:00 A | 2018-10-25 → 2018-10-25 11:51 A |  | 0% → 100% | 9.64d → none | baseline start 2018-10-25 → 2018-10-25 09:00; baseline finish 2018-10-25 → 2018-10-25 11:51 |
| 50 | Grabaciones propias | 2018-10-25 → 2018-10-25 09:00 A | 2018-10-25 → 2018-10-25 11:51 A |  | 0% → 100% | 9.64d → none | baseline start 2018-10-25 → 2018-10-25 09:00; baseline finish 2018-10-25 → 2018-10-25 11:51 |
| 51 | Sonidos externos | 2018-10-25 → 2018-10-25 09:00 A | 2018-10-25 → 2018-10-25 11:51 A |  | 0% → 100% | 9.64d → none | baseline start 2018-10-25 → 2018-10-25 09:00; baseline finish 2018-10-25 → 2018-10-25 11:51 |
| 52 | Música | 2018-10-25 → 2018-10-25 09:00 A | 2018-10-25 → 2018-10-25 11:51 A |  | 0% → 100% | 9.64d → none | baseline start 2018-10-25 → 2018-10-25 09:00; baseline finish 2018-10-25 → 2018-10-25 11:51 |
| 53 | Cue Sheet | 2018-10-25 → 2018-10-25 09:00 A | 2018-10-25 → 2018-10-25 10:25 A |  | 0% → 100% | 9.82d → none | baseline start 2018-10-25 → 2018-10-25 09:00; baseline finish 2018-10-25 → 2018-10-25 10:25 |
| 54 | Hoja de metadatos | 2018-10-25 → 2018-10-25 09:00 A | 2018-10-25 → 2018-10-25 10:25 A |  | 0% → 100% | 9.82d → none | baseline start 2018-10-25 → 2018-10-25 09:00; baseline finish 2018-10-25 → 2018-10-25 10:25 |
| 55 | Integración del motor de audio en el juego con prueba de concepto | 2018-10-25 → 2018-10-25 09:00 A | 2018-10-25 → 2018-10-25 11:51 A |  | 0% → 100% | 9.64d → none | baseline start 2018-10-25 → 2018-10-25 09:00; baseline finish 2018-10-25 → 2018-10-25 11:51 |
| 56 | [PM]Registrar tiempos y % de realización de tareas en Project | 2018-11-07 → 2018-11-07 09:00 A | 2018-11-07 → 2018-11-07 09:48 A | 2h → 48min | 0% → 100% | 0.75d → none | constraint start no earlier than 2018-11-07 → start no earlier than 2018-11-07 09:00; baseline start 2018-11-07 → 2018-11-07 09:00; baseline finish 2018-11-07 → 2018-11-07 11:00 |
| 57 | [PM]Rellenar documento Gestión de riesgos | 2018-11-02 → 2018-11-02 09:00 A | 2018-11-06 → 2018-11-06 18:02 A |  | 0% → 100% | 1.12d → none | constraint start no earlier than 2018-11-02 → start no earlier than 2018-11-02 09:00; baseline start 2018-11-02 → 2018-11-02 09:00; baseline finish 2018-11-06 → 2018-11-06 18:02 |
| 58 | **Iteracion 5** | 2018-11-08 → 2018-11-08 09:00 | 2018-11-15 → 2018-11-21 19:00 (+6d) | 5.76d → 10d |  | 4.24d → 118d | constraint start no earlier than 2018-11-08 → start no earlier than 2018-11-08 09:00; baseline start 2018-11-08 → 2018-11-08 09:00; baseline finish 2018-11-15 → 2018-11-15 17:04 |
| 65 | [PM]Detallar plan iteraciones del mes de Noviembre. Creación Subtareas y precedencias en Project | 2018-11-08 → 2018-11-08 09:00 | 2018-11-12 → 2018-11-12 18:24 | 23.04h → 23.4h |  | 4.24d → 122.2d | constraint finish no later than 2018-11-21 → none; resources Jose Vicente Anton Coy [20%]; David Ramón Sevilla [15%] → Jose Vicente Anton Coy [2%]; David Ramón Sevilla [2%]; baseline start 2018-11-08 → 2018-11-08 09:00; baseline finish 2018-11-12 → 2018-11-12 18:02 |
| 66 | [PM]Detallar plan iteraciones del mes de Noviembre. Asignar recursos a las tareas en Project | 2018-11-12 → 2018-11-12 18:24 | 2018-11-15 → 2018-11-15 17:24 | 23.04h → 23h |  | 4.24d → 122.2d | constraint finish no later than 2018-11-21 → none; resources David Ramón Sevilla [20%]; Jose Vicente Anton Coy [20%] → David Ramón Sevilla [3%]; Jose Vicente Anton Coy [3%]; baseline start 2018-11-12 → 2018-11-12 18:02; baseline finish 2018-11-15 → 2018-11-15 17:04 |
| 67 | [PM]Aplicar el modelo EVA en Project | 2018-11-08 → 2018-11-16 09:00 (+8d) | 2018-11-12 → 2018-11-20 16:36 (+8d) |  |  | 7.3d → 119.3d | constraint finish no later than 2018-11-21 → start no earlier than 2018-11-16 09:00; resources David Ramón Sevilla [8%]; Débora Galdeano González [8%]; Jose Ramon Barea Cecilia [8%]; Jose Vicente Anton Coy [8%]; María Sánchez Marqués [8%]; Marines Ánton Castelló [8%] → David Ramón Sevilla [3%]; Jose Vicente Anton Coy [3%]; baseline start 2018-11-08 → 2018-11-08 09:00; baseline finish 2018-11-12 → 2018-11-12 16:36 |
| 68 | [RV]Bocetos de los elementos | 2018-11-08 → 2018-11-16 09:00 (+8d) | 2018-11-12 → 2018-11-20 11:00 (+8d) |  |  | 7.75d → 119.75d | constraint finish no later than 2018-11-21 → start no earlier than 2018-11-16 09:00; resources Débora Galdeano González [8%]; Marines Ánton Castelló [8%]; María Sánchez Marqués [8%] → Débora Galdeano González [50%]; Marines Ánton Castelló [50%]; baseline start 2018-11-08 → 2018-11-08 09:00; baseline finish 2018-11-12 → 2018-11-12 11:00 |
| 69 | **[V2]Diseño e implementación b.objetos (3/10)** | 2018-11-08 → 2018-11-15 09:00 (+7d) | 2018-11-08 → 2018-11-15 18:00 (+7d) | 7h → 0.88d |  | 9.12d → 122.12d | constraint finish no later than 2018-11-21 → none; resources none → Jose Vicente Anton Coy [10%]; David Ramón Sevilla [10%]; baseline start 2018-11-08 → 2018-11-08 09:00; baseline finish 2018-11-08 → 2018-11-08 18:00 |
| 71 | [v2]Diseño e implementacion b.componentes 2 | 2018-11-08 → 2018-11-15 09:00 (+7d) | 2018-11-09 → 2018-11-16 11:00 (+7d) |  |  | 8.75d → 121.75d | constraint finish no later than 2018-11-21 → start no earlier than 2018-11-15 09:00; resources none → Jose Ramon Barea Cecilia [50%]; María Sánchez Marqués [50%]; baseline start 2018-11-08 → 2018-11-08 09:00; baseline finish 2018-11-09 → 2018-11-09 11:00 |
| 72 | [v2]Formato propio para la definicion de los niveles(documentos con la especifiacion del formato) | 2018-11-08 → 2018-11-13 09:00 (+5d) | 2018-11-09 → 2018-11-14 12:00 (+5d) |  |  | 5.12d → 120.12d | constraint finish no later than 2018-11-21 → start no earlier than 2018-11-13 09:00; resources none → Jose Vicente Anton Coy [50%]; Jose Ramon Barea Cecilia [80%]; baseline start 2018-11-08 → 2018-11-08 09:00; baseline finish 2018-11-09 → 2018-11-09 12:00 |
| 73 | [V2]Creación de un cargador de niveles | 2018-11-09 → 2018-11-14 12:00 (+5d) | 2018-11-14 → 2018-11-19 18:00 (+5d) |  |  | 5.12d → 120.12d | constraint finish no later than 2018-11-21 → none; resources none → Jose Ramon Barea Cecilia [50%]; Jose Vicente Anton Coy [50%]; baseline start 2018-11-09 → 2018-11-09 12:00; baseline finish 2018-11-14 → 2018-11-14 18:00 |
| 74 | [v2]Implementacion de camara de seguimiento | 2018-11-08 → 2018-11-16 09:00 (+8d) | 2018-11-12 → 2018-11-20 10:00 (+8d) |  |  | 7.88d → 119.88d | constraint finish no later than 2018-11-21 → start no earlier than 2018-11-16 09:00; resources none → Marines Ánton Castelló [50%]; baseline start 2018-11-08 → 2018-11-08 09:00; baseline finish 2018-11-12 → 2018-11-12 10:00 |
| 75 | **[TDS]Realizar sonidos para el juego 3/7** | 2018-11-08 → 2018-11-08 09:00 | 2018-11-08 → 2018-11-08 11:51 |  |  | 9.64d → 127.64d | constraint finish no later than 2018-11-21 → none; baseline start 2018-11-08 → 2018-11-08 09:00; baseline finish 2018-11-08 → 2018-11-08 11:51 |
| 76 | Síntesis | 2018-11-08 → 2018-11-08 09:00 | 2018-11-08 → 2018-11-08 11:51 |  |  | 9.64d → 127.64d | baseline start 2018-11-08 → 2018-11-08 09:00; baseline finish 2018-11-08 → 2018-11-08 11:51 |
| 77 | Grabaciones propias | 2018-11-08 → 2018-11-08 09:00 | 2018-11-08 → 2018-11-08 11:51 |  |  | 9.64d → 127.64d | baseline start 2018-11-08 → 2018-11-08 09:00; baseline finish 2018-11-08 → 2018-11-08 11:51 |
| 78 | Sonidos externos | 2018-11-08 → 2018-11-08 09:00 | 2018-11-08 → 2018-11-08 11:51 |  |  | 9.64d → 127.64d | baseline start 2018-11-08 → 2018-11-08 09:00; baseline finish 2018-11-08 → 2018-11-08 11:51 |

| ID | Task | Start | Finish | Duration | Total float | Other |
| --- | --- | --- | --- | --- | --- | --- |
| 79 | Música | 2018-11-08 → 2018-11-08 09:00 | 2018-11-08 → 2018-11-08 11:51 |  | 9.64d → 127.64d | baseline start 2018-11-08 → 2018-11-08 09:00; baseline finish 2018-11-08 → 2018-11-08 11:51 |
| 80 | Cue Sheet | 2018-11-08 → 2018-11-08 09:00 | 2018-11-08 → 2018-11-08 10:25 |  | 9.82d → 127.82d | baseline start 2018-11-08 → 2018-11-08 09:00; baseline finish 2018-11-08 → 2018-11-08 10:25 |
| 81 | Hoja de metadatos | 2018-11-08 → 2018-11-08 09:00 | 2018-11-08 → 2018-11-08 10:25 |  | 9.82d → 127.82d | baseline start 2018-11-08 → 2018-11-08 09:00; baseline finish 2018-11-08 → 2018-11-08 10:25 |
| 82 | Integración del motor de audio en el juego con prueba de concepto | 2018-11-08 → 2018-11-08 09:00 | 2018-11-08 → 2018-11-08 11:51 |  | 9.64d → 127.64d | baseline start 2018-11-08 → 2018-11-08 09:00; baseline finish 2018-11-08 → 2018-11-08 11:51 |
| 83 | [PM]Registrar tiempos y % de realización de tareas en Project | 2018-11-08 → 2018-11-21 18:12 (+13d) | 2018-11-08 → 2018-11-21 19:00 (+13d) | 1h → 48min | 9.88d → 118d | constraint finish no later than 2018-11-21 → finish no earlier than 2018-11-21 19:00; baseline start 2018-11-08 → 2018-11-08 09:00; baseline finish 2018-11-08 → 2018-11-08 10:00 |
| 84 | **Iteracion 6** | 2018-11-22 → 2018-11-22 09:00 | 2018-12-06 → 2018-12-06 10:00 |  |  | constraint start no earlier than 2018-11-22 → start no earlier than 2018-11-22 09:00; baseline start 2018-11-22 → 2018-11-22 09:00; baseline finish 2018-12-06 → 2018-12-06 10:00 |
| 85 | [v2]Control del player: movimiento y colisiones sin motor de físicas | 2018-11-08 → 2018-11-22 09:00 (+14d) | 2018-11-14 → 2018-11-28 19:00 (+14d) |  | 5d → 113d | constraint finish no later than 2018-11-21 → none; baseline start 2018-11-08 → 2018-11-08 09:00; baseline finish 2018-11-14 → 2018-11-14 19:00 |
| 86 | [V2]Utilización de propiedades físicas en las mecánicas jugables | 2018-11-08 → 2018-11-22 09:00 (+14d) | 2018-11-12 → 2018-11-26 10:00 (+14d) |  | 7.88d → 115.88d | constraint finish no later than 2018-11-21 → none; baseline start 2018-11-08 → 2018-11-08 09:00; baseline finish 2018-11-12 → 2018-11-12 10:00 |
| 87 | [RV]Bocetos del entorno | 2018-11-22 → 2018-11-22 09:00 | 2018-11-26 → 2018-11-26 11:00 |  |  | baseline start 2018-11-22 → 2018-11-22 09:00; baseline finish 2018-11-26 → 2018-11-26 11:00 |
| 88 | **[TDS]Realizar sonidos para el juego 4/7** | 2018-11-22 → 2018-11-22 09:00 | 2018-11-22 → 2018-11-22 11:51 |  |  | baseline start 2018-11-22 → 2018-11-22 09:00; baseline finish 2018-11-22 → 2018-11-22 11:51 |
| 89 | Síntesis | 2018-11-22 → 2018-11-22 09:00 | 2018-11-22 → 2018-11-22 11:51 |  |  | baseline start 2018-11-22 → 2018-11-22 09:00; baseline finish 2018-11-22 → 2018-11-22 11:51 |
| 90 | Grabaciones propias | 2018-11-22 → 2018-11-22 09:00 | 2018-11-22 → 2018-11-22 11:51 |  |  | baseline start 2018-11-22 → 2018-11-22 09:00; baseline finish 2018-11-22 → 2018-11-22 11:51 |
| 91 | Sonidos externos | 2018-11-22 → 2018-11-22 09:00 | 2018-11-22 → 2018-11-22 11:51 |  |  | baseline start 2018-11-22 → 2018-11-22 09:00; baseline finish 2018-11-22 → 2018-11-22 11:51 |
| 92 | Música | 2018-11-22 → 2018-11-22 09:00 | 2018-11-22 → 2018-11-22 11:51 |  |  | baseline start 2018-11-22 → 2018-11-22 09:00; baseline finish 2018-11-22 → 2018-11-22 11:51 |
| 93 | Cue Sheet | 2018-11-22 → 2018-11-22 09:00 | 2018-11-22 → 2018-11-22 10:25 |  |  | baseline start 2018-11-22 → 2018-11-22 09:00; baseline finish 2018-11-22 → 2018-11-22 10:25 |
| 94 | Hoja de metadatos | 2018-11-22 → 2018-11-22 09:00 | 2018-11-22 → 2018-11-22 10:25 |  |  | baseline start 2018-11-22 → 2018-11-22 09:00; baseline finish 2018-11-22 → 2018-11-22 10:25 |
| 95 | Integración del motor de audio en el juego con prueba de concepto | 2018-11-22 → 2018-11-22 09:00 | 2018-11-22 → 2018-11-22 11:51 |  |  | baseline start 2018-11-22 → 2018-11-22 09:00; baseline finish 2018-11-22 → 2018-11-22 11:51 |
| 96 | [V1]Sistema de distribución central de tiempo de proceso (Scheduling) | 2018-11-22 → 2018-11-22 09:00 | 2018-11-29 → 2018-11-29 10:00 |  |  | baseline start 2018-11-22 → 2018-11-22 09:00; baseline finish 2018-11-29 → 2018-11-29 10:00 |
| 97 | [v1]Gestión de recursos de IA con Level-of-Detail (LoD) | 2018-11-29 → 2018-11-29 10:00 | 2018-12-06 → 2018-12-06 10:00 |  |  | baseline start 2018-11-29 → 2018-11-29 10:00; baseline finish 2018-12-06 → 2018-12-06 10:00 |
| 98 | [V2]Diseño e implementación b.objetos (4/10) | 2018-11-22 → 2018-11-22 09:00 | 2018-11-22 → 2018-11-22 18:00 |  |  | baseline start 2018-11-22 → 2018-11-22 09:00; baseline finish 2018-11-22 → 2018-11-22 18:00 |
| 99 | [v2]Diseño e implementacion b.componentes 3 | 2018-11-22 → 2018-11-22 09:00 | 2018-11-23 → 2018-11-23 11:00 |  |  | constraint start no earlier than 2018-10-29 → none; baseline start 2018-11-22 → 2018-11-22 09:00; baseline finish 2018-11-23 → 2018-11-23 11:00 |
| 100 | [V2]Uso de trazado de rayos y otros tests de las físicas | 2018-11-22 → 2018-11-22 09:00 | 2018-11-26 → 2018-11-26 10:00 |  |  | baseline start 2018-11-22 → 2018-11-22 09:00; baseline finish 2018-11-26 → 2018-11-26 10:00 |
| 101 | [V2]Mecánicas de acción | 2018-11-22 → 2018-11-22 09:00 | 2018-11-27 → 2018-11-27 17:00 |  |  | baseline start 2018-11-22 → 2018-11-22 09:00; baseline finish 2018-11-27 → 2018-11-27 17:00 |
| 103 | **Iteracion 7** | 2018-12-06 → 2018-12-06 09:00 | 2018-12-17 → 2018-12-17 13:00 |  |  | constraint start no earlier than 2018-12-06 → start no earlier than 2018-12-06 09:00; baseline start 2018-12-06 → 2018-12-06 09:00; baseline finish 2018-12-17 → 2018-12-17 13:00 |
| 104 | [PM]Detallar plan iteraciones del mes de Diciembre. Creación Subtareas y precedencias en Project | 2018-12-06 → 2018-12-06 09:00 | 2018-12-10 → 2018-12-10 18:02 |  |  | baseline start 2018-12-06 → 2018-12-06 09:00; baseline finish 2018-12-10 → 2018-12-10 18:02 |
| 105 | [PM]Detallar plan iteraciones del mes de Diciembre. Asignar recursos a las tareas en Project | 2018-12-10 → 2018-12-10 18:02 | 2018-12-13 → 2018-12-13 17:04 |  |  | baseline start 2018-12-10 → 2018-12-10 18:02; baseline finish 2018-12-13 → 2018-12-13 17:04 |
| 106 | [PD]Cartel juego/proyecto | 2018-12-06 → 2018-12-06 09:00 | 2018-12-17 → 2018-12-17 13:00 |  |  | baseline start 2018-12-06 → 2018-12-06 09:00; baseline finish 2018-12-17 → 2018-12-17 13:00 |
| 107 | **[TDS]Realizar sonidos para el juego 5/7** | 2018-12-06 → 2018-12-06 09:00 | 2018-12-06 → 2018-12-06 11:51 |  |  | baseline start 2018-12-06 → 2018-12-06 09:00; baseline finish 2018-12-06 → 2018-12-06 11:51 |
| 108 | Síntesis | 2018-12-06 → 2018-12-06 09:00 | 2018-12-06 → 2018-12-06 11:51 |  |  | baseline start 2018-12-06 → 2018-12-06 09:00; baseline finish 2018-12-06 → 2018-12-06 11:51 |
| 109 | Grabaciones propias | 2018-12-06 → 2018-12-06 09:00 | 2018-12-06 → 2018-12-06 11:51 |  |  | baseline start 2018-12-06 → 2018-12-06 09:00; baseline finish 2018-12-06 → 2018-12-06 11:51 |
| 110 | Sonidos externos | 2018-12-06 → 2018-12-06 09:00 | 2018-12-06 → 2018-12-06 11:51 |  |  | baseline start 2018-12-06 → 2018-12-06 09:00; baseline finish 2018-12-06 → 2018-12-06 11:51 |
| 111 | Música | 2018-12-06 → 2018-12-06 09:00 | 2018-12-06 → 2018-12-06 11:51 |  |  | baseline start 2018-12-06 → 2018-12-06 09:00; baseline finish 2018-12-06 → 2018-12-06 11:51 |
| 112 | Cue Sheet | 2018-12-06 → 2018-12-06 09:00 | 2018-12-06 → 2018-12-06 10:25 |  |  | baseline start 2018-12-06 → 2018-12-06 09:00; baseline finish 2018-12-06 → 2018-12-06 10:25 |
| 113 | Hoja de metadatos | 2018-12-06 → 2018-12-06 09:00 | 2018-12-06 → 2018-12-06 10:25 |  |  | baseline start 2018-12-06 → 2018-12-06 09:00; baseline finish 2018-12-06 → 2018-12-06 10:25 |
| 114 | Integración del motor de audio en el juego con prueba de concepto | 2018-12-06 → 2018-12-06 09:00 | 2018-12-06 → 2018-12-06 11:51 |  |  | baseline start 2018-12-06 → 2018-12-06 09:00; baseline finish 2018-12-06 → 2018-12-06 11:51 |
| 115 | [V2]Diseño e implementación b.objetos (5/10) | 2018-12-06 → 2018-12-06 09:00 | 2018-12-06 → 2018-12-06 18:00 |  |  | baseline start 2018-12-06 → 2018-12-06 09:00; baseline finish 2018-12-06 → 2018-12-06 18:00 |
| 116 | [v2]Diseño e implementacion b.componentes 5 | 2018-12-06 → 2018-12-06 09:00 | 2018-12-07 → 2018-12-07 11:00 |  |  | constraint start no earlier than 2018-11-26 → start no earlier than 2018-11-26 09:00; baseline start 2018-12-06 → 2018-12-06 09:00; baseline finish 2018-12-07 → 2018-12-07 11:00 |
| 117 | [v2]Mecanicas de puzzle | 2018-12-06 → 2018-12-06 09:00 | 2018-12-11 → 2018-12-11 19:00 |  |  | baseline start 2018-12-06 → 2018-12-06 09:00; baseline finish 2018-12-11 → 2018-12-11 19:00 |
| 118 | [V2]Mecánicas de rol | 2018-12-06 → 2018-12-06 09:00 | 2018-12-11 → 2018-12-11 17:00 |  |  | baseline start 2018-12-06 → 2018-12-06 09:00; baseline finish 2018-12-11 → 2018-12-11 17:00 |
| 119 | [v2]Uso de sistema de depuración visual de las físicas | 2018-12-06 → 2018-12-06 09:00 | 2018-12-07 → 2018-12-07 11:00 |  |  | baseline start 2018-12-06 → 2018-12-06 09:00; baseline finish 2018-12-07 → 2018-12-07 11:00 |
| 120 | [v2]Power-ups y elementos adicionales | 2018-12-06 → 2018-12-06 09:00 | 2018-12-11 → 2018-12-11 13:00 |  |  | baseline start 2018-12-06 → 2018-12-06 09:00; baseline finish 2018-12-11 → 2018-12-11 13:00 |
| 121 | [PM]Comparar la planificación prevista y real en Project hito 1 | 2018-10-01 → 2018-10-01 09:00 | 2018-10-03 → 2018-10-03 16:36 |  |  | baseline start 2018-10-01 → 2018-10-01 09:00; baseline finish 2018-10-03 → 2018-10-03 16:36 |
| 122 | [PM]Confeccionar Informes de iteración e informe resumen de Hito 1 | 2018-10-03 → 2018-10-03 16:36 | 2018-10-08 → 2018-10-08 12:12 |  |  | baseline start 2018-10-03 → 2018-10-03 16:36; baseline finish 2018-10-08 → 2018-10-08 12:12 |
| 123 | [PM]Elaborar la presentación del Hito 1 | 2018-10-08 → 2018-10-08 12:12 | 2018-10-10 → 2018-10-10 10:36 |  |  | baseline start 2018-10-08 → 2018-10-08 12:12; baseline finish 2018-10-10 → 2018-10-10 10:36 |
| 124 | [PM]Exponer la presentación del Hito 1 | 2018-10-10 → 2018-10-10 10:36 | 2018-10-11 → 2018-10-11 19:00 |  |  | baseline start 2018-10-10 → 2018-10-10 10:36; baseline finish 2018-10-11 → 2018-10-11 19:00 |
| 125 | **[V1]Sistema de percepción sensorial (vista, oído, olfato, canales…)** | 2018-11-08 → 2018-11-08 09:00 | 2018-11-15 → 2018-11-15 17:00 |  |  | constraint start no earlier than 2018-11-08 → start no earlier than 2018-11-08 09:00; baseline start 2018-11-08 → 2018-11-08 09:00; baseline finish 2018-11-15 → 2018-11-15 17:00 |
| 126 | Investigacion | 2018-11-08 → 2018-11-08 09:00 | 2018-11-09 → 2018-11-09 19:00 |  |  | baseline start 2018-11-08 → 2018-11-08 09:00; baseline finish 2018-11-09 → 2018-11-09 19:00 |
| 127 | Diseño | 2018-11-12 → 2018-11-12 09:00 | 2018-11-12 → 2018-11-12 17:00 |  |  | baseline start 2018-11-12 → 2018-11-12 09:00; baseline finish 2018-11-12 → 2018-11-12 17:00 |
| 128 | Implementar | 2018-11-12 → 2018-11-12 17:00 | 2018-11-15 → 2018-11-15 17:00 |  |  | baseline start 2018-11-12 → 2018-11-12 17:00; baseline finish 2018-11-15 → 2018-11-15 17:00 |
| 129 | Versión Alpha de mecánicas | 2018-12-22 → 2018-12-22 09:00 | 2018-12-22 → 2018-12-22 09:00 |  |  | constraint start no earlier than 2018-12-22 → start no earlier than 2018-12-22 09:00; baseline start 2018-12-22 → 2018-12-22 09:00; baseline finish 2018-12-22 → 2018-12-22 09:00 |
| 130 | **Hito 2** | 2018-12-24 → 2018-12-24 09:00 | 2019-01-14 → 2019-01-14 11:00 |  |  | baseline start 2018-12-24 → 2018-12-24 09:00; baseline finish 2019-01-14 → 2019-01-14 11:00 |
| 131 | **Navidad** | 2018-12-24 → 2018-12-24 09:00 | 2018-12-25 → 2018-12-25 11:00 |  |  | constraint start no earlier than 2018-12-22 → start no earlier than 2018-12-22 09:00; baseline start 2018-12-24 → 2018-12-24 09:00; baseline finish 2018-12-25 → 2018-12-25 11:00 |
| 132 | [V2]Diseño e implementación b.objetos (6/10) | 2018-12-24 → 2018-12-24 09:00 | 2018-12-24 → 2018-12-24 18:00 |  |  | baseline start 2018-12-24 → 2018-12-24 09:00; baseline finish 2018-12-24 → 2018-12-24 18:00 |
| 133 | [v2]Diseño e implementacion b.componentes 6 | 2018-12-24 → 2018-12-24 09:00 | 2018-12-25 → 2018-12-25 11:00 |  |  | constraint start no earlier than 2018-12-10 → start no earlier than 2018-12-10 09:00; baseline start 2018-12-24 → 2018-12-24 09:00; baseline finish 2018-12-25 → 2018-12-25 11:00 |
| 134 | **[TDS]Realizar sonidos para el juego 6/7** | 2018-12-24 → 2018-12-24 09:00 | 2018-12-24 → 2018-12-24 11:51 |  |  | baseline start 2018-12-24 → 2018-12-24 09:00; baseline finish 2018-12-24 → 2018-12-24 11:51 |
| 135 | Síntesis | 2018-12-24 → 2018-12-24 09:00 | 2018-12-24 → 2018-12-24 11:51 |  |  | baseline start 2018-12-24 → 2018-12-24 09:00; baseline finish 2018-12-24 → 2018-12-24 11:51 |
| 136 | Grabaciones propias | 2018-12-24 → 2018-12-24 09:00 | 2018-12-24 → 2018-12-24 11:51 |  |  | baseline start 2018-12-24 → 2018-12-24 09:00; baseline finish 2018-12-24 → 2018-12-24 11:51 |
| 137 | Sonidos externos | 2018-12-24 → 2018-12-24 09:00 | 2018-12-24 → 2018-12-24 11:51 |  |  | baseline start 2018-12-24 → 2018-12-24 09:00; baseline finish 2018-12-24 → 2018-12-24 11:51 |
| 138 | Música | 2018-12-24 → 2018-12-24 09:00 | 2018-12-24 → 2018-12-24 11:51 |  |  | baseline start 2018-12-24 → 2018-12-24 09:00; baseline finish 2018-12-24 → 2018-12-24 11:51 |
| 139 | Cue Sheet | 2018-12-24 → 2018-12-24 09:00 | 2018-12-24 → 2018-12-24 10:25 |  |  | baseline start 2018-12-24 → 2018-12-24 09:00; baseline finish 2018-12-24 → 2018-12-24 10:25 |
| 140 | Hoja de metadatos | 2018-12-24 → 2018-12-24 09:00 | 2018-12-24 → 2018-12-24 10:25 |  |  | baseline start 2018-12-24 → 2018-12-24 09:00; baseline finish 2018-12-24 → 2018-12-24 10:25 |
| 141 | Integración del motor de audio en el juego con prueba de concepto | 2018-12-24 → 2018-12-24 09:00 | 2018-12-24 → 2018-12-24 11:51 |  |  | baseline start 2018-12-24 → 2018-12-24 09:00; baseline finish 2018-12-24 → 2018-12-24 11:51 |
| 142 | <Tarea nueva> | 2018-12-24 → 2018-12-24 09:00 | 2018-12-24 → 2018-12-24 19:00 |  |  | baseline start 2018-12-24 → 2018-12-24 09:00; baseline finish 2018-12-24 → 2018-12-24 19:00 |
| 143 | **Iteracion 8** | 2019-01-11 → 2019-01-11 09:00 | 2019-01-14 → 2019-01-14 11:00 |  |  | constraint start no earlier than 2019-01-11 → start no earlier than 2019-01-11 09:00; baseline start 2019-01-11 → 2019-01-11 09:00; baseline finish 2019-01-14 → 2019-01-14 11:00 |
| 144 | [V2]Diseño e implementación b.objetos (7/10) | 2019-01-11 → 2019-01-11 09:00 | 2019-01-11 → 2019-01-11 18:00 |  |  | baseline start 2019-01-11 → 2019-01-11 09:00; baseline finish 2019-01-11 → 2019-01-11 18:00 |
| 145 | [v2]Diseño e implementacion b.componentes 7 | 2019-01-11 → 2019-01-11 09:00 | 2019-01-14 → 2019-01-14 11:00 |  |  | constraint start no earlier than 2018-12-24 → start no earlier than 2018-12-24 09:00; baseline start 2019-01-11 → 2019-01-11 09:00; baseline finish 2019-01-14 → 2019-01-14 11:00 |
| 146 | **[TDS]Realizar sonidos para el juego 7/7** | 2019-01-11 → 2019-01-11 09:00 | 2019-01-11 → 2019-01-11 11:51 |  |  | baseline start 2019-01-11 → 2019-01-11 09:00; baseline finish 2019-01-11 → 2019-01-11 11:51 |
| 147 | Síntesis | 2019-01-11 → 2019-01-11 09:00 | 2019-01-11 → 2019-01-11 11:51 |  |  | baseline start 2019-01-11 → 2019-01-11 09:00; baseline finish 2019-01-11 → 2019-01-11 11:51 |
| 148 | Grabaciones propias | 2019-01-11 → 2019-01-11 09:00 | 2019-01-11 → 2019-01-11 11:51 |  |  | baseline start 2019-01-11 → 2019-01-11 09:00; baseline finish 2019-01-11 → 2019-01-11 11:51 |
| 149 | Sonidos externos | 2019-01-11 → 2019-01-11 09:00 | 2019-01-11 → 2019-01-11 11:51 |  |  | baseline start 2019-01-11 → 2019-01-11 09:00; baseline finish 2019-01-11 → 2019-01-11 11:51 |

| ID | Task | Start | Finish | Other |
| --- | --- | --- | --- | --- |
| 150 | Música | 2019-01-11 → 2019-01-11 09:00 | 2019-01-11 → 2019-01-11 11:51 | baseline start 2019-01-11 → 2019-01-11 09:00; baseline finish 2019-01-11 → 2019-01-11 11:51 |
| 151 | Cue Sheet | 2019-01-11 → 2019-01-11 09:00 | 2019-01-11 → 2019-01-11 10:25 | baseline start 2019-01-11 → 2019-01-11 09:00; baseline finish 2019-01-11 → 2019-01-11 10:25 |
| 152 | Hoja de metadatos | 2019-01-11 → 2019-01-11 09:00 | 2019-01-11 → 2019-01-11 10:25 | baseline start 2019-01-11 → 2019-01-11 09:00; baseline finish 2019-01-11 → 2019-01-11 10:25 |
| 153 | Integración del motor de audio en el juego con prueba de concepto | 2019-01-11 → 2019-01-11 09:00 | 2019-01-11 → 2019-01-11 11:51 | baseline start 2019-01-11 → 2019-01-11 09:00; baseline finish 2019-01-11 → 2019-01-11 11:51 |
| 154 | <Tarea nueva> | 2019-01-11 → 2019-01-11 09:00 | 2019-01-11 → 2019-01-11 19:00 | baseline start 2019-01-11 → 2019-01-11 09:00; baseline finish 2019-01-11 → 2019-01-11 19:00 |
| 155 | [PM]Revisar especificación proyecto | 2018-12-24 → 2018-12-24 09:00 | 2018-12-24 → 2018-12-24 19:00 | constraint start no earlier than 2018-12-22 → start no earlier than 2018-12-22 09:00; baseline start 2018-12-24 → 2018-12-24 09:00; baseline finish 2018-12-24 → 2018-12-24 19:00 |
| 156 | [PM]Reestimar proyecto | 2018-12-24 → 2018-12-24 09:00 | 2018-12-24 → 2018-12-24 19:00 | constraint start no earlier than 2018-12-22 → start no earlier than 2018-12-22 09:00; baseline start 2018-12-24 → 2018-12-24 09:00; baseline finish 2018-12-24 → 2018-12-24 19:00 |
| 157 | [PM]Detallar plan iteraciones del mes de Enero. Creación Subtareas y precedencias en Project | 2018-12-24 → 2018-12-24 09:00 | 2018-12-24 → 2018-12-24 19:00 | constraint start no earlier than 2018-12-22 → start no earlier than 2018-12-22 09:00; baseline start 2018-12-24 → 2018-12-24 09:00; baseline finish 2018-12-24 → 2018-12-24 19:00 |
| 158 | [PM]Detallar plan iteraciones del mes de Enero. Asignar recursos a las tareas en Project | 2018-12-24 → 2018-12-24 09:00 | 2018-12-24 → 2018-12-24 19:00 | constraint start no earlier than 2018-12-22 → start no earlier than 2018-12-22 09:00; baseline start 2018-12-24 → 2018-12-24 09:00; baseline finish 2018-12-24 → 2018-12-24 19:00 |
| 159 | [PM]Registrar tiempos y % de realización de tareas en Project | 2018-12-24 → 2018-12-24 09:00 | 2018-12-24 → 2018-12-24 19:00 | constraint start no earlier than 2018-12-22 → start no earlier than 2018-12-22 09:00; baseline start 2018-12-24 → 2018-12-24 09:00; baseline finish 2018-12-24 → 2018-12-24 19:00 |
| 160 | [PM]Comparar la planificación prevista y real en Project hito 2 | 2018-12-24 → 2018-12-24 09:00 | 2018-12-24 → 2018-12-24 19:00 | constraint start no earlier than 2018-12-22 → start no earlier than 2018-12-22 09:00; baseline start 2018-12-24 → 2018-12-24 09:00; baseline finish 2018-12-24 → 2018-12-24 19:00 |
| 161 | [PM]Confeccionar Informes de iteración e informe resumen de Hito 2 | 2018-12-24 → 2018-12-24 09:00 | 2018-12-24 → 2018-12-24 19:00 | constraint start no earlier than 2018-12-22 → start no earlier than 2018-12-22 09:00; baseline start 2018-12-24 → 2018-12-24 09:00; baseline finish 2018-12-24 → 2018-12-24 19:00 |
| 162 | [V1]Sistema de depuración visual in-game de la IA | 2018-12-24 → 2018-12-24 09:00 | 2018-12-24 → 2018-12-24 19:00 | constraint start no earlier than 2018-12-22 → start no earlier than 2018-12-22 09:00; baseline start 2018-12-24 → 2018-12-24 09:00; baseline finish 2018-12-24 → 2018-12-24 19:00 |
| 163 | [V1]Sistema de distribución central de tiempo de proceso (Scheduling) | 2018-12-24 → 2018-12-24 09:00 | 2018-12-24 → 2018-12-24 19:00 | constraint start no earlier than 2018-12-22 → start no earlier than 2018-12-22 09:00; baseline start 2018-12-24 → 2018-12-24 09:00; baseline finish 2018-12-24 → 2018-12-24 19:00 |
| 164 | [V2]Power-ups y elementos adicionales | 2018-12-24 → 2018-12-24 09:00 | 2018-12-24 → 2018-12-24 19:00 | constraint start no earlier than 2018-12-22 → start no earlier than 2018-12-22 09:00; baseline start 2018-12-24 → 2018-12-24 09:00; baseline finish 2018-12-24 → 2018-12-24 19:00 |
| 165 | [V2]Integración de librería para GUI | 2018-12-24 → 2018-12-24 09:00 | 2018-12-24 → 2018-12-24 19:00 | constraint start no earlier than 2018-12-22 → start no earlier than 2018-12-22 09:00; baseline start 2018-12-24 → 2018-12-24 09:00; baseline finish 2018-12-24 → 2018-12-24 19:00 |
| 166 | [V2]Implementación de menús | 2018-12-24 → 2018-12-24 09:00 | 2018-12-24 → 2018-12-24 19:00 | constraint start no earlier than 2018-12-22 → start no earlier than 2018-12-22 09:00; baseline start 2018-12-24 → 2018-12-24 09:00; baseline finish 2018-12-24 → 2018-12-24 19:00 |
| 167 | [V2]Implementación del HUD | 2018-12-24 → 2018-12-24 09:00 | 2018-12-24 → 2018-12-24 19:00 | constraint start no earlier than 2018-12-22 → start no earlier than 2018-12-22 09:00; baseline start 2018-12-24 → 2018-12-24 09:00; baseline finish 2018-12-24 → 2018-12-24 19:00 |
| 168 | [PD]Trailer juego/proyecto | 2018-12-24 → 2018-12-24 09:00 | 2018-12-24 → 2018-12-24 19:00 | constraint start no earlier than 2018-12-22 → start no earlier than 2018-12-22 09:00; baseline start 2018-12-24 → 2018-12-24 09:00; baseline finish 2018-12-24 → 2018-12-24 19:00 |
| 169 | [PD]Making of juego/proyecto | 2018-12-24 → 2018-12-24 09:00 | 2018-12-24 → 2018-12-24 19:00 | constraint start no earlier than 2018-12-22 → start no earlier than 2018-12-22 09:00; baseline start 2018-12-24 → 2018-12-24 09:00; baseline finish 2018-12-24 → 2018-12-24 19:00 |
| 170 | [RV]Modelado de los personajes | 2018-12-24 → 2018-12-24 09:00 | 2018-12-24 → 2018-12-24 19:00 | constraint start no earlier than 2018-12-22 → start no earlier than 2018-12-22 09:00; baseline start 2018-12-24 → 2018-12-24 09:00; baseline finish 2018-12-24 → 2018-12-24 19:00 |
| 171 | [RV]Texturizado de los personajes | 2018-12-24 → 2018-12-24 09:00 | 2018-12-24 → 2018-12-24 19:00 | constraint start no earlier than 2018-12-22 → start no earlier than 2018-12-22 09:00; baseline start 2018-12-24 → 2018-12-24 09:00; baseline finish 2018-12-24 → 2018-12-24 19:00 |
| 172 | [RV]Modelado del entorno y elementos | 2018-12-24 → 2018-12-24 09:00 | 2018-12-24 → 2018-12-24 19:00 | constraint start no earlier than 2018-12-22 → start no earlier than 2018-12-22 09:00; baseline start 2018-12-24 → 2018-12-24 09:00; baseline finish 2018-12-24 → 2018-12-24 19:00 |
| 173 | Version Beta del juego, que se pueda jugar | 2019-01-14 → 2019-01-14 11:00 | 2019-01-14 → 2019-01-14 11:00 | constraint start no earlier than 2018-12-22 → start no earlier than 2018-12-22 09:00; baseline start 2019-01-14 → 2019-01-14 11:00; baseline finish 2019-01-14 → 2019-01-14 11:00 |
| 174 | **Hito 3** | 2019-01-24 → 2019-01-24 09:00 | 2019-03-06 → 2019-03-06 19:00 | constraint finish no later than 2019-03-26 → finish no later than 2019-03-26 19:00; baseline start 2019-01-24 → 2019-01-24 09:00; baseline finish 2019-03-06 → 2019-03-06 19:00 |
| 175 | **Iteracion 9** | 2019-01-25 → 2019-01-25 09:00 | 2019-01-28 → 2019-01-28 11:00 | constraint start no earlier than 2019-01-25 → start no earlier than 2019-01-25 09:00; baseline start 2019-01-25 → 2019-01-25 09:00; baseline finish 2019-01-28 → 2019-01-28 11:00 |
| 176 | [V2]Diseño e implementación b.objetos (8/10) | 2019-01-25 → 2019-01-25 09:00 | 2019-01-25 → 2019-01-25 18:00 | baseline start 2019-01-25 → 2019-01-25 09:00; baseline finish 2019-01-25 → 2019-01-25 18:00 |
| 177 | [v2]Diseño e implementacion b.componentes 8 | 2019-01-25 → 2019-01-25 09:00 | 2019-01-28 → 2019-01-28 11:00 | constraint start no earlier than 2019-01-07 → start no earlier than 2019-01-07 09:00; baseline start 2019-01-25 → 2019-01-25 09:00; baseline finish 2019-01-28 → 2019-01-28 11:00 |
| 178 | <Tarea nueva> | 2019-01-25 → 2019-01-25 09:00 | 2019-01-25 → 2019-01-25 19:00 | baseline start 2019-01-25 → 2019-01-25 09:00; baseline finish 2019-01-25 → 2019-01-25 19:00 |
| 179 | **Iteracion 10** | 2019-02-06 → 2019-02-06 09:00 | 2019-02-07 → 2019-02-07 11:00 | constraint start no earlier than 2019-02-06 → start no earlier than 2019-02-06 09:00; baseline start 2019-02-06 → 2019-02-06 09:00; baseline finish 2019-02-07 → 2019-02-07 11:00 |
| 180 | [V2]Diseño e implementación b.objetos (9/10) | 2019-02-06 → 2019-02-06 09:00 | 2019-02-06 → 2019-02-06 18:00 | baseline start 2019-02-06 → 2019-02-06 09:00; baseline finish 2019-02-06 → 2019-02-06 18:00 |
| 181 | [v2]Diseño e implementacion b.componentes 9 | 2019-02-06 → 2019-02-06 09:00 | 2019-02-07 → 2019-02-07 11:00 | constraint start no earlier than 2019-01-21 → start no earlier than 2019-01-21 09:00; baseline start 2019-02-06 → 2019-02-06 09:00; baseline finish 2019-02-07 → 2019-02-07 11:00 |
| 182 | <Tarea nueva> | 2019-02-06 → 2019-02-06 09:00 | 2019-02-06 → 2019-02-06 19:00 | baseline start 2019-02-06 → 2019-02-06 09:00; baseline finish 2019-02-06 → 2019-02-06 19:00 |
| 183 | **Iteracion 11** | 2019-02-20 → 2019-02-20 09:00 | 2019-02-21 → 2019-02-21 11:00 | constraint start no earlier than 2019-02-20 → start no earlier than 2019-02-20 09:00; baseline start 2019-02-20 → 2019-02-20 09:00; baseline finish 2019-02-21 → 2019-02-21 11:00 |
| 184 | [V2]Diseño e implementación b.objetos (final) | 2019-02-20 → 2019-02-20 09:00 | 2019-02-20 → 2019-02-20 18:00 | baseline start 2019-02-20 → 2019-02-20 09:00; baseline finish 2019-02-20 → 2019-02-20 18:00 |
| 185 | [v2]Diseño e implementacion b.componentes (final) | 2019-02-20 → 2019-02-20 09:00 | 2019-02-21 → 2019-02-21 11:00 | constraint start no earlier than 2019-02-04 → start no earlier than 2019-02-04 09:00; baseline start 2019-02-20 → 2019-02-20 09:00; baseline finish 2019-02-21 → 2019-02-21 11:00 |
| 186 | <Tarea nueva> | 2019-02-20 → 2019-02-20 09:00 | 2019-02-20 → 2019-02-20 19:00 | baseline start 2019-02-20 → 2019-02-20 09:00; baseline finish 2019-02-20 → 2019-02-20 19:00 |
| 187 | **Iteracion 12** | 2019-03-06 → 2019-03-06 09:00 | 2019-03-06 → 2019-03-06 19:00 | constraint start no earlier than 2019-03-06 → start no earlier than 2019-03-06 09:00; baseline start 2019-03-06 → 2019-03-06 09:00; baseline finish 2019-03-06 → 2019-03-06 19:00 |
| 188 | <Tarea nueva> | 2019-03-06 → 2019-03-06 09:00 | 2019-03-06 → 2019-03-06 19:00 | baseline start 2019-03-06 → 2019-03-06 09:00; baseline finish 2019-03-06 → 2019-03-06 19:00 |
| 189 | [PM]Detallar plan iteraciones del mes de Febrero-Marzo. Creación Subtareas y precedencias en Project | 2019-01-24 → 2019-01-24 09:00 | 2019-01-24 → 2019-01-24 19:00 | constraint start no earlier than 2019-01-24 → start no earlier than 2019-01-24 09:00; baseline start 2019-01-24 → 2019-01-24 09:00; baseline finish 2019-01-24 → 2019-01-24 19:00 |
| 190 | [PM]Detallar plan iteraciones del mes de Febrero-Marzo Asignar recursos a las tareas en Project | 2019-01-24 → 2019-01-24 09:00 | 2019-01-24 → 2019-01-24 19:00 | constraint start no earlier than 2019-01-24 → start no earlier than 2019-01-24 09:00; baseline start 2019-01-24 → 2019-01-24 09:00; baseline finish 2019-01-24 → 2019-01-24 19:00 |
| 191 | [PM]Registrar tiempos y % de realización de tareas en Project | 2019-01-24 → 2019-01-24 09:00 | 2019-01-24 → 2019-01-24 19:00 | constraint start no earlier than 2019-01-24 → start no earlier than 2019-01-24 09:00; baseline start 2019-01-24 → 2019-01-24 09:00; baseline finish 2019-01-24 → 2019-01-24 19:00 |
| 192 | [PM]Comparar la planificación prevista y real en Project hito 3 | 2019-01-24 → 2019-01-24 09:00 | 2019-01-24 → 2019-01-24 19:00 | constraint start no earlier than 2019-01-24 → start no earlier than 2019-01-24 09:00; baseline start 2019-01-24 → 2019-01-24 09:00; baseline finish 2019-01-24 → 2019-01-24 19:00 |
| 193 | [PM]Confeccionar Informes de iteración e informe resumen de Hito 3 | 2019-01-24 → 2019-01-24 09:00 | 2019-01-24 → 2019-01-24 19:00 | constraint start no earlier than 2019-01-24 → start no earlier than 2019-01-24 09:00; baseline start 2019-01-24 → 2019-01-24 09:00; baseline finish 2019-01-24 → 2019-01-24 19:00 |
| 194 | [PM]Elaborar la presentación del Hito 3 | 2019-01-24 → 2019-01-24 09:00 | 2019-01-24 → 2019-01-24 19:00 | constraint start no earlier than 2019-01-24 → start no earlier than 2019-01-24 09:00; baseline start 2019-01-24 → 2019-01-24 09:00; baseline finish 2019-01-24 → 2019-01-24 19:00 |
| 195 | [PM]Exponer la presentación del Hito 3 | 2019-01-24 → 2019-01-24 09:00 | 2019-01-24 → 2019-01-24 19:00 | constraint start no earlier than 2019-01-24 → start no earlier than 2019-01-24 09:00; baseline start 2019-01-24 → 2019-01-24 09:00; baseline finish 2019-01-24 → 2019-01-24 19:00 |
| 196 | [TAG]Estructura básica del nodo (array de hijos, puntero a padre, puntero a entidad, funcionalidad básica -constructor, destructor, gets, sets, manejo de hijos….) | 2019-01-24 → 2019-01-24 09:00 | 2019-01-24 → 2019-01-24 19:00 | constraint start no earlier than 2019-01-24 → start no earlier than 2019-01-24 09:00; baseline start 2019-01-24 → 2019-01-24 09:00; baseline finish 2019-01-24 → 2019-01-24 19:00 |
| 197 | [TAG]Recorrido-dibujado del árbol | 2019-01-24 → 2019-01-24 09:00 | 2019-01-24 → 2019-01-24 19:00 | constraint start no earlier than 2019-01-24 → start no earlier than 2019-01-24 09:00; baseline start 2019-01-24 → 2019-01-24 09:00; baseline finish 2019-01-24 → 2019-01-24 19:00 |
| 198 | [TAG]Estructura básica de la entidad (Constructor, destructor, funciones… todas virtuales, vacías) | 2019-01-24 → 2019-01-24 09:00 | 2019-01-24 → 2019-01-24 19:00 | constraint start no earlier than 2019-01-24 → start no earlier than 2019-01-24 09:00; baseline start 2019-01-24 → 2019-01-24 09:00; baseline finish 2019-01-24 → 2019-01-24 19:00 |
| 199 | [TAG]Matrices (model, view, projection) y pila estáticas y su manejo | 2019-01-24 → 2019-01-24 09:00 | 2019-01-24 → 2019-01-24 19:00 | constraint start no earlier than 2019-01-24 → start no earlier than 2019-01-24 09:00; baseline start 2019-01-24 → 2019-01-24 09:00; baseline finish 2019-01-24 → 2019-01-24 19:00 |
| 200 | [TAG]Estructura básica de la transformación (Constructor, destructor, matriz transformación…) | 2019-01-24 → 2019-01-24 09:00 | 2019-01-24 → 2019-01-24 19:00 | constraint start no earlier than 2019-01-24 → start no earlier than 2019-01-24 09:00; baseline start 2019-01-24 → 2019-01-24 09:00; baseline finish 2019-01-24 → 2019-01-24 19:00 |
| 201 | [TAG]Operaciones de transformación (trasladar, rotar, escalar, identidad, trasponer, invertir, todas con GLM o GLMatrix) | 2019-01-24 → 2019-01-24 09:00 | 2019-01-24 → 2019-01-24 19:00 | constraint start no earlier than 2019-01-24 → start no earlier than 2019-01-24 09:00; baseline start 2019-01-24 → 2019-01-24 09:00; baseline finish 2019-01-24 → 2019-01-24 19:00 |
| 202 | [TAG]Dibujado (begindraw, enddraw, manejo pila y matriz model) | 2019-01-24 → 2019-01-24 09:00 | 2019-01-24 → 2019-01-24 19:00 | constraint start no earlier than 2019-01-24 → start no earlier than 2019-01-24 09:00; baseline start 2019-01-24 → 2019-01-24 09:00; baseline finish 2019-01-24 → 2019-01-24 19:00 |
| 203 | [TAG]Estructura básica de la cámara (Constructor, destructor, matriz proyección) | 2019-01-24 → 2019-01-24 09:00 | 2019-01-24 → 2019-01-24 19:00 | constraint start no earlier than 2019-01-24 → start no earlier than 2019-01-24 09:00; baseline start 2019-01-24 → 2019-01-24 09:00; baseline finish 2019-01-24 → 2019-01-24 19:00 |
| 204 | [TAG]Rellenar matriz perspectiva (con GLM o GLMatrix) | 2019-01-24 → 2019-01-24 09:00 | 2019-01-24 → 2019-01-24 19:00 | constraint start no earlier than 2019-01-24 → start no earlier than 2019-01-24 09:00; baseline start 2019-01-24 → 2019-01-24 09:00; baseline finish 2019-01-24 → 2019-01-24 19:00 |
| 205 | [TAG]Estructura básica de la luz (Constructor, destructor) | 2019-01-24 → 2019-01-24 09:00 | 2019-01-24 → 2019-01-24 19:00 | constraint start no earlier than 2019-01-24 → start no earlier than 2019-01-24 09:00; baseline start 2019-01-24 → 2019-01-24 09:00; baseline finish 2019-01-24 → 2019-01-24 19:00 |
| 206 | [TAG]Datos y funciones luz puntual | 2019-01-24 → 2019-01-24 09:00 | 2019-01-24 → 2019-01-24 19:00 | constraint start no earlier than 2019-01-24 → start no earlier than 2019-01-24 09:00; baseline start 2019-01-24 → 2019-01-24 09:00; baseline finish 2019-01-24 → 2019-01-24 19:00 |
| 207 | [TAG]Estructura básica de la malla (Constructor, destructor) | 2019-01-24 → 2019-01-24 09:00 | 2019-01-24 → 2019-01-24 19:00 | constraint start no earlier than 2019-01-24 → start no earlier than 2019-01-24 09:00; baseline start 2019-01-24 → 2019-01-24 09:00; baseline finish 2019-01-24 → 2019-01-24 19:00 |
| 208 | [TAG]Datos de mallas, texturas, materiales… (llamadas al gestor de recursos) | 2019-01-24 → 2019-01-24 09:00 | 2019-01-24 → 2019-01-24 19:00 | constraint start no earlier than 2019-01-24 → start no earlier than 2019-01-24 09:00; baseline start 2019-01-24 → 2019-01-24 09:00; baseline finish 2019-01-24 → 2019-01-24 19:00 |
| 209 | [TAG]Dibujado de mallas (begindraw, enddraw, matriz model…) | 2019-01-24 → 2019-01-24 09:00 | 2019-01-24 → 2019-01-24 19:00 | constraint start no earlier than 2019-01-24 → start no earlier than 2019-01-24 09:00; baseline start 2019-01-24 → 2019-01-24 09:00; baseline finish 2019-01-24 → 2019-01-24 19:00 |
| 210 | [TAG]Estructura básica del gestor de recursos (constructor, destructor, vectores de recursos) | 2019-01-24 → 2019-01-24 09:00 | 2019-01-24 → 2019-01-24 19:00 | constraint start no earlier than 2019-01-24 → start no earlier than 2019-01-24 09:00; baseline start 2019-01-24 → 2019-01-24 09:00; baseline finish 2019-01-24 → 2019-01-24 19:00 |
| 211 | [TAG]Obtener recurso (gestión adecuada de memoria) | 2019-01-24 → 2019-01-24 09:00 | 2019-01-24 → 2019-01-24 19:00 | constraint start no earlier than 2019-01-24 → start no earlier than 2019-01-24 09:00; baseline start 2019-01-24 → 2019-01-24 09:00; baseline finish 2019-01-24 → 2019-01-24 19:00 |
| 212 | [TAG]Estructura básica del recurso (constructor, destructor. Es virtual, vacío) | 2019-01-24 → 2019-01-24 09:00 | 2019-01-24 → 2019-01-24 19:00 | constraint start no earlier than 2019-01-24 → start no earlier than 2019-01-24 09:00; baseline start 2019-01-24 → 2019-01-24 09:00; baseline finish 2019-01-24 → 2019-01-24 19:00 |
| 213 | [TAG]Estructura básica de la malla (constructor, destructor) | 2019-01-24 → 2019-01-24 09:00 | 2019-01-24 → 2019-01-24 19:00 | constraint start no earlier than 2019-01-24 → start no earlier than 2019-01-24 09:00; baseline start 2019-01-24 → 2019-01-24 09:00; baseline finish 2019-01-24 → 2019-01-24 19:00 |
| 214 | [TAG]Lectura de disco (con assimp) | 2019-01-24 → 2019-01-24 09:00 | 2019-01-24 → 2019-01-24 19:00 | constraint start no earlier than 2019-01-24 → start no earlier than 2019-01-24 09:00; baseline start 2019-01-24 → 2019-01-24 09:00; baseline finish 2019-01-24 → 2019-01-24 19:00 |
| 215 | [TAG]Creación de buffers de vértices, normales, índices… y relleno | 2019-01-24 → 2019-01-24 09:00 | 2019-01-24 → 2019-01-24 19:00 | constraint start no earlier than 2019-01-24 → start no earlier than 2019-01-24 09:00; baseline start 2019-01-24 → 2019-01-24 09:00; baseline finish 2019-01-24 → 2019-01-24 19:00 |
| 216 | [TAG]Dibujado de las mallas (draw, con paso de los buffers a OpenGL o WebGL) | 2019-01-24 → 2019-01-24 09:00 | 2019-01-24 → 2019-01-24 19:00 | constraint start no earlier than 2019-01-24 → start no earlier than 2019-01-24 09:00; baseline start 2019-01-24 → 2019-01-24 09:00; baseline finish 2019-01-24 → 2019-01-24 19:00 |
| 217 | [TAG]Estructura básica del material (constructor, destructor) | 2019-01-24 → 2019-01-24 09:00 | 2019-01-24 → 2019-01-24 19:00 | constraint start no earlier than 2019-01-24 → start no earlier than 2019-01-24 09:00; baseline start 2019-01-24 → 2019-01-24 09:00; baseline finish 2019-01-24 → 2019-01-24 19:00 |
| 218 | [TAG]Leer material de disco (con librería o con parser propio) y rellenar valores | 2019-01-24 → 2019-01-24 09:00 | 2019-01-24 → 2019-01-24 19:00 | constraint start no earlier than 2019-01-24 → start no earlier than 2019-01-24 09:00; baseline start 2019-01-24 → 2019-01-24 09:00; baseline finish 2019-01-24 → 2019-01-24 19:00 |
| 219 | [TAG]Dibujado de los materiales (preparar los materiales y cargarlos en OpenGL o WebGL) | 2019-01-24 → 2019-01-24 09:00 | 2019-01-24 → 2019-01-24 19:00 | constraint start no earlier than 2019-01-24 → start no earlier than 2019-01-24 09:00; baseline start 2019-01-24 → 2019-01-24 09:00; baseline finish 2019-01-24 → 2019-01-24 19:00 |

| ID | Task | Start | Finish | Other |
| --- | --- | --- | --- | --- |
| 220 | [TAG]Estructura básica del shader (constructor, destructor) | 2019-01-24 → 2019-01-24 09:00 | 2019-01-24 → 2019-01-24 19:00 | constraint start no earlier than 2019-01-24 → start no earlier than 2019-01-24 09:00; baseline start 2019-01-24 → 2019-01-24 09:00; baseline finish 2019-01-24 → 2019-01-24 19:00 |
| 221 | [TAG]Lectura de shaders de disco (con parser propio) y guardarlo | 2019-01-24 → 2019-01-24 09:00 | 2019-01-24 → 2019-01-24 19:00 | constraint start no earlier than 2019-01-24 → start no earlier than 2019-01-24 09:00; baseline start 2019-01-24 → 2019-01-24 09:00; baseline finish 2019-01-24 → 2019-01-24 19:00 |
| 222 | [TAG]Estructura básica de la interfaz (constructor, destructor, inicialización motor y openGL) | 2019-01-24 → 2019-01-24 09:00 | 2019-01-24 → 2019-01-24 19:00 | constraint start no earlier than 2019-01-24 → start no earlier than 2019-01-24 09:00; baseline start 2019-01-24 → 2019-01-24 09:00; baseline finish 2019-01-24 → 2019-01-24 19:00 |
| 223 | [TAG]Funciones para crear cámaras y gestionarlas (manejo de las cámaras, registro, cálculo de la matriz view) | 2019-01-24 → 2019-01-24 09:00 | 2019-01-24 → 2019-01-24 19:00 | constraint start no earlier than 2019-01-24 → start no earlier than 2019-01-24 09:00; baseline start 2019-01-24 → 2019-01-24 09:00; baseline finish 2019-01-24 → 2019-01-24 19:00 |
| 224 | [TAG]Funciones para crear luces y gestionarlas (manejo de las luces registro, cálculo de la matriz light) | 2019-01-24 → 2019-01-24 09:00 | 2019-01-24 → 2019-01-24 19:00 | constraint start no earlier than 2019-01-24 → start no earlier than 2019-01-24 09:00; baseline start 2019-01-24 → 2019-01-24 09:00; baseline finish 2019-01-24 → 2019-01-24 19:00 |
| 225 | [TAG]Funciones para crear transformaciones (creación de varios nodos con las transformaciones, manejo de las transformaciones) | 2019-01-24 → 2019-01-24 09:00 | 2019-01-24 → 2019-01-24 19:00 | constraint start no earlier than 2019-01-24 → start no earlier than 2019-01-24 09:00; baseline start 2019-01-24 → 2019-01-24 09:00; baseline finish 2019-01-24 → 2019-01-24 19:00 |
| 226 | [TAG]Funciones para crear mallas y animaciones | 2019-01-24 → 2019-01-24 09:00 | 2019-01-24 → 2019-01-24 19:00 | constraint start no earlier than 2019-01-24 → start no earlier than 2019-01-24 09:00; baseline start 2019-01-24 → 2019-01-24 09:00; baseline finish 2019-01-24 → 2019-01-24 19:00 |
| 227 | [TAG]Funciones para crear shaders y gestionarlos | 2019-01-24 → 2019-01-24 09:00 | 2019-01-24 → 2019-01-24 19:00 | constraint start no earlier than 2019-01-24 → start no earlier than 2019-01-24 09:00; baseline start 2019-01-24 → 2019-01-24 09:00; baseline finish 2019-01-24 → 2019-01-24 19:00 |
| 228 | [TAG]Shader básico (Sombreado de Phong, reflexión de Phong) con materiales | 2019-01-24 → 2019-01-24 09:00 | 2019-01-24 → 2019-01-24 19:00 | constraint start no earlier than 2019-01-24 → start no earlier than 2019-01-24 09:00; baseline start 2019-01-24 → 2019-01-24 09:00; baseline finish 2019-01-24 → 2019-01-24 19:00 |
| 229 | [TAG]Integración con la aplicación | 2019-01-24 → 2019-01-24 09:00 | 2019-01-24 → 2019-01-24 19:00 | constraint start no earlier than 2019-01-24 → start no earlier than 2019-01-24 09:00; baseline start 2019-01-24 → 2019-01-24 09:00; baseline finish 2019-01-24 → 2019-01-24 19:00 |
| 230 | [TAG]Realización de una fachada entre el motor y la aplicación o videojuego | 2019-01-24 → 2019-01-24 09:00 | 2019-01-24 → 2019-01-24 19:00 | constraint start no earlier than 2019-01-24 → start no earlier than 2019-01-24 09:00; baseline start 2019-01-24 → 2019-01-24 09:00; baseline finish 2019-01-24 → 2019-01-24 19:00 |
| 231 | [TAG]Librería matemática (GLM o GLMatrix) | 2019-01-24 → 2019-01-24 09:00 | 2019-01-24 → 2019-01-24 19:00 | constraint start no earlier than 2019-01-24 → start no earlier than 2019-01-24 09:00; baseline start 2019-01-24 → 2019-01-24 09:00; baseline finish 2019-01-24 → 2019-01-24 19:00 |
| 232 | [TAG][Solo CED] Librería de lectura de mallas (assimp…) | 2019-01-24 → 2019-01-24 09:00 | 2019-01-24 → 2019-01-24 19:00 | constraint start no earlier than 2019-01-24 → start no earlier than 2019-01-24 09:00; baseline start 2019-01-24 → 2019-01-24 09:00; baseline finish 2019-01-24 → 2019-01-24 19:00 |
| 233 | [TAG][Solo CED] Librería de ventanas, entrada/salida... (GLFW…) | 2019-01-24 → 2019-01-24 09:00 | 2019-01-24 → 2019-01-24 19:00 | constraint start no earlier than 2019-01-24 → start no earlier than 2019-01-24 09:00; baseline start 2019-01-24 → 2019-01-24 09:00; baseline finish 2019-01-24 → 2019-01-24 19:00 |
| 234 | [V1]Flocking: comportamiento grupal emergente | 2019-01-24 → 2019-01-24 09:00 | 2019-01-24 → 2019-01-24 19:00 | constraint start no earlier than 2019-01-24 → start no earlier than 2019-01-24 09:00; baseline start 2019-01-24 → 2019-01-24 09:00; baseline finish 2019-01-24 → 2019-01-24 19:00 |
| 235 | [V1]Editor in-game de parámetros y comportamientos de la IA | 2019-01-24 → 2019-01-24 09:00 | 2019-01-24 → 2019-01-24 19:00 | constraint start no earlier than 2019-01-24 → start no earlier than 2019-01-24 09:00; baseline start 2019-01-24 → 2019-01-24 09:00; baseline finish 2019-01-24 → 2019-01-24 19:00 |
| 236 | [V1]Sistema de logros y puntuaciones web | 2019-01-24 → 2019-01-24 09:00 | 2019-01-24 → 2019-01-24 19:00 | constraint start no earlier than 2019-01-24 → start no earlier than 2019-01-24 09:00; baseline start 2019-01-24 → 2019-01-24 09:00; baseline finish 2019-01-24 → 2019-01-24 19:00 |
| 237 | [V2]Implementación de cesped y vegetación | 2019-01-24 → 2019-01-24 09:00 | 2019-01-24 → 2019-01-24 19:00 | constraint start no earlier than 2019-01-24 → start no earlier than 2019-01-24 09:00; baseline start 2019-01-24 → 2019-01-24 09:00; baseline finish 2019-01-24 → 2019-01-24 19:00 |
| 238 | [V2]Implementación de nubes | 2019-01-24 → 2019-01-24 09:00 | 2019-01-24 → 2019-01-24 19:00 | constraint start no earlier than 2019-01-24 → start no earlier than 2019-01-24 09:00; baseline start 2019-01-24 → 2019-01-24 09:00; baseline finish 2019-01-24 → 2019-01-24 19:00 |
| 239 | [V2]Implementación de sistemas de partículas | 2019-01-24 → 2019-01-24 09:00 | 2019-01-24 → 2019-01-24 19:00 | constraint start no earlier than 2019-01-24 → start no earlier than 2019-01-24 09:00; baseline start 2019-01-24 → 2019-01-24 09:00; baseline finish 2019-01-24 → 2019-01-24 19:00 |
| 240 | [TDS]Resto de la biblioteca (máx. 1/3), cuesheet y metadatos finales | 2019-01-24 → 2019-01-24 09:00 | 2019-01-24 → 2019-01-24 19:00 | constraint start no earlier than 2019-01-24 → start no earlier than 2019-01-24 09:00; baseline start 2019-01-24 → 2019-01-24 09:00; baseline finish 2019-01-24 → 2019-01-24 19:00 |
| 241 | <Tarea nueva> | 2019-01-24 → 2019-01-24 09:00 | 2019-01-24 → 2019-01-24 19:00 | constraint start no earlier than 2019-01-24 → start no earlier than 2019-01-24 09:00; baseline start 2019-01-24 → 2019-01-24 09:00; baseline finish 2019-01-24 → 2019-01-24 19:00 |
| 242 | Versión Producción - Lista para pulir | 2019-03-06 → 2019-03-06 19:00 | 2019-03-06 → 2019-03-06 19:00 | constraint start no earlier than 2019-03-06 → start no earlier than 2019-03-06 09:00; baseline start 2019-03-06 → 2019-03-06 19:00; baseline finish 2019-03-06 → 2019-03-06 19:00 |
| 243 | **hito 4** | 2019-03-27 → 2019-03-27 09:00 | 2019-05-06 → 2019-05-06 19:00 | constraint finish no later than 2019-05-23 → finish no later than 2019-05-23 19:00; baseline start 2019-03-27 → 2019-03-27 09:00; baseline finish 2019-05-06 → 2019-05-06 19:00 |
| 244 | **Iteracion 13** | 2019-03-27 → 2019-03-27 09:00 | 2019-03-27 → 2019-03-27 19:00 | constraint start no earlier than 2019-03-27 → start no earlier than 2019-03-27 09:00; baseline start 2019-03-27 → 2019-03-27 09:00; baseline finish 2019-03-27 → 2019-03-27 19:00 |
| 245 | <Tarea nueva> | 2019-03-27 → 2019-03-27 09:00 | 2019-03-27 → 2019-03-27 19:00 | baseline start 2019-03-27 → 2019-03-27 09:00; baseline finish 2019-03-27 → 2019-03-27 19:00 |
| 246 | **Semana santa** | 2019-04-17 → 2019-04-17 09:00 | 2019-04-17 → 2019-04-17 19:00 | constraint start no earlier than 2019-04-17 → start no earlier than 2019-04-17 09:00; baseline start 2019-04-17 → 2019-04-17 09:00; baseline finish 2019-04-17 → 2019-04-17 19:00 |
| 247 | <Tarea nueva> | 2019-04-17 → 2019-04-17 09:00 | 2019-04-17 → 2019-04-17 19:00 | baseline start 2019-04-17 → 2019-04-17 09:00; baseline finish 2019-04-17 → 2019-04-17 19:00 |
| 248 | **Iteracion 14** | 2019-05-06 → 2019-05-06 09:00 | 2019-05-06 → 2019-05-06 19:00 | constraint start no earlier than 2019-05-05 → start no earlier than 2019-05-05 09:00; baseline start 2019-05-06 → 2019-05-06 09:00; baseline finish 2019-05-06 → 2019-05-06 19:00 |
| 249 | <Tarea nueva> | 2019-05-06 → 2019-05-06 09:00 | 2019-05-06 → 2019-05-06 19:00 | baseline start 2019-05-06 → 2019-05-06 09:00; baseline finish 2019-05-06 → 2019-05-06 19:00 |
| 250 | [PM]Detallar plan iteraciones del mes de Abril-Mayo. Creación Subtareas y precedencias en Project | 2019-03-27 → 2019-03-27 09:00 | 2019-03-27 → 2019-03-27 19:00 | constraint start no earlier than 2019-03-27 → start no earlier than 2019-03-27 09:00; baseline start 2019-03-27 → 2019-03-27 09:00; baseline finish 2019-03-27 → 2019-03-27 19:00 |
| 251 | [PM]Detallar plan iteraciones del mes de Abril-Mayo. Asignar recursos a las tareas en Project | 2019-03-27 → 2019-03-27 09:00 | 2019-03-27 → 2019-03-27 19:00 | constraint start no earlier than 2019-03-27 → start no earlier than 2019-03-27 09:00; baseline start 2019-03-27 → 2019-03-27 09:00; baseline finish 2019-03-27 → 2019-03-27 19:00 |
| 252 | [PM]Registrar tiempos y % de realización de tareas en Project | 2019-03-27 → 2019-03-27 09:00 | 2019-03-27 → 2019-03-27 19:00 | constraint start no earlier than 2019-03-27 → start no earlier than 2019-03-27 09:00; baseline start 2019-03-27 → 2019-03-27 09:00; baseline finish 2019-03-27 → 2019-03-27 19:00 |
| 253 | [PM]Comparar la planificación prevista y real en Project hito 4 | 2019-03-27 → 2019-03-27 09:00 | 2019-03-27 → 2019-03-27 19:00 | constraint start no earlier than 2019-03-27 → start no earlier than 2019-03-27 09:00; baseline start 2019-03-27 → 2019-03-27 09:00; baseline finish 2019-03-27 → 2019-03-27 19:00 |
| 254 | [PM]Confeccionar Informes de iteración e informe resumen de Hito 4 | 2019-03-27 → 2019-03-27 09:00 | 2019-03-27 → 2019-03-27 19:00 | constraint start no earlier than 2019-03-27 → start no earlier than 2019-03-27 09:00; baseline start 2019-03-27 → 2019-03-27 09:00; baseline finish 2019-03-27 → 2019-03-27 19:00 |
| 255 | [PM]Elaborar la presentación del Hito 4 | 2019-03-27 → 2019-03-27 09:00 | 2019-03-27 → 2019-03-27 19:00 | constraint start no earlier than 2019-03-27 → start no earlier than 2019-03-27 09:00; baseline start 2019-03-27 → 2019-03-27 09:00; baseline finish 2019-03-27 → 2019-03-27 19:00 |
| 256 | [PM]Exponer la presentación del Hito 4 | 2019-03-27 → 2019-03-27 09:00 | 2019-03-27 → 2019-03-27 19:00 | constraint start no earlier than 2019-03-27 → start no earlier than 2019-03-27 09:00; baseline start 2019-03-27 → 2019-03-27 09:00; baseline finish 2019-03-27 → 2019-03-27 19:00 |
| 257 | [TAG]Estructura básica de la animación (Constructor, destructor) | 2019-03-27 → 2019-03-27 09:00 | 2019-03-27 → 2019-03-27 19:00 | constraint start no earlier than 2019-03-27 → start no earlier than 2019-03-27 09:00; baseline start 2019-03-27 → 2019-03-27 09:00; baseline finish 2019-03-27 → 2019-03-27 19:00 |
| 258 | [TAG]Datos de animaciones, mallas, texturas, materiales (multiples, con llamadas al gestor de recursos) | 2019-03-27 → 2019-03-27 09:00 | 2019-03-27 → 2019-03-27 19:00 | constraint start no earlier than 2019-03-27 → start no earlier than 2019-03-27 09:00; baseline start 2019-03-27 → 2019-03-27 09:00; baseline finish 2019-03-27 → 2019-03-27 19:00 |
| 259 | [TAG]Dibujado de texturas (preparar las texturas y cargarlas en OpenGL o WebGL) | 2019-03-27 → 2019-03-27 09:00 | 2019-03-27 → 2019-03-27 19:00 | constraint start no earlier than 2019-03-27 → start no earlier than 2019-03-27 09:00; baseline start 2019-03-27 → 2019-03-27 09:00; baseline finish 2019-03-27 → 2019-03-27 19:00 |
| 260 | [TAG]Shader básico (Sombreado de Phong, reflexión de Phong) con materiales y texturas | 2019-03-27 → 2019-03-27 09:00 | 2019-03-27 → 2019-03-27 19:00 | constraint start no earlier than 2019-03-27 → start no earlier than 2019-03-27 09:00; baseline start 2019-03-27 → 2019-03-27 09:00; baseline finish 2019-03-27 → 2019-03-27 19:00 |
| 261 | [TAG]Shader Cartoon | 2019-03-27 → 2019-03-27 09:00 | 2019-03-27 → 2019-03-27 19:00 | constraint start no earlier than 2019-03-27 → start no earlier than 2019-03-27 09:00; baseline start 2019-03-27 → 2019-03-27 09:00; baseline finish 2019-03-27 → 2019-03-27 19:00 |
| 262 | [TAG]Bounding boxes (incluye retocar nodos, entidades y recursos malla) | 2019-03-27 → 2019-03-27 09:00 | 2019-03-27 → 2019-03-27 19:00 | constraint start no earlier than 2019-03-27 → start no earlier than 2019-03-27 09:00; baseline start 2019-03-27 → 2019-03-27 09:00; baseline finish 2019-03-27 → 2019-03-27 19:00 |
| 263 | [TAG]Backface culling | 2019-03-27 → 2019-03-27 09:00 | 2019-03-27 → 2019-03-27 19:00 | constraint start no earlier than 2019-03-27 → start no earlier than 2019-03-27 09:00; baseline start 2019-03-27 → 2019-03-27 09:00; baseline finish 2019-03-27 → 2019-03-27 19:00 |
| 264 | [TAG]Frustum culling | 2019-03-27 → 2019-03-27 09:00 | 2019-03-27 → 2019-03-27 19:00 | constraint start no earlier than 2019-03-27 → start no earlier than 2019-03-27 09:00; baseline start 2019-03-27 → 2019-03-27 09:00; baseline finish 2019-03-27 → 2019-03-27 19:00 |
| 265 | [TAG]Sombras proyectadas | 2019-03-27 → 2019-03-27 09:00 | 2019-03-27 → 2019-03-27 19:00 | constraint start no earlier than 2019-03-27 → start no earlier than 2019-03-27 09:00; baseline start 2019-03-27 → 2019-03-27 09:00; baseline finish 2019-03-27 → 2019-03-27 19:00 |
| 266 | [TAG]Sistema de partículas (sólo la incorporación en el motor) | 2019-03-27 → 2019-03-27 09:00 | 2019-03-27 → 2019-03-27 19:00 | constraint start no earlier than 2019-03-27 → start no earlier than 2019-03-27 09:00; baseline start 2019-03-27 → 2019-03-27 09:00; baseline finish 2019-03-27 → 2019-03-27 19:00 |
| 267 | [PD]Créditos | 2019-03-27 → 2019-03-27 09:00 | 2019-03-27 → 2019-03-27 19:00 | constraint start no earlier than 2019-03-27 → start no earlier than 2019-03-27 09:00; baseline start 2019-03-27 → 2019-03-27 09:00; baseline finish 2019-03-27 → 2019-03-27 19:00 |
| 268 | [PD]Vídeo final juego / explicación parte del proyecto | 2019-03-27 → 2019-03-27 09:00 | 2019-03-27 → 2019-03-27 19:00 | constraint start no earlier than 2019-03-27 → start no earlier than 2019-03-27 09:00; baseline start 2019-03-27 → 2019-03-27 09:00; baseline finish 2019-03-27 → 2019-03-27 19:00 |
| 269 | [TDS]Integración de sonido y música en el juego | 2019-03-27 → 2019-03-27 09:00 | 2019-03-27 → 2019-03-27 19:00 | constraint start no earlier than 2019-03-27 → start no earlier than 2019-03-27 09:00; baseline start 2019-03-27 → 2019-03-27 09:00; baseline finish 2019-03-27 → 2019-03-27 19:00 |
| 270 | [TDS]Post producción (mezcla y masterización in-game) | 2019-03-27 → 2019-03-27 09:00 | 2019-03-27 → 2019-03-27 19:00 | constraint start no earlier than 2019-03-27 → start no earlier than 2019-03-27 09:00; baseline start 2019-03-27 → 2019-03-27 09:00; baseline finish 2019-03-27 → 2019-03-27 19:00 |
| 271 | [TDS]Sonido generado proceduralmente in-game | 2019-03-27 → 2019-03-27 09:00 | 2019-03-27 → 2019-03-27 19:00 | constraint start no earlier than 2019-03-27 → start no earlier than 2019-03-27 09:00; baseline start 2019-03-27 → 2019-03-27 09:00; baseline finish 2019-03-27 → 2019-03-27 19:00 |
| 272 | [RV]Rigging de los personajes | 2019-03-27 → 2019-03-27 09:00 | 2019-03-27 → 2019-03-27 19:00 | constraint start no earlier than 2019-03-27 → start no earlier than 2019-03-27 09:00; baseline start 2019-03-27 → 2019-03-27 09:00; baseline finish 2019-03-27 → 2019-03-27 19:00 |
| 273 | [RV]Captura de movimiento | 2019-03-27 → 2019-03-27 09:00 | 2019-03-27 → 2019-03-27 19:00 | constraint start no earlier than 2019-03-27 → start no earlier than 2019-03-27 09:00; baseline start 2019-03-27 → 2019-03-27 09:00; baseline finish 2019-03-27 → 2019-03-27 19:00 |
| 274 | [RV]Animación de los personajes | 2019-03-27 → 2019-03-27 09:00 | 2019-03-27 → 2019-03-27 19:00 | constraint start no earlier than 2019-03-27 → start no earlier than 2019-03-27 09:00; baseline start 2019-03-27 → 2019-03-27 09:00; baseline finish 2019-03-27 → 2019-03-27 19:00 |
| 275 | [RV]Texturizado del entorno y elementos | 2019-03-27 → 2019-03-27 09:00 | 2019-03-27 → 2019-03-27 19:00 | constraint start no earlier than 2019-03-27 → start no earlier than 2019-03-27 09:00; baseline start 2019-03-27 → 2019-03-27 09:00; baseline finish 2019-03-27 → 2019-03-27 19:00 |
| 276 | Version terminada | 2019-05-06 → 2019-05-06 19:00 | 2019-05-06 → 2019-05-06 19:00 | constraint start no earlier than 2018-10-24 → start no earlier than 2018-10-24 09:00; baseline start 2019-05-06 → 2019-05-06 19:00; baseline finish 2019-05-06 → 2019-05-06 19:00 |

## Version 7 (saved 2018-11-08)

Note of the change: Se agrega linea base iteracion 5, se agrega un poco de informacion a los traslados de tarea.

Last finish stays 2019-05-06.

Changed:

| ID | Task | Start | Finish | Total float | Other |
| --- | --- | --- | --- | --- | --- |
| 30 | **Iteracion 4** |  |  |  | baseline finish 2018-11-07 11:00 → 2018-11-07 09:48 |
| 31 | [v1] Documento de diseño de toma de decision: espacio y metodos (1/2) |  |  |  | baseline finish 2018-10-30 19:00 → 2018-10-25 13:00 |
| 32 | [V1]Documento de diseño técnico del motor de IA (1/2) |  |  |  | baseline finish 2018-11-06 16:00 → 2018-10-31 19:00 |
| 33 | **[V1]Sistema de toma de decisión con Behaviour Trees (1/2)** |  |  |  | baseline finish 2018-11-06 12:00 → 2018-10-30 18:00 |
| 36 | Implementar |  |  |  | baseline finish 2018-11-06 12:00 → 2018-10-30 18:00 |
| 44 | [v2]Utilización de joints en las mecánicas jugables (1/2) |  |  |  | baseline finish 2018-10-29 10:00 → 2018-10-25 13:00 |
| 45 | [V2]Mecánicas básicas entidades sin IA |  |  |  | baseline start 2018-10-29 10:00 → 2018-10-25 15:00; baseline finish 2018-11-01 18:00 → 2018-10-25 16:00 |
| 47 | [PD]Vídeo con animación del logo de la empresa (2/2) |  |  |  | baseline start none → 2018-10-25 09:00; baseline finish none → 2018-10-30 17:00 |
| 56 | [PM]Registrar tiempos y % de realización de tareas en Project |  |  |  | baseline finish 2018-11-07 11:00 → 2018-11-07 09:48 |
| 58 | **Iteracion 5** |  |  |  | baseline finish 2018-11-15 17:04 → 2018-11-21 19:00 |
| 59 | [RV]Boceto de los personajes 3/3 |  |  |  | baseline start none → 2018-11-08 09:00; baseline finish none → 2018-11-08 13:00 |
| 60 | [v1] Documento de diseño de toma de decision: espacio y metodos (2/2) |  |  |  | baseline start none → 2018-11-08 09:00; baseline finish none → 2018-11-13 13:00 |
| 61 | [V1]Documento de diseño técnico del motor de IA (2/2) |  |  |  | baseline start none → 2018-11-09 09:00; baseline finish none → 2018-11-14 16:00 |
| 62 | [V1]Sistema de toma de decisión con Behaviour Trees (2/2) |  |  |  | baseline start none → 2018-11-09 09:00; baseline finish none → 2018-11-15 13:00 |
| 63 | [v2]Utilización de joints en las mecánicas jugables (2/2) |  |  |  | baseline start none → 2018-11-09 09:00; baseline finish none → 2018-11-12 16:00 |
| 64 | [V2]Mecánicas básicas entidades sin IA |  |  |  | baseline start none → 2018-11-08 09:00; baseline finish none → 2018-11-15 19:00 |
| 65 | [PM]Detallar plan iteraciones del mes de Noviembre. Creación Subtareas y precedencias en Project |  |  |  | baseline finish 2018-11-12 18:02 → 2018-11-12 18:24 |
| 66 | [PM]Detallar plan iteraciones del mes de Noviembre. Asignar recursos a las tareas en Project |  |  |  | baseline start 2018-11-12 18:02 → 2018-11-12 18:24; baseline finish 2018-11-15 17:04 → 2018-11-15 17:24 |
| 67 | [PM]Aplicar el modelo EVA en Project |  |  |  | baseline start 2018-11-08 09:00 → 2018-11-16 09:00; baseline finish 2018-11-12 16:36 → 2018-11-20 16:36 |
| 68 | [RV]Bocetos de los elementos |  |  |  | baseline start 2018-11-08 09:00 → 2018-11-16 09:00; baseline finish 2018-11-12 11:00 → 2018-11-20 11:00 |
| 69 | **[V2]Diseño e implementación b.objetos (3/10)** |  |  |  | baseline start 2018-11-08 09:00 → 2018-11-15 09:00; baseline finish 2018-11-08 18:00 → 2018-11-15 18:00 |
| 70 | Implementacion |  |  |  | baseline start none → 2018-11-15 09:00; baseline finish none → 2018-11-15 18:00 |
| 71 | [v2]Diseño e implementacion b.componentes 2 |  |  |  | baseline start 2018-11-08 09:00 → 2018-11-15 09:00; baseline finish 2018-11-09 11:00 → 2018-11-16 11:00 |
| 72 | [v2]Formato propio para la definicion de los niveles(documentos con la especifiacion del formato) |  |  |  | baseline start 2018-11-08 09:00 → 2018-11-13 09:00; baseline finish 2018-11-09 12:00 → 2018-11-14 12:00 |
| 73 | [V2]Creación de un cargador de niveles |  |  |  | baseline start 2018-11-09 12:00 → 2018-11-14 12:00; baseline finish 2018-11-14 18:00 → 2018-11-19 18:00 |
| 74 | [v2]Implementacion de camara de seguimiento |  |  |  | baseline start 2018-11-08 09:00 → 2018-11-16 09:00; baseline finish 2018-11-12 10:00 → 2018-11-20 10:00 |
| 83 | [PM]Registrar tiempos y % de realización de tareas en Project |  |  |  | baseline start 2018-11-08 09:00 → 2018-11-21 18:12; baseline finish 2018-11-08 10:00 → 2018-11-21 19:00 |
| 85 | [v2]Control del player: movimiento y colisiones sin motor de físicas |  |  |  | baseline start 2018-11-08 09:00 → 2018-11-22 09:00; baseline finish 2018-11-14 19:00 → 2018-11-28 19:00 |
| 86 | [V2]Utilización de propiedades físicas en las mecánicas jugables |  |  |  | baseline start 2018-11-08 09:00 → 2018-11-22 09:00; baseline finish 2018-11-12 10:00 → 2018-11-26 10:00 |
| 102 | [PM]Registrar tiempos y % de realización de tareas en Project |  |  |  | baseline start 2018-11-08 09:00 → 2018-12-04 18:12; baseline finish 2018-11-08 10:00 → 2018-12-04 19:00 |
| 125 | **[V1]Sistema de percepción sensorial (vista, oído, olfato, canales…)** | 2018-11-08 09:00 → 2018-11-26 09:00 (+18d) | 2018-11-15 17:00 → 2018-12-03 17:00 (+18d) | 122.25d → 110.25d | constraint start no earlier than 2018-11-08 09:00 → start no earlier than 2018-11-24 09:00; resources David Ramón Sevilla [10%]; Débora Galdeano González [10%]; Jose Vicente Anton Coy [10%]; Marines Ánton Castelló [10%] → none; baseline start 2018-11-08 09:00 → 2018-11-26 09:00; baseline finish 2018-11-15 17:00 → 2018-12-03 17:00 |
| 126 | Investigacion | 2018-11-08 09:00 → 2018-11-26 09:00 (+18d) | 2018-11-09 19:00 → 2018-11-27 19:00 (+18d) | 122.25d → 110.25d | baseline start 2018-11-08 09:00 → 2018-11-26 09:00; baseline finish 2018-11-09 19:00 → 2018-11-27 19:00 |
| 127 | Diseño | 2018-11-12 09:00 → 2018-11-28 09:00 (+16d) | 2018-11-12 17:00 → 2018-11-28 17:00 (+16d) | 122.25d → 110.25d | baseline start 2018-11-12 09:00 → 2018-11-28 09:00; baseline finish 2018-11-12 17:00 → 2018-11-28 17:00 |
| 128 | Implementar | 2018-11-12 17:00 → 2018-11-28 17:00 (+16d) | 2018-11-15 17:00 → 2018-12-03 17:00 (+18d) | 122.25d → 110.25d | baseline start 2018-11-12 17:00 → 2018-11-28 17:00; baseline finish 2018-11-15 17:00 → 2018-12-03 17:00 |

## Version 8 (data date 2018-11-19, saved 2018-11-19)

Note of the change: Seguimiento de tiempos

Last finish stays 2019-05-06. Complete tasks 42 → 56.

Changed:

| ID | Task | Start | Finish | Complete | Total float |
| --- | --- | --- | --- | --- | --- |
| 11 | **Hito 1** |  |  | 19% → 35% |  |
| 58 | **Iteracion 5** | 2018-11-08 09:00 A |  | 0% → 59% |  |
| 59 | [RV]Boceto de los personajes 3/3 | 2018-11-08 09:00 A | 2018-11-08 13:00 A | 0% → 100% | 127.5d → none |
| 60 | [v1] Documento de diseño de toma de decision: espacio y metodos (2/2) | 2018-11-08 09:00 A | 2018-11-13 13:00 A | 0% → 100% | 124.5d → none |
| 61 | [V1]Documento de diseño técnico del motor de IA (2/2) | 2018-11-09 09:00 A | 2018-11-14 16:00 A | 0% → 100% | 123.38d → none |
| 62 | [V1]Sistema de toma de decisión con Behaviour Trees (2/2) | 2018-11-09 09:00 A |  | 0% → 75% |  |
| 64 | [V2]Mecánicas básicas entidades sin IA | 2018-11-08 09:00 A |  | 0% → 50% |  |
| 65 | [PM]Detallar plan iteraciones del mes de Noviembre. Creación Subtareas y precedencias en Project | 2018-11-08 09:00 A | 2018-11-12 18:24 A | 0% → 100% | 122.2d → none |
| 66 | [PM]Detallar plan iteraciones del mes de Noviembre. Asignar recursos a las tareas en Project | 2018-11-12 18:24 A | 2018-11-15 17:24 A | 0% → 100% | 122.2d → none |
| 72 | [v2]Formato propio para la definicion de los niveles(documentos con la especifiacion del formato) | 2018-11-13 09:00 A | 2018-11-14 12:00 A | 0% → 100% | 120.12d → none |
| 73 | [V2]Creación de un cargador de niveles | 2018-11-14 12:00 A |  | 0% → 25% |  |
| 74 | [v2]Implementacion de camara de seguimiento | 2018-11-16 09:00 A |  | 0% → 25% |  |
| 75 | **[TDS]Realizar sonidos para el juego 3/7** | 2018-11-08 09:00 A | 2018-11-08 11:51 A | 0% → 100% | 127.64d → none |
| 76 | Síntesis | 2018-11-08 09:00 A | 2018-11-08 11:51 A | 0% → 100% | 127.64d → none |
| 77 | Grabaciones propias | 2018-11-08 09:00 A | 2018-11-08 11:51 A | 0% → 100% | 127.64d → none |
| 78 | Sonidos externos | 2018-11-08 09:00 A | 2018-11-08 11:51 A | 0% → 100% | 127.64d → none |
| 79 | Música | 2018-11-08 09:00 A | 2018-11-08 11:51 A | 0% → 100% | 127.64d → none |
| 80 | Cue Sheet | 2018-11-08 09:00 A | 2018-11-08 10:25 A | 0% → 100% | 127.82d → none |
| 81 | Hoja de metadatos | 2018-11-08 09:00 A | 2018-11-08 10:25 A | 0% → 100% | 127.82d → none |
| 82 | Integración del motor de audio en el juego con prueba de concepto | 2018-11-08 09:00 A | 2018-11-08 11:51 A | 0% → 100% | 127.64d → none |
| 83 | [PM]Registrar tiempos y % de realización de tareas en Project | 2018-11-21 18:12 A | 2018-11-21 19:00 A | 0% → 100% | 118d → none |

## Version 9 (data date 2018-11-21, saved 2018-11-21)

Note of the change: Planificacion iteracion 6

Last finish stays 2019-05-06. Complete tasks 56 → 65.

Added:

| ID | Task | Duration | Start | Finish | Predecessors | Resources |
| --- | --- | --- | --- | --- | --- | --- |
| 85 | [v1]Sistema de gestión de navegación (Pathplanning/following) | 50h | 2018-11-22 | 2018-11-30 |  | Débora Galdeano González [50%]; Marines Ánton Castelló [50%] |
| 90 | [V1]Sistema de toma de decisión con Behaviour Trees (3/3) (Implementacion) | 20h | 2018-11-30 | 2018-12-04 | 85, 86 | Marines Ánton Castelló [50%]; Débora Galdeano González [50%] |
| 107 | [PM] Presentacion de Licencias de programas | 10h | 2018-11-22 | 2018-11-23 |  | Todos [10%] |

Changed:

| ID | Task | Start | Finish | Complete | Total float | Other |
| --- | --- | --- | --- | --- | --- | --- |
| 1 | **Hito 0** | 2018-09-10 09:00 A → 2018-09-10 A | 2018-10-10 10:36 A → 2018-10-10 A |  |  | baseline start 2018-09-10 09:00 → 2018-09-10; baseline finish 2018-10-10 10:36 → 2018-10-10 |
| 2 | **Iteracion 1** | 2018-09-10 09:00 A → 2018-09-10 A | 2018-10-02 10:36 A → 2018-10-02 A |  |  | baseline start 2018-09-10 09:00 → 2018-09-10; baseline finish 2018-10-02 10:36 → 2018-10-02 |
| 3 | [PM]Rellenar documento de Concepto del proyecto | 2018-09-10 09:00 A → 2018-09-10 A | 2018-09-11 10:36 A → 2018-09-11 A |  |  | constraint start no earlier than 2018-09-10 09:00 → start no earlier than 2018-09-10; baseline start 2018-09-10 09:00 → 2018-09-10; baseline finish 2018-09-11 10:36 → 2018-09-11 |
| 4 | [PM]Rellenar Version inicial del documento Especificacion | 2018-10-01 09:00 A → 2018-10-01 A | 2018-10-02 10:36 A → 2018-10-02 A |  |  | baseline start 2018-10-01 09:00 → 2018-10-01; baseline finish 2018-10-02 10:36 → 2018-10-02 |
| 5 | **Iteracion 2** | 2018-10-01 09:00 A → 2018-10-01 A | 2018-10-10 10:36 A → 2018-10-10 A |  |  | baseline start 2018-10-01 09:00 → 2018-10-01; baseline finish 2018-10-10 10:36 → 2018-10-10 |
| 6 | [PM]Completar y Revisar documento Especificacion | 2018-10-01 09:00 A → 2018-10-01 A | 2018-10-02 10:36 A → 2018-10-02 A |  |  | baseline start 2018-10-01 09:00 → 2018-10-01; baseline finish 2018-10-02 10:36 → 2018-10-02 |
| 7 | [PM]Crear WBS del proyecto project | 2018-10-01 09:00 A → 2018-10-01 A | 2018-10-04 15:48 A → 2018-10-04 A |  |  | baseline start 2018-10-01 09:00 → 2018-10-01; baseline finish 2018-10-04 15:48 → 2018-10-04 |
| 8 | [PM]Crear plan general (tareas y precedencias basicas) en project | 2018-10-01 09:00 A → 2018-10-01 A | 2018-10-04 15:48 A → 2018-10-04 A |  |  | baseline start 2018-10-01 09:00 → 2018-10-01; baseline finish 2018-10-04 15:48 → 2018-10-04 |
| 9 | [PM]Elaborar el Presupuesto(hoja de calculo) | 2018-10-01 09:00 A → 2018-10-01 A | 2018-10-10 10:36 A → 2018-10-10 A |  |  | baseline start 2018-10-01 09:00 → 2018-10-01; baseline finish 2018-10-10 10:36 → 2018-10-10 |
| 10 | Documento de Especificaciones realizado | 2018-10-10 10:36 A → 2018-10-10 A | 2018-10-10 10:36 A → 2018-10-10 A |  |  | constraint start no earlier than 2018-10-10 09:00 → start no earlier than 2018-10-10; baseline start 2018-10-10 10:36 → 2018-10-10; baseline finish 2018-10-10 10:36 → 2018-10-10 |
| 11 | **Hito 1** | 2018-10-01 09:00 A → 2018-10-01 A | 2018-12-17 13:00 → 2018-12-17 | 35% → 44% |  | baseline start 2018-10-01 09:00 → 2018-10-01; baseline finish 2018-12-17 13:00 → 2018-12-17 |
| 12 | **Iteracion 3** | 2018-10-11 09:00 A → 2018-10-11 A | 2018-10-24 19:00 → 2018-10-24 |  |  | constraint start no earlier than 2018-10-11 09:00 → start no earlier than 2018-10-11; baseline start 2018-10-11 09:00 → 2018-10-11; baseline finish 2018-10-24 19:00 → 2018-10-24 |
| 13 | [V1]Documento de diseño de mecánicas de los NPCs | 2018-10-11 09:00 A → 2018-10-11 A | 2018-10-12 18:00 A → 2018-10-12 A |  |  | constraint must finish on 2018-10-24 19:00 → must finish on 2018-10-24; baseline start 2018-10-11 09:00 → 2018-10-11; baseline finish 2018-10-12 18:00 → 2018-10-12 |
| 14 | [v1] Documento de diseño de toma de decision: espacio y metodos | 2018-10-19 09:00 → 2018-10-19 | 2018-10-24 19:00 → 2018-10-24 |  |  | constraint must finish on 2018-10-24 19:00 → must finish on 2018-10-24; baseline start 2018-10-19 09:00 → 2018-10-19; baseline finish 2018-10-24 19:00 → 2018-10-24 |
| 15 | [V1]Documento de diseño técnico del motor de IA | 2018-10-18 12:00 → 2018-10-18 | 2018-10-24 19:00 → 2018-10-24 |  |  | constraint must finish on 2018-10-24 19:00 → must finish on 2018-10-24; baseline start 2018-10-18 12:00 → 2018-10-18; baseline finish 2018-10-24 19:00 → 2018-10-24 |
| 16 | **[V2]Diseño e implementación b.objetos (1/10)** | 2018-10-11 09:00 A → 2018-10-11 A | 2018-10-11 12:30 A → 2018-10-11 A |  |  | baseline start 2018-10-11 09:00 → 2018-10-11; baseline finish 2018-10-11 12:30 → 2018-10-11 |
| 17 | Investigacion | 2018-10-11 09:00 A → 2018-10-11 A | 2018-10-11 12:30 A → 2018-10-11 A |  |  | baseline start 2018-10-11 09:00 → 2018-10-11; baseline finish 2018-10-11 12:30 → 2018-10-11 |
| 18 | Diseño | 2018-10-11 09:00 A → 2018-10-11 A | 2018-10-11 12:30 A → 2018-10-11 A |  |  | baseline start 2018-10-11 09:00 → 2018-10-11; baseline finish 2018-10-11 12:30 → 2018-10-11 |
| 19 | **[TDS]Realizar sonidos para el juego (1/7)** | 2018-10-11 09:00 A → 2018-10-11 A | 2018-10-11 11:51 A → 2018-10-11 A |  |  | baseline start 2018-10-11 09:00 → 2018-10-11; baseline finish 2018-10-11 11:51 → 2018-10-11 |
| 20 | Síntesis | 2018-10-11 09:00 A → 2018-10-11 A | 2018-10-11 11:51 A → 2018-10-11 A |  |  | baseline start 2018-10-11 09:00 → 2018-10-11; baseline finish 2018-10-11 11:51 → 2018-10-11 |
| 21 | Grabaciones propias | 2018-10-11 09:00 A → 2018-10-11 A | 2018-10-11 11:51 A → 2018-10-11 A |  |  | baseline start 2018-10-11 09:00 → 2018-10-11; baseline finish 2018-10-11 11:51 → 2018-10-11 |
| 22 | Sonidos externos | 2018-10-11 09:00 A → 2018-10-11 A | 2018-10-11 11:51 A → 2018-10-11 A |  |  | baseline start 2018-10-11 09:00 → 2018-10-11; baseline finish 2018-10-11 11:51 → 2018-10-11 |
| 23 | Música | 2018-10-11 09:00 A → 2018-10-11 A | 2018-10-11 11:51 A → 2018-10-11 A |  |  | baseline start 2018-10-11 09:00 → 2018-10-11; baseline finish 2018-10-11 11:51 → 2018-10-11 |
| 24 | Cue Sheet | 2018-10-11 09:00 A → 2018-10-11 A | 2018-10-11 10:25 A → 2018-10-11 A |  |  | baseline start 2018-10-11 09:00 → 2018-10-11; baseline finish 2018-10-11 10:25 → 2018-10-11 |
| 25 | Hoja de metadatos | 2018-10-11 09:00 A → 2018-10-11 A | 2018-10-11 10:25 A → 2018-10-11 A |  |  | baseline start 2018-10-11 09:00 → 2018-10-11; baseline finish 2018-10-11 10:25 → 2018-10-11 |
| 26 | Integración del motor de audio en el juego con prueba de concepto | 2018-10-11 09:00 A → 2018-10-11 A | 2018-10-11 11:51 A → 2018-10-11 A |  |  | baseline start 2018-10-11 09:00 → 2018-10-11; baseline finish 2018-10-11 11:51 → 2018-10-11 |
| 27 | [RV]Boceto de los personajes (1/2) | 2018-10-11 09:00 A → 2018-10-11 A | 2018-10-12 18:00 A → 2018-10-12 A |  |  | constraint must finish on 2018-10-24 19:00 → must finish on 2018-10-24; baseline start 2018-10-11 09:00 → 2018-10-11; baseline finish 2018-10-12 18:00 → 2018-10-12 |
| 28 | [PD]Vídeo con animación del logo de la empresa (1/2) | 2018-10-11 09:00 A → 2018-10-11 A | 2018-10-16 17:00 A → 2018-10-16 A |  |  | constraint must finish on 2018-10-24 19:00 → must finish on 2018-10-24; baseline start 2018-10-11 09:00 → 2018-10-11; baseline finish 2018-10-16 17:00 → 2018-10-16 |
| 29 | [PM]Registrar tiempos y % de realización de tareas en Project | 2018-10-24 18:00 A → 2018-10-24 A | 2018-10-24 19:00 A → 2018-10-24 A |  |  | constraint must finish on 2018-10-24 19:00 → must finish on 2018-10-24; baseline start 2018-10-24 18:00 → 2018-10-24; baseline finish 2018-10-24 19:00 → 2018-10-24 |
| 30 | **Iteracion 4** | 2018-10-25 09:00 A → 2018-10-25 A | 2018-11-07 09:48 → 2018-11-07 |  |  | constraint start no earlier than 2018-10-25 09:00 → start no earlier than 2018-10-25; baseline start 2018-10-25 09:00 → 2018-10-25; baseline finish 2018-11-07 09:48 → 2018-11-07 |
| 31 | [v1] Documento de diseño de toma de decision: espacio y metodos (1/2) | 2018-10-25 09:00 A → 2018-10-25 A | 2018-10-25 13:00 A → 2018-10-25 A |  |  | baseline start 2018-10-25 09:00 → 2018-10-25; baseline finish 2018-10-25 13:00 → 2018-10-25 |
| 32 | [V1]Documento de diseño técnico del motor de IA (1/2) | 2018-10-31 09:00 A → 2018-10-31 A | 2018-10-31 19:00 A → 2018-10-31 A |  |  | baseline start 2018-10-31 09:00 → 2018-10-31; baseline finish 2018-10-31 19:00 → 2018-10-31 |
| 33 | **[V1]Sistema de toma de decisión con Behaviour Trees (1/2)** | 2018-10-29 09:00 A → 2018-10-29 A | 2018-10-30 18:00 A → 2018-10-30 A |  |  | baseline start 2018-10-29 09:00 → 2018-10-29; baseline finish 2018-10-30 18:00 → 2018-10-30 |
| 34 | Investigacion | 2018-10-29 09:00 A → 2018-10-29 A | 2018-10-30 11:00 A → 2018-10-30 A |  |  | constraint start no earlier than 2018-10-27 09:00 → start no earlier than 2018-10-27; baseline start 2018-10-29 09:00 → 2018-10-29; baseline finish 2018-10-30 11:00 → 2018-10-30 |
| 35 | Diseño | 2018-10-30 11:00 A → 2018-10-30 A | 2018-10-30 18:00 A → 2018-10-30 A |  |  | baseline start 2018-10-30 11:00 → 2018-10-30; baseline finish 2018-10-30 18:00 → 2018-10-30 |
| 36 | Implementar | 2018-10-30 18:00 A → 2018-10-30 A | 2018-10-30 18:00 A → 2018-10-30 A |  |  | baseline start 2018-10-30 18:00 → 2018-10-30; baseline finish 2018-10-30 18:00 → 2018-10-30 |
| 37 | [V1]Documento de diseño de mecánicas de los NPCs 2/2 | 2018-10-25 09:00 A → 2018-10-25 A | 2018-10-29 17:00 A → 2018-10-29 A |  |  | constraint finish no later than 2018-11-07 19:00 → finish no later than 2018-11-07; baseline start 2018-10-25 09:00 → 2018-10-25; baseline finish 2018-10-29 17:00 → 2018-10-29 |
| 38 | **[V2]Diseño e implementación b.objetos (2/10)** | 2018-10-30 09:00 A → 2018-10-30 A | 2018-10-30 18:00 A → 2018-10-30 A |  |  | constraint finish no later than 2018-11-07 19:00 → finish no later than 2018-11-07; baseline start 2018-10-30 09:00 → 2018-10-30; baseline finish 2018-10-30 18:00 → 2018-10-30 |
| 39 | Diseño | 2018-10-30 09:00 A → 2018-10-30 A | 2018-10-30 11:00 A → 2018-10-30 A |  |  | constraint start no earlier than 2018-10-30 09:00 → start no earlier than 2018-10-30; baseline start 2018-10-30 09:00 → 2018-10-30; baseline finish 2018-10-30 11:00 → 2018-10-30 |
| 40 | Implementacion | 2018-10-30 11:00 A → 2018-10-30 A | 2018-10-30 18:00 A → 2018-10-30 A |  |  | baseline start 2018-10-30 11:00 → 2018-10-30; baseline finish 2018-10-30 18:00 → 2018-10-30 |
| 41 | **[v2]Diseño e implementacion b.componentes 1** | 2018-10-31 09:00 A → 2018-10-31 A | 2018-11-01 11:00 A → 2018-11-01 A |  |  | constraint finish no later than 2018-11-07 19:00 → finish no later than 2018-11-07; baseline start 2018-10-31 09:00 → 2018-10-31; baseline finish 2018-11-01 11:00 → 2018-11-01 |
| 42 | Investigar | 2018-10-31 09:00 A → 2018-10-31 A | 2018-10-31 16:00 A → 2018-10-31 A |  |  | constraint start no earlier than 2018-10-31 09:00 → start no earlier than 2018-10-31; baseline start 2018-10-31 09:00 → 2018-10-31; baseline finish 2018-10-31 16:00 → 2018-10-31 |
| 43 | Diseñar | 2018-10-31 16:00 A → 2018-10-31 A | 2018-11-01 11:00 A → 2018-11-01 A |  |  | baseline start 2018-10-31 16:00 → 2018-10-31; baseline finish 2018-11-01 11:00 → 2018-11-01 |
| 44 | [v2]Utilización de joints en las mecánicas jugables (1/2) | 2018-10-25 09:00 A → 2018-10-25 A | 2018-10-25 13:00 A → 2018-10-25 A |  |  | baseline start 2018-10-25 09:00 → 2018-10-25; baseline finish 2018-10-25 13:00 → 2018-10-25 |
| 45 | [V2]Mecánicas básicas entidades sin IA | 2018-10-25 15:00 → 2018-10-25 | 2018-10-25 16:00 → 2018-10-25 |  |  | constraint finish no later than 2018-11-07 19:00 → finish no later than 2018-11-07; baseline start 2018-10-25 15:00 → 2018-10-25; baseline finish 2018-10-25 16:00 → 2018-10-25 |
| 46 | [RV]Boceto de los personajes 2/3 | 2018-11-02 09:00 A → 2018-11-02 A | 2018-11-05 18:00 A → 2018-11-05 A |  |  | constraint start no earlier than 2018-11-02 09:00 → start no earlier than 2018-11-02; baseline start 2018-11-02 09:00 → 2018-11-02; baseline finish 2018-11-05 18:00 → 2018-11-05 |
| 47 | [PD]Vídeo con animación del logo de la empresa (2/2) | 2018-10-25 09:00 A → 2018-10-25 A | 2018-10-30 17:00 A → 2018-10-30 A |  |  | baseline start 2018-10-25 09:00 → 2018-10-25; baseline finish 2018-10-30 17:00 → 2018-10-30 |
| 48 | **[TDS]Realizar sonidos para el juego 2/7** | 2018-10-25 09:00 A → 2018-10-25 A | 2018-10-25 11:51 A → 2018-10-25 A |  |  | constraint finish no later than 2018-11-07 19:00 → finish no later than 2018-11-07; baseline start 2018-10-25 09:00 → 2018-10-25; baseline finish 2018-10-25 11:51 → 2018-10-25 |
| 49 | Síntesis | 2018-10-25 09:00 A → 2018-10-25 A | 2018-10-25 11:51 A → 2018-10-25 A |  |  | baseline start 2018-10-25 09:00 → 2018-10-25; baseline finish 2018-10-25 11:51 → 2018-10-25 |
| 50 | Grabaciones propias | 2018-10-25 09:00 A → 2018-10-25 A | 2018-10-25 11:51 A → 2018-10-25 A |  |  | baseline start 2018-10-25 09:00 → 2018-10-25; baseline finish 2018-10-25 11:51 → 2018-10-25 |
| 51 | Sonidos externos | 2018-10-25 09:00 A → 2018-10-25 A | 2018-10-25 11:51 A → 2018-10-25 A |  |  | baseline start 2018-10-25 09:00 → 2018-10-25; baseline finish 2018-10-25 11:51 → 2018-10-25 |
| 52 | Música | 2018-10-25 09:00 A → 2018-10-25 A | 2018-10-25 11:51 A → 2018-10-25 A |  |  | baseline start 2018-10-25 09:00 → 2018-10-25; baseline finish 2018-10-25 11:51 → 2018-10-25 |
| 53 | Cue Sheet | 2018-10-25 09:00 A → 2018-10-25 A | 2018-10-25 10:25 A → 2018-10-25 A |  |  | baseline start 2018-10-25 09:00 → 2018-10-25; baseline finish 2018-10-25 10:25 → 2018-10-25 |
| 54 | Hoja de metadatos | 2018-10-25 09:00 A → 2018-10-25 A | 2018-10-25 10:25 A → 2018-10-25 A |  |  | baseline start 2018-10-25 09:00 → 2018-10-25; baseline finish 2018-10-25 10:25 → 2018-10-25 |
| 55 | Integración del motor de audio en el juego con prueba de concepto | 2018-10-25 09:00 A → 2018-10-25 A | 2018-10-25 11:51 A → 2018-10-25 A |  |  | baseline start 2018-10-25 09:00 → 2018-10-25; baseline finish 2018-10-25 11:51 → 2018-10-25 |
| 56 | [PM]Registrar tiempos y % de realización de tareas en Project | 2018-11-07 09:00 A → 2018-11-07 A | 2018-11-07 09:48 A → 2018-11-07 A |  |  | constraint start no earlier than 2018-11-07 09:00 → start no earlier than 2018-11-07; baseline start 2018-11-07 09:00 → 2018-11-07; baseline finish 2018-11-07 09:48 → 2018-11-07 |
| 57 | [PM]Rellenar documento Gestión de riesgos | 2018-11-02 09:00 A → 2018-11-02 A | 2018-11-06 18:02 A → 2018-11-06 A |  |  | constraint start no earlier than 2018-11-02 09:00 → start no earlier than 2018-11-02; baseline start 2018-11-02 09:00 → 2018-11-02; baseline finish 2018-11-06 18:02 → 2018-11-06 |
| 58 | **Iteracion 5** | 2018-11-08 09:00 A → 2018-11-08 A | 2018-11-21 19:00 → 2018-11-21 A | 59% → 100% | 118d → none | constraint start no earlier than 2018-11-08 09:00 → start no earlier than 2018-11-08; baseline start 2018-11-08 09:00 → 2018-11-08; baseline finish 2018-11-21 19:00 → 2018-11-21 |
| 59 | [RV]Boceto de los personajes 3/3 | 2018-11-08 09:00 A → 2018-11-08 A | 2018-11-08 13:00 A → 2018-11-08 A |  |  | baseline start 2018-11-08 09:00 → 2018-11-08; baseline finish 2018-11-08 13:00 → 2018-11-08 |
| 60 | [v1] Documento de diseño de toma de decision: espacio y metodos (2/2) | 2018-11-08 09:00 A → 2018-11-08 A | 2018-11-13 13:00 A → 2018-11-13 A |  |  | baseline start 2018-11-08 09:00 → 2018-11-08; baseline finish 2018-11-13 13:00 → 2018-11-13 |
| 61 | [V1]Documento de diseño técnico del motor de IA (2/2) | 2018-11-09 09:00 A → 2018-11-09 A | 2018-11-14 16:00 A → 2018-11-14 A |  |  | constraint start no earlier than 2018-11-09 09:00 → start no earlier than 2018-11-09; baseline start 2018-11-09 09:00 → 2018-11-09; baseline finish 2018-11-14 16:00 → 2018-11-14 |
| 62 | [V1]Sistema de toma de decisión con Behaviour Trees (3/2) (investigacion y diseño) | 2018-11-09 09:00 A → 2018-11-09 A | 2018-11-15 13:00 → 2018-11-15 A | 75% → 100% | 122.5d → none | was named [V1]Sistema de toma de decisión con Behaviour Trees (2/2); constraint start no earlier than 2018-11-09 09:00 → start no earlier than 2018-11-09; baseline start 2018-11-09 09:00 → 2018-11-09; baseline finish 2018-11-15 13:00 → 2018-11-15 |
| 63 | [v2]Utilización de joints en las mecánicas jugables (2/2) | 2018-11-09 09:00 → 2018-11-09 A | 2018-11-12 16:00 → 2018-11-12 A | 0% → 100% | 125.38d → none | constraint start no earlier than 2018-11-09 09:00 → start no earlier than 2018-11-09; baseline start 2018-11-09 09:00 → 2018-11-09; baseline finish 2018-11-12 16:00 → 2018-11-12 |
| 64 | [V2]Mecánicas básicas entidades sin IA | 2018-11-08 09:00 A → 2018-11-08 A | 2018-11-15 19:00 → 2018-11-15 A | 50% → 100% | 122d → none | baseline start 2018-11-08 09:00 → 2018-11-08; baseline finish 2018-11-15 19:00 → 2018-11-15 |
| 65 | [PM]Detallar plan iteraciones del mes de Noviembre. Creación Subtareas y precedencias en Project | 2018-11-08 09:00 A → 2018-11-08 A | 2018-11-12 18:24 A → 2018-11-12 A |  |  | baseline start 2018-11-08 09:00 → 2018-11-08; baseline finish 2018-11-12 18:24 → 2018-11-12 |
| 66 | [PM]Detallar plan iteraciones del mes de Noviembre. Asignar recursos a las tareas en Project | 2018-11-12 18:24 A → 2018-11-12 A | 2018-11-15 17:24 A → 2018-11-15 A |  |  | baseline start 2018-11-12 18:24 → 2018-11-12; baseline finish 2018-11-15 17:24 → 2018-11-15 |
| 67 | [PM]Aplicar el modelo EVA en Project | 2018-11-16 09:00 → 2018-11-16 A | 2018-11-20 16:36 → 2018-11-20 A | 0% → 100% | 119.3d → none | constraint start no earlier than 2018-11-16 09:00 → start no earlier than 2018-11-16; baseline start 2018-11-16 09:00 → 2018-11-16; baseline finish 2018-11-20 16:36 → 2018-11-20 |
| 68 | [RV]Bocetos de los elementos | 2018-11-16 09:00 → 2018-11-16 A | 2018-11-20 11:00 → 2018-11-20 A | 0% → 100% | 119.75d → none | constraint start no earlier than 2018-11-16 09:00 → start no earlier than 2018-11-16; baseline start 2018-11-16 09:00 → 2018-11-16; baseline finish 2018-11-20 11:00 → 2018-11-20 |
| 69 | **[V2]Diseño e implementación b.objetos (3/10)** | 2018-11-15 09:00 → 2018-11-15 A | 2018-11-15 18:00 → 2018-11-15 A | 0% → 100% | 122.12d → none | baseline start 2018-11-15 09:00 → 2018-11-15; baseline finish 2018-11-15 18:00 → 2018-11-15 |
| 70 | Implementacion | 2018-11-15 09:00 → 2018-11-15 A | 2018-11-15 18:00 → 2018-11-15 A | 0% → 100% | 122.12d → none | constraint start no earlier than 2018-11-15 09:00 → start no earlier than 2018-11-15; baseline start 2018-11-15 09:00 → 2018-11-15; baseline finish 2018-11-15 18:00 → 2018-11-15 |

| ID | Task | Start | Finish | Duration | Complete | Total float | Other |
| --- | --- | --- | --- | --- | --- | --- | --- |
| 71 | [v2]Diseño e implementacion b.componentes 2 | 2018-11-15 09:00 → 2018-11-15 A | 2018-11-16 11:00 → 2018-11-16 A |  | 0% → 100% | 121.75d → none | constraint start no earlier than 2018-11-15 09:00 → start no earlier than 2018-11-15; baseline start 2018-11-15 09:00 → 2018-11-15; baseline finish 2018-11-16 11:00 → 2018-11-16 |
| 72 | [v2]Formato propio para la definicion de los niveles(documentos con la especifiacion del formato) | 2018-11-13 09:00 A → 2018-11-13 A | 2018-11-14 12:00 A → 2018-11-14 A |  |  |  | constraint start no earlier than 2018-11-13 09:00 → start no earlier than 2018-11-13; baseline start 2018-11-13 09:00 → 2018-11-13; baseline finish 2018-11-14 12:00 → 2018-11-14 |
| 73 | [V2]Creación de un cargador de niveles | 2018-11-14 12:00 A → 2018-11-14 A | 2018-11-19 18:00 → 2018-11-19 A |  | 25% → 100% | 120.12d → none | baseline start 2018-11-14 12:00 → 2018-11-14; baseline finish 2018-11-19 18:00 → 2018-11-19 |
| 74 | [v2]Implementacion de camara de seguimiento | 2018-11-16 09:00 A → 2018-11-16 A | 2018-11-20 10:00 → 2018-11-20 A |  | 25% → 100% | 119.88d → none | constraint start no earlier than 2018-11-16 09:00 → start no earlier than 2018-11-16; baseline start 2018-11-16 09:00 → 2018-11-16; baseline finish 2018-11-20 10:00 → 2018-11-20 |
| 75 | **[TDS]Realizar sonidos para el juego 3/7** | 2018-11-08 09:00 A → 2018-11-08 A | 2018-11-08 11:51 A → 2018-11-08 A |  |  |  | baseline start 2018-11-08 09:00 → 2018-11-08; baseline finish 2018-11-08 11:51 → 2018-11-08 |
| 76 | Síntesis | 2018-11-08 09:00 A → 2018-11-08 A | 2018-11-08 11:51 A → 2018-11-08 A |  |  |  | baseline start 2018-11-08 09:00 → 2018-11-08; baseline finish 2018-11-08 11:51 → 2018-11-08 |
| 77 | Grabaciones propias | 2018-11-08 09:00 A → 2018-11-08 A | 2018-11-08 11:51 A → 2018-11-08 A |  |  |  | baseline start 2018-11-08 09:00 → 2018-11-08; baseline finish 2018-11-08 11:51 → 2018-11-08 |
| 78 | Sonidos externos | 2018-11-08 09:00 A → 2018-11-08 A | 2018-11-08 11:51 A → 2018-11-08 A |  |  |  | baseline start 2018-11-08 09:00 → 2018-11-08; baseline finish 2018-11-08 11:51 → 2018-11-08 |
| 79 | Música | 2018-11-08 09:00 A → 2018-11-08 A | 2018-11-08 11:51 A → 2018-11-08 A |  |  |  | baseline start 2018-11-08 09:00 → 2018-11-08; baseline finish 2018-11-08 11:51 → 2018-11-08 |
| 80 | Cue Sheet | 2018-11-08 09:00 A → 2018-11-08 A | 2018-11-08 10:25 A → 2018-11-08 A |  |  |  | baseline start 2018-11-08 09:00 → 2018-11-08; baseline finish 2018-11-08 10:25 → 2018-11-08 |
| 81 | Hoja de metadatos | 2018-11-08 09:00 A → 2018-11-08 A | 2018-11-08 10:25 A → 2018-11-08 A |  |  |  | baseline start 2018-11-08 09:00 → 2018-11-08; baseline finish 2018-11-08 10:25 → 2018-11-08 |
| 82 | Integración del motor de audio en el juego con prueba de concepto | 2018-11-08 09:00 A → 2018-11-08 A | 2018-11-08 11:51 A → 2018-11-08 A |  |  |  | baseline start 2018-11-08 09:00 → 2018-11-08; baseline finish 2018-11-08 11:51 → 2018-11-08 |
| 83 | [PM]Registrar tiempos y % de realización de tareas en Project | 2018-11-21 18:12 A → 2018-11-21 A | 2018-11-21 19:00 A → 2018-11-21 A |  |  |  | constraint finish no earlier than 2018-11-21 19:00 → finish no earlier than 2018-11-21; baseline start 2018-11-21 18:12 → 2018-11-21; baseline finish 2018-11-21 19:00 → 2018-11-21 |
| 84 | **Iteracion 6** | 2018-11-22 09:00 → 2018-11-22 | 2018-12-06 10:00 → 2018-12-05 (-1d) | 10.12d → 9.75d |  |  | constraint start no earlier than 2018-11-22 09:00 → start no earlier than 2018-11-22; baseline start 2018-11-22 09:00 → 2018-11-22; baseline finish 2018-12-06 10:00 → 2018-12-06 |
| 86 | **[V1]Sistema de percepción sensorial (vista, oído, olfato, canales…)** | 2018-11-26 09:00 → 2018-11-22 (-4d) | 2018-12-03 17:00 → 2018-11-29 (-4d) |  |  | 110.25d → 109.75d | constraint start no earlier than 2018-11-24 09:00 → none; resources none → Jose Vicente Anton Coy [50%]; David Ramón Sevilla [50%]; baseline start 2018-11-26 09:00 → 2018-11-26; baseline finish 2018-12-03 17:00 → 2018-12-03 |
| 87 | Investigacion | 2018-11-26 09:00 → 2018-11-22 (-4d) | 2018-11-27 19:00 → 2018-11-23 (-4d) |  |  | 110.25d → 109.75d | constraint none → start no earlier than 2018-11-22; baseline start 2018-11-26 09:00 → 2018-11-26; baseline finish 2018-11-27 19:00 → 2018-11-27 |
| 88 | Diseño | 2018-11-28 09:00 → 2018-11-26 (-2d) | 2018-11-28 17:00 → 2018-11-26 (-2d) |  |  | 110.25d → 109.75d | baseline start 2018-11-28 09:00 → 2018-11-28; baseline finish 2018-11-28 17:00 → 2018-11-28 |
| 89 | Implementar | 2018-11-28 17:00 → 2018-11-26 (-2d) | 2018-12-03 17:00 → 2018-11-29 (-4d) |  |  | 110.25d → 109.75d | baseline start 2018-11-28 17:00 → 2018-11-28; baseline finish 2018-12-03 17:00 → 2018-12-03 |
| 91 | [v2]Control del player: movimiento y colisiones sin motor de físicas | 2018-11-22 09:00 → 2018-11-22 | 2018-11-28 19:00 → 2018-11-28 |  |  |  | resources none → María Sánchez Marqués [50%]; Jose Ramon Barea Cecilia [50%]; baseline start 2018-11-22 09:00 → 2018-11-22; baseline finish 2018-11-28 19:00 → 2018-11-28 |
| 92 | [V2]Utilización de propiedades físicas en las mecánicas jugables | 2018-11-22 09:00 → 2018-11-29 (+7d) | 2018-11-26 10:00 → 2018-12-03 (+7d) |  |  | 115.88d → 110.88d | constraint none → start no earlier than 2018-11-29; resources none → Jose Ramon Barea Cecilia [50%]; Jose Vicente Anton Coy [50%]; baseline start 2018-11-22 09:00 → 2018-11-22; baseline finish 2018-11-26 10:00 → 2018-11-26 |
| 93 | [RV]Bocetos del entorno | 2018-11-22 09:00 → 2018-11-29 (+7d) | 2018-11-26 11:00 → 2018-12-03 (+7d) |  |  | 115.75d → 110.75d | constraint none → start no earlier than 2018-11-29; resources none → Débora Galdeano González [50%]; María Sánchez Marqués [50%]; baseline start 2018-11-22 09:00 → 2018-11-22; baseline finish 2018-11-26 11:00 → 2018-11-26 |
| 94 | **[TDS]Realizar sonidos para el juego 4/7** | 2018-11-22 09:00 → 2018-11-22 | 2018-11-22 11:51 → 2018-11-22 |  |  |  | resources none → David Ramón Sevilla [10%]; María Sánchez Marqués [10%]; Débora Galdeano González [10%]; Jose Ramon Barea Cecilia [10%]; baseline start 2018-11-22 09:00 → 2018-11-22; baseline finish 2018-11-22 11:51 → 2018-11-22 |
| 95 | Síntesis | 2018-11-22 09:00 → 2018-11-22 | 2018-11-22 11:51 → 2018-11-22 |  |  |  | baseline start 2018-11-22 09:00 → 2018-11-22; baseline finish 2018-11-22 11:51 → 2018-11-22 |
| 96 | Grabaciones propias | 2018-11-22 09:00 → 2018-11-22 | 2018-11-22 11:51 → 2018-11-22 |  |  |  | baseline start 2018-11-22 09:00 → 2018-11-22; baseline finish 2018-11-22 11:51 → 2018-11-22 |
| 97 | Sonidos externos | 2018-11-22 09:00 → 2018-11-22 | 2018-11-22 11:51 → 2018-11-22 |  |  |  | baseline start 2018-11-22 09:00 → 2018-11-22; baseline finish 2018-11-22 11:51 → 2018-11-22 |
| 98 | Música | 2018-11-22 09:00 → 2018-11-22 | 2018-11-22 11:51 → 2018-11-22 |  |  |  | baseline start 2018-11-22 09:00 → 2018-11-22; baseline finish 2018-11-22 11:51 → 2018-11-22 |
| 99 | Cue Sheet | 2018-11-22 09:00 → 2018-11-22 | 2018-11-22 10:25 → 2018-11-22 |  |  |  | baseline start 2018-11-22 09:00 → 2018-11-22; baseline finish 2018-11-22 10:25 → 2018-11-22 |
| 100 | Hoja de metadatos | 2018-11-22 09:00 → 2018-11-22 | 2018-11-22 10:25 → 2018-11-22 |  |  |  | baseline start 2018-11-22 09:00 → 2018-11-22; baseline finish 2018-11-22 10:25 → 2018-11-22 |
| 101 | Integración del motor de audio en el juego con prueba de concepto | 2018-11-22 09:00 → 2018-11-22 | 2018-11-22 11:51 → 2018-11-22 |  |  |  | baseline start 2018-11-22 09:00 → 2018-11-22; baseline finish 2018-11-22 11:51 → 2018-11-22 |
| 102 | [V1]Sistema de distribución central de tiempo de proceso (Scheduling) | 2018-11-22 09:00 → 2018-11-27 (+5d) | 2018-11-29 10:00 → 2018-12-04 (+5d) |  |  | 107.88d → 104.5d | constraint none → start no earlier than 2018-11-27; baseline start 2018-11-22 09:00 → 2018-11-22; baseline finish 2018-11-29 10:00 → 2018-11-29 |
| 103 | [V2]Diseño e implementación b.objetos (4/10) | 2018-11-22 09:00 → 2018-11-22 | 2018-11-22 18:00 → 2018-11-22 |  |  |  | resources none → Todos [5%]; baseline start 2018-11-22 09:00 → 2018-11-22; baseline finish 2018-11-22 18:00 → 2018-11-22 |
| 104 | [v2]Diseño e implementacion b.componentes 3 | 2018-11-22 09:00 → 2018-11-22 | 2018-11-23 11:00 → 2018-11-23 |  |  |  | resources none → Todos [5%]; baseline start 2018-11-22 09:00 → 2018-11-22; baseline finish 2018-11-23 11:00 → 2018-11-23 |
| 105 | [V2]Uso de trazado de rayos y otros tests de las físicas | 2018-11-22 09:00 → 2018-11-30 (+8d) | 2018-11-26 10:00 → 2018-12-04 (+8d) |  |  | 115.88d → 109.38d | constraint none → start no earlier than 2018-11-30; baseline start 2018-11-22 09:00 → 2018-11-22; baseline finish 2018-11-26 10:00 → 2018-11-26 |
| 106 | [V2]Mecánicas de acción | 2018-11-22 09:00 → 2018-11-30 (+8d) | 2018-11-27 17:00 → 2018-12-05 (+8d) |  |  | 114.25d → 108.25d | constraint none → start no earlier than 2018-11-29; baseline start 2018-11-22 09:00 → 2018-11-22; baseline finish 2018-11-27 17:00 → 2018-11-27 |
| 108 | [PM]Registrar tiempos y % de realización de tareas en Project | 2018-12-04 18:12 → 2018-12-04 | 2018-12-04 19:00 → 2018-12-04 |  |  |  | constraint finish no earlier than 2018-12-04 19:00 → finish no earlier than 2018-12-04; baseline start 2018-12-04 18:12 → 2018-12-04; baseline finish 2018-12-04 19:00 → 2018-12-04 |
| 109 | **Iteracion 7** | 2018-12-06 09:00 → 2018-12-06 | 2018-12-17 13:00 → 2018-12-17 |  |  |  | constraint start no earlier than 2018-12-06 09:00 → start no earlier than 2018-12-06; baseline start 2018-12-06 09:00 → 2018-12-06; baseline finish 2018-12-17 13:00 → 2018-12-17 |
| 110 | [PM]Detallar plan iteraciones del mes de Diciembre. Creación Subtareas y precedencias en Project | 2018-12-06 09:00 → 2018-12-06 | 2018-12-10 18:02 → 2018-12-10 |  |  |  | baseline start 2018-12-06 09:00 → 2018-12-06; baseline finish 2018-12-10 18:02 → 2018-12-10 |
| 111 | [PM]Detallar plan iteraciones del mes de Diciembre. Asignar recursos a las tareas en Project | 2018-12-10 18:02 → 2018-12-10 | 2018-12-13 17:04 → 2018-12-13 |  |  |  | baseline start 2018-12-10 18:02 → 2018-12-10; baseline finish 2018-12-13 17:04 → 2018-12-13 |
| 112 | [PD]Cartel juego/proyecto | 2018-12-06 09:00 → 2018-12-06 | 2018-12-17 13:00 → 2018-12-17 |  |  |  | baseline start 2018-12-06 09:00 → 2018-12-06; baseline finish 2018-12-17 13:00 → 2018-12-17 |
| 113 | [v1]Gestión de recursos de IA con Level-of-Detail (LoD) | 2018-11-29 10:00 → 2018-12-06 (+7d) | 2018-12-06 10:00 → 2018-12-12 (+6d) |  |  | 107.88d → 103d | baseline start 2018-11-29 10:00 → 2018-11-29; baseline finish 2018-12-06 10:00 → 2018-12-06 |
| 114 | **[TDS]Realizar sonidos para el juego 5/7** | 2018-12-06 09:00 → 2018-12-06 | 2018-12-06 11:51 → 2018-12-06 |  |  |  | baseline start 2018-12-06 09:00 → 2018-12-06; baseline finish 2018-12-06 11:51 → 2018-12-06 |
| 115 | Síntesis | 2018-12-06 09:00 → 2018-12-06 | 2018-12-06 11:51 → 2018-12-06 |  |  |  | baseline start 2018-12-06 09:00 → 2018-12-06; baseline finish 2018-12-06 11:51 → 2018-12-06 |
| 116 | Grabaciones propias | 2018-12-06 09:00 → 2018-12-06 | 2018-12-06 11:51 → 2018-12-06 |  |  |  | baseline start 2018-12-06 09:00 → 2018-12-06; baseline finish 2018-12-06 11:51 → 2018-12-06 |
| 117 | Sonidos externos | 2018-12-06 09:00 → 2018-12-06 | 2018-12-06 11:51 → 2018-12-06 |  |  |  | baseline start 2018-12-06 09:00 → 2018-12-06; baseline finish 2018-12-06 11:51 → 2018-12-06 |
| 118 | Música | 2018-12-06 09:00 → 2018-12-06 | 2018-12-06 11:51 → 2018-12-06 |  |  |  | baseline start 2018-12-06 09:00 → 2018-12-06; baseline finish 2018-12-06 11:51 → 2018-12-06 |
| 119 | Cue Sheet | 2018-12-06 09:00 → 2018-12-06 | 2018-12-06 10:25 → 2018-12-06 |  |  |  | baseline start 2018-12-06 09:00 → 2018-12-06; baseline finish 2018-12-06 10:25 → 2018-12-06 |
| 120 | Hoja de metadatos | 2018-12-06 09:00 → 2018-12-06 | 2018-12-06 10:25 → 2018-12-06 |  |  |  | baseline start 2018-12-06 09:00 → 2018-12-06; baseline finish 2018-12-06 10:25 → 2018-12-06 |
| 121 | Integración del motor de audio en el juego con prueba de concepto | 2018-12-06 09:00 → 2018-12-06 | 2018-12-06 11:51 → 2018-12-06 |  |  |  | baseline start 2018-12-06 09:00 → 2018-12-06; baseline finish 2018-12-06 11:51 → 2018-12-06 |
| 122 | [V2]Diseño e implementación b.objetos (5/10) | 2018-12-06 09:00 → 2018-12-06 | 2018-12-06 18:00 → 2018-12-06 |  |  |  | baseline start 2018-12-06 09:00 → 2018-12-06; baseline finish 2018-12-06 18:00 → 2018-12-06 |
| 123 | [v2]Diseño e implementacion b.componentes 5 | 2018-12-06 09:00 → 2018-12-06 | 2018-12-07 11:00 → 2018-12-07 |  |  |  | constraint start no earlier than 2018-11-26 09:00 → start no earlier than 2018-11-26; baseline start 2018-12-06 09:00 → 2018-12-06; baseline finish 2018-12-07 11:00 → 2018-12-07 |
| 124 | [v2]Mecanicas de puzzle | 2018-12-06 09:00 → 2018-12-06 | 2018-12-11 19:00 → 2018-12-11 |  |  |  | baseline start 2018-12-06 09:00 → 2018-12-06; baseline finish 2018-12-11 19:00 → 2018-12-11 |
| 125 | [V2]Mecánicas de rol | 2018-12-06 09:00 → 2018-12-06 | 2018-12-11 17:00 → 2018-12-11 |  |  |  | baseline start 2018-12-06 09:00 → 2018-12-06; baseline finish 2018-12-11 17:00 → 2018-12-11 |
| 126 | [v2]Uso de sistema de depuración visual de las físicas | 2018-12-06 09:00 → 2018-12-06 | 2018-12-07 11:00 → 2018-12-07 |  |  |  | baseline start 2018-12-06 09:00 → 2018-12-06; baseline finish 2018-12-07 11:00 → 2018-12-07 |
| 127 | [v2]Power-ups y elementos adicionales | 2018-12-06 09:00 → 2018-12-06 | 2018-12-11 13:00 → 2018-12-11 |  |  |  | baseline start 2018-12-06 09:00 → 2018-12-06; baseline finish 2018-12-11 13:00 → 2018-12-11 |
| 128 | [PM]Comparar la planificación prevista y real en Project hito 1 | 2018-10-01 09:00 → 2018-10-01 | 2018-10-03 16:36 → 2018-10-03 |  |  |  | baseline start 2018-10-01 09:00 → 2018-10-01; baseline finish 2018-10-03 16:36 → 2018-10-03 |
| 129 | [PM]Confeccionar Informes de iteración e informe resumen de Hito 1 | 2018-10-03 16:36 → 2018-10-03 | 2018-10-08 12:12 → 2018-10-08 |  |  |  | baseline start 2018-10-03 16:36 → 2018-10-03; baseline finish 2018-10-08 12:12 → 2018-10-08 |
| 130 | [PM]Elaborar la presentación del Hito 1 | 2018-10-08 12:12 → 2018-10-08 | 2018-10-10 10:36 → 2018-10-10 |  |  |  | baseline start 2018-10-08 12:12 → 2018-10-08; baseline finish 2018-10-10 10:36 → 2018-10-10 |
| 131 | [PM]Exponer la presentación del Hito 1 | 2018-10-10 10:36 → 2018-10-10 | 2018-10-11 19:00 → 2018-10-11 |  |  |  | baseline start 2018-10-10 10:36 → 2018-10-10; baseline finish 2018-10-11 19:00 → 2018-10-11 |
| 132 | Versión Alpha de mecánicas | 2018-12-22 09:00 → 2018-12-22 | 2018-12-22 09:00 → 2018-12-22 |  |  |  | constraint start no earlier than 2018-12-22 09:00 → start no earlier than 2018-12-22; baseline start 2018-12-22 09:00 → 2018-12-22; baseline finish 2018-12-22 09:00 → 2018-12-22 |
| 133 | **Hito 2** | 2018-12-24 09:00 → 2018-12-24 | 2019-01-14 11:00 → 2019-01-14 |  |  |  | baseline start 2018-12-24 09:00 → 2018-12-24; baseline finish 2019-01-14 11:00 → 2019-01-14 |
| 134 | **Navidad** | 2018-12-24 09:00 → 2018-12-24 | 2018-12-25 11:00 → 2018-12-25 |  |  |  | constraint start no earlier than 2018-12-22 09:00 → start no earlier than 2018-12-22; baseline start 2018-12-24 09:00 → 2018-12-24; baseline finish 2018-12-25 11:00 → 2018-12-25 |
| 135 | [V2]Diseño e implementación b.objetos (6/10) | 2018-12-24 09:00 → 2018-12-24 | 2018-12-24 18:00 → 2018-12-24 |  |  |  | baseline start 2018-12-24 09:00 → 2018-12-24; baseline finish 2018-12-24 18:00 → 2018-12-24 |
| 136 | [v2]Diseño e implementacion b.componentes 6 | 2018-12-24 09:00 → 2018-12-24 | 2018-12-25 11:00 → 2018-12-25 |  |  |  | constraint start no earlier than 2018-12-10 09:00 → start no earlier than 2018-12-10; baseline start 2018-12-24 09:00 → 2018-12-24; baseline finish 2018-12-25 11:00 → 2018-12-25 |
| 137 | **[TDS]Realizar sonidos para el juego 6/7** | 2018-12-24 09:00 → 2018-12-24 | 2018-12-24 11:51 → 2018-12-24 |  |  |  | baseline start 2018-12-24 09:00 → 2018-12-24; baseline finish 2018-12-24 11:51 → 2018-12-24 |
| 138 | Síntesis | 2018-12-24 09:00 → 2018-12-24 | 2018-12-24 11:51 → 2018-12-24 |  |  |  | baseline start 2018-12-24 09:00 → 2018-12-24; baseline finish 2018-12-24 11:51 → 2018-12-24 |
| 139 | Grabaciones propias | 2018-12-24 09:00 → 2018-12-24 | 2018-12-24 11:51 → 2018-12-24 |  |  |  | baseline start 2018-12-24 09:00 → 2018-12-24; baseline finish 2018-12-24 11:51 → 2018-12-24 |
| 140 | Sonidos externos | 2018-12-24 09:00 → 2018-12-24 | 2018-12-24 11:51 → 2018-12-24 |  |  |  | baseline start 2018-12-24 09:00 → 2018-12-24; baseline finish 2018-12-24 11:51 → 2018-12-24 |
| 141 | Música | 2018-12-24 09:00 → 2018-12-24 | 2018-12-24 11:51 → 2018-12-24 |  |  |  | baseline start 2018-12-24 09:00 → 2018-12-24; baseline finish 2018-12-24 11:51 → 2018-12-24 |
| 142 | Cue Sheet | 2018-12-24 09:00 → 2018-12-24 | 2018-12-24 10:25 → 2018-12-24 |  |  |  | baseline start 2018-12-24 09:00 → 2018-12-24; baseline finish 2018-12-24 10:25 → 2018-12-24 |
| 143 | Hoja de metadatos | 2018-12-24 09:00 → 2018-12-24 | 2018-12-24 10:25 → 2018-12-24 |  |  |  | baseline start 2018-12-24 09:00 → 2018-12-24; baseline finish 2018-12-24 10:25 → 2018-12-24 |

| ID | Task | Start | Finish | Other |
| --- | --- | --- | --- | --- |
| 144 | Integración del motor de audio en el juego con prueba de concepto | 2018-12-24 09:00 → 2018-12-24 | 2018-12-24 11:51 → 2018-12-24 | baseline start 2018-12-24 09:00 → 2018-12-24; baseline finish 2018-12-24 11:51 → 2018-12-24 |
| 145 | <Tarea nueva> | 2018-12-24 09:00 → 2018-12-24 | 2018-12-24 19:00 → 2018-12-24 | baseline start 2018-12-24 09:00 → 2018-12-24; baseline finish 2018-12-24 19:00 → 2018-12-24 |
| 146 | **Iteracion 8** | 2019-01-11 09:00 → 2019-01-11 | 2019-01-14 11:00 → 2019-01-14 | constraint start no earlier than 2019-01-11 09:00 → start no earlier than 2019-01-11; baseline start 2019-01-11 09:00 → 2019-01-11; baseline finish 2019-01-14 11:00 → 2019-01-14 |
| 147 | [V2]Diseño e implementación b.objetos (7/10) | 2019-01-11 09:00 → 2019-01-11 | 2019-01-11 18:00 → 2019-01-11 | baseline start 2019-01-11 09:00 → 2019-01-11; baseline finish 2019-01-11 18:00 → 2019-01-11 |
| 148 | [v2]Diseño e implementacion b.componentes 7 | 2019-01-11 09:00 → 2019-01-11 | 2019-01-14 11:00 → 2019-01-14 | constraint start no earlier than 2018-12-24 09:00 → start no earlier than 2018-12-24; baseline start 2019-01-11 09:00 → 2019-01-11; baseline finish 2019-01-14 11:00 → 2019-01-14 |
| 149 | **[TDS]Realizar sonidos para el juego 7/7** | 2019-01-11 09:00 → 2019-01-11 | 2019-01-11 11:51 → 2019-01-11 | baseline start 2019-01-11 09:00 → 2019-01-11; baseline finish 2019-01-11 11:51 → 2019-01-11 |
| 150 | Síntesis | 2019-01-11 09:00 → 2019-01-11 | 2019-01-11 11:51 → 2019-01-11 | baseline start 2019-01-11 09:00 → 2019-01-11; baseline finish 2019-01-11 11:51 → 2019-01-11 |
| 151 | Grabaciones propias | 2019-01-11 09:00 → 2019-01-11 | 2019-01-11 11:51 → 2019-01-11 | baseline start 2019-01-11 09:00 → 2019-01-11; baseline finish 2019-01-11 11:51 → 2019-01-11 |
| 152 | Sonidos externos | 2019-01-11 09:00 → 2019-01-11 | 2019-01-11 11:51 → 2019-01-11 | baseline start 2019-01-11 09:00 → 2019-01-11; baseline finish 2019-01-11 11:51 → 2019-01-11 |
| 153 | Música | 2019-01-11 09:00 → 2019-01-11 | 2019-01-11 11:51 → 2019-01-11 | baseline start 2019-01-11 09:00 → 2019-01-11; baseline finish 2019-01-11 11:51 → 2019-01-11 |
| 154 | Cue Sheet | 2019-01-11 09:00 → 2019-01-11 | 2019-01-11 10:25 → 2019-01-11 | baseline start 2019-01-11 09:00 → 2019-01-11; baseline finish 2019-01-11 10:25 → 2019-01-11 |
| 155 | Hoja de metadatos | 2019-01-11 09:00 → 2019-01-11 | 2019-01-11 10:25 → 2019-01-11 | baseline start 2019-01-11 09:00 → 2019-01-11; baseline finish 2019-01-11 10:25 → 2019-01-11 |
| 156 | Integración del motor de audio en el juego con prueba de concepto | 2019-01-11 09:00 → 2019-01-11 | 2019-01-11 11:51 → 2019-01-11 | baseline start 2019-01-11 09:00 → 2019-01-11; baseline finish 2019-01-11 11:51 → 2019-01-11 |
| 157 | <Tarea nueva> | 2019-01-11 09:00 → 2019-01-11 | 2019-01-11 19:00 → 2019-01-11 | baseline start 2019-01-11 09:00 → 2019-01-11; baseline finish 2019-01-11 19:00 → 2019-01-11 |
| 158 | [PM]Revisar especificación proyecto | 2018-12-24 09:00 → 2018-12-24 | 2018-12-24 19:00 → 2018-12-24 | constraint start no earlier than 2018-12-22 09:00 → start no earlier than 2018-12-22; baseline start 2018-12-24 09:00 → 2018-12-24; baseline finish 2018-12-24 19:00 → 2018-12-24 |
| 159 | [PM]Reestimar proyecto | 2018-12-24 09:00 → 2018-12-24 | 2018-12-24 19:00 → 2018-12-24 | constraint start no earlier than 2018-12-22 09:00 → start no earlier than 2018-12-22; baseline start 2018-12-24 09:00 → 2018-12-24; baseline finish 2018-12-24 19:00 → 2018-12-24 |
| 160 | [PM]Detallar plan iteraciones del mes de Enero. Creación Subtareas y precedencias en Project | 2018-12-24 09:00 → 2018-12-24 | 2018-12-24 19:00 → 2018-12-24 | constraint start no earlier than 2018-12-22 09:00 → start no earlier than 2018-12-22; baseline start 2018-12-24 09:00 → 2018-12-24; baseline finish 2018-12-24 19:00 → 2018-12-24 |
| 161 | [PM]Detallar plan iteraciones del mes de Enero. Asignar recursos a las tareas en Project | 2018-12-24 09:00 → 2018-12-24 | 2018-12-24 19:00 → 2018-12-24 | constraint start no earlier than 2018-12-22 09:00 → start no earlier than 2018-12-22; baseline start 2018-12-24 09:00 → 2018-12-24; baseline finish 2018-12-24 19:00 → 2018-12-24 |
| 162 | [PM]Registrar tiempos y % de realización de tareas en Project | 2018-12-24 09:00 → 2018-12-24 | 2018-12-24 19:00 → 2018-12-24 | constraint start no earlier than 2018-12-22 09:00 → start no earlier than 2018-12-22; baseline start 2018-12-24 09:00 → 2018-12-24; baseline finish 2018-12-24 19:00 → 2018-12-24 |
| 163 | [PM]Comparar la planificación prevista y real en Project hito 2 | 2018-12-24 09:00 → 2018-12-24 | 2018-12-24 19:00 → 2018-12-24 | constraint start no earlier than 2018-12-22 09:00 → start no earlier than 2018-12-22; baseline start 2018-12-24 09:00 → 2018-12-24; baseline finish 2018-12-24 19:00 → 2018-12-24 |
| 164 | [PM]Confeccionar Informes de iteración e informe resumen de Hito 2 | 2018-12-24 09:00 → 2018-12-24 | 2018-12-24 19:00 → 2018-12-24 | constraint start no earlier than 2018-12-22 09:00 → start no earlier than 2018-12-22; baseline start 2018-12-24 09:00 → 2018-12-24; baseline finish 2018-12-24 19:00 → 2018-12-24 |
| 165 | [V1]Sistema de depuración visual in-game de la IA | 2018-12-24 09:00 → 2018-12-24 | 2018-12-24 19:00 → 2018-12-24 | constraint start no earlier than 2018-12-22 09:00 → start no earlier than 2018-12-22; baseline start 2018-12-24 09:00 → 2018-12-24; baseline finish 2018-12-24 19:00 → 2018-12-24 |
| 166 | [V1]Sistema de distribución central de tiempo de proceso (Scheduling) | 2018-12-24 09:00 → 2018-12-24 | 2018-12-24 19:00 → 2018-12-24 | constraint start no earlier than 2018-12-22 09:00 → start no earlier than 2018-12-22; baseline start 2018-12-24 09:00 → 2018-12-24; baseline finish 2018-12-24 19:00 → 2018-12-24 |
| 167 | [V2]Power-ups y elementos adicionales | 2018-12-24 09:00 → 2018-12-24 | 2018-12-24 19:00 → 2018-12-24 | constraint start no earlier than 2018-12-22 09:00 → start no earlier than 2018-12-22; baseline start 2018-12-24 09:00 → 2018-12-24; baseline finish 2018-12-24 19:00 → 2018-12-24 |
| 168 | [V2]Integración de librería para GUI | 2018-12-24 09:00 → 2018-12-24 | 2018-12-24 19:00 → 2018-12-24 | constraint start no earlier than 2018-12-22 09:00 → start no earlier than 2018-12-22; baseline start 2018-12-24 09:00 → 2018-12-24; baseline finish 2018-12-24 19:00 → 2018-12-24 |
| 169 | [V2]Implementación de menús | 2018-12-24 09:00 → 2018-12-24 | 2018-12-24 19:00 → 2018-12-24 | constraint start no earlier than 2018-12-22 09:00 → start no earlier than 2018-12-22; baseline start 2018-12-24 09:00 → 2018-12-24; baseline finish 2018-12-24 19:00 → 2018-12-24 |
| 170 | [V2]Implementación del HUD | 2018-12-24 09:00 → 2018-12-24 | 2018-12-24 19:00 → 2018-12-24 | constraint start no earlier than 2018-12-22 09:00 → start no earlier than 2018-12-22; baseline start 2018-12-24 09:00 → 2018-12-24; baseline finish 2018-12-24 19:00 → 2018-12-24 |
| 171 | [PD]Trailer juego/proyecto | 2018-12-24 09:00 → 2018-12-24 | 2018-12-24 19:00 → 2018-12-24 | constraint start no earlier than 2018-12-22 09:00 → start no earlier than 2018-12-22; baseline start 2018-12-24 09:00 → 2018-12-24; baseline finish 2018-12-24 19:00 → 2018-12-24 |
| 172 | [PD]Making of juego/proyecto | 2018-12-24 09:00 → 2018-12-24 | 2018-12-24 19:00 → 2018-12-24 | constraint start no earlier than 2018-12-22 09:00 → start no earlier than 2018-12-22; baseline start 2018-12-24 09:00 → 2018-12-24; baseline finish 2018-12-24 19:00 → 2018-12-24 |
| 173 | [RV]Modelado de los personajes | 2018-12-24 09:00 → 2018-12-24 | 2018-12-24 19:00 → 2018-12-24 | constraint start no earlier than 2018-12-22 09:00 → start no earlier than 2018-12-22; baseline start 2018-12-24 09:00 → 2018-12-24; baseline finish 2018-12-24 19:00 → 2018-12-24 |
| 174 | [RV]Texturizado de los personajes | 2018-12-24 09:00 → 2018-12-24 | 2018-12-24 19:00 → 2018-12-24 | constraint start no earlier than 2018-12-22 09:00 → start no earlier than 2018-12-22; baseline start 2018-12-24 09:00 → 2018-12-24; baseline finish 2018-12-24 19:00 → 2018-12-24 |
| 175 | [RV]Modelado del entorno y elementos | 2018-12-24 09:00 → 2018-12-24 | 2018-12-24 19:00 → 2018-12-24 | constraint start no earlier than 2018-12-22 09:00 → start no earlier than 2018-12-22; baseline start 2018-12-24 09:00 → 2018-12-24; baseline finish 2018-12-24 19:00 → 2018-12-24 |
| 176 | Version Beta del juego, que se pueda jugar | 2019-01-14 11:00 → 2019-01-14 | 2019-01-14 11:00 → 2019-01-14 | constraint start no earlier than 2018-12-22 09:00 → start no earlier than 2018-12-22; baseline start 2019-01-14 11:00 → 2019-01-14; baseline finish 2019-01-14 11:00 → 2019-01-14 |
| 177 | **Hito 3** | 2019-01-24 09:00 → 2019-01-24 | 2019-03-06 19:00 → 2019-03-06 | constraint finish no later than 2019-03-26 19:00 → finish no later than 2019-03-26; baseline start 2019-01-24 09:00 → 2019-01-24; baseline finish 2019-03-06 19:00 → 2019-03-06 |
| 178 | **Iteracion 9** | 2019-01-25 09:00 → 2019-01-25 | 2019-01-28 11:00 → 2019-01-28 | constraint start no earlier than 2019-01-25 09:00 → start no earlier than 2019-01-25; baseline start 2019-01-25 09:00 → 2019-01-25; baseline finish 2019-01-28 11:00 → 2019-01-28 |
| 179 | [V2]Diseño e implementación b.objetos (8/10) | 2019-01-25 09:00 → 2019-01-25 | 2019-01-25 18:00 → 2019-01-25 | baseline start 2019-01-25 09:00 → 2019-01-25; baseline finish 2019-01-25 18:00 → 2019-01-25 |
| 180 | [v2]Diseño e implementacion b.componentes 8 | 2019-01-25 09:00 → 2019-01-25 | 2019-01-28 11:00 → 2019-01-28 | constraint start no earlier than 2019-01-07 09:00 → start no earlier than 2019-01-07; baseline start 2019-01-25 09:00 → 2019-01-25; baseline finish 2019-01-28 11:00 → 2019-01-28 |
| 181 | <Tarea nueva> | 2019-01-25 09:00 → 2019-01-25 | 2019-01-25 19:00 → 2019-01-25 | baseline start 2019-01-25 09:00 → 2019-01-25; baseline finish 2019-01-25 19:00 → 2019-01-25 |
| 182 | **Iteracion 10** | 2019-02-06 09:00 → 2019-02-06 | 2019-02-07 11:00 → 2019-02-07 | constraint start no earlier than 2019-02-06 09:00 → start no earlier than 2019-02-06; baseline start 2019-02-06 09:00 → 2019-02-06; baseline finish 2019-02-07 11:00 → 2019-02-07 |
| 183 | [V2]Diseño e implementación b.objetos (9/10) | 2019-02-06 09:00 → 2019-02-06 | 2019-02-06 18:00 → 2019-02-06 | baseline start 2019-02-06 09:00 → 2019-02-06; baseline finish 2019-02-06 18:00 → 2019-02-06 |
| 184 | [v2]Diseño e implementacion b.componentes 9 | 2019-02-06 09:00 → 2019-02-06 | 2019-02-07 11:00 → 2019-02-07 | constraint start no earlier than 2019-01-21 09:00 → start no earlier than 2019-01-21; baseline start 2019-02-06 09:00 → 2019-02-06; baseline finish 2019-02-07 11:00 → 2019-02-07 |
| 185 | <Tarea nueva> | 2019-02-06 09:00 → 2019-02-06 | 2019-02-06 19:00 → 2019-02-06 | baseline start 2019-02-06 09:00 → 2019-02-06; baseline finish 2019-02-06 19:00 → 2019-02-06 |
| 186 | **Iteracion 11** | 2019-02-20 09:00 → 2019-02-20 | 2019-02-21 11:00 → 2019-02-21 | constraint start no earlier than 2019-02-20 09:00 → start no earlier than 2019-02-20; baseline start 2019-02-20 09:00 → 2019-02-20; baseline finish 2019-02-21 11:00 → 2019-02-21 |
| 187 | [V2]Diseño e implementación b.objetos (final) | 2019-02-20 09:00 → 2019-02-20 | 2019-02-20 18:00 → 2019-02-20 | baseline start 2019-02-20 09:00 → 2019-02-20; baseline finish 2019-02-20 18:00 → 2019-02-20 |
| 188 | [v2]Diseño e implementacion b.componentes (final) | 2019-02-20 09:00 → 2019-02-20 | 2019-02-21 11:00 → 2019-02-21 | constraint start no earlier than 2019-02-04 09:00 → start no earlier than 2019-02-04; baseline start 2019-02-20 09:00 → 2019-02-20; baseline finish 2019-02-21 11:00 → 2019-02-21 |
| 189 | <Tarea nueva> | 2019-02-20 09:00 → 2019-02-20 | 2019-02-20 19:00 → 2019-02-20 | baseline start 2019-02-20 09:00 → 2019-02-20; baseline finish 2019-02-20 19:00 → 2019-02-20 |
| 190 | **Iteracion 12** | 2019-03-06 09:00 → 2019-03-06 | 2019-03-06 19:00 → 2019-03-06 | constraint start no earlier than 2019-03-06 09:00 → start no earlier than 2019-03-06; baseline start 2019-03-06 09:00 → 2019-03-06; baseline finish 2019-03-06 19:00 → 2019-03-06 |
| 191 | <Tarea nueva> | 2019-03-06 09:00 → 2019-03-06 | 2019-03-06 19:00 → 2019-03-06 | baseline start 2019-03-06 09:00 → 2019-03-06; baseline finish 2019-03-06 19:00 → 2019-03-06 |
| 192 | [PM]Detallar plan iteraciones del mes de Febrero-Marzo. Creación Subtareas y precedencias en Project | 2019-01-24 09:00 → 2019-01-24 | 2019-01-24 19:00 → 2019-01-24 | constraint start no earlier than 2019-01-24 09:00 → start no earlier than 2019-01-24; baseline start 2019-01-24 09:00 → 2019-01-24; baseline finish 2019-01-24 19:00 → 2019-01-24 |
| 193 | [PM]Detallar plan iteraciones del mes de Febrero-Marzo Asignar recursos a las tareas en Project | 2019-01-24 09:00 → 2019-01-24 | 2019-01-24 19:00 → 2019-01-24 | constraint start no earlier than 2019-01-24 09:00 → start no earlier than 2019-01-24; baseline start 2019-01-24 09:00 → 2019-01-24; baseline finish 2019-01-24 19:00 → 2019-01-24 |
| 194 | [PM]Registrar tiempos y % de realización de tareas en Project | 2019-01-24 09:00 → 2019-01-24 | 2019-01-24 19:00 → 2019-01-24 | constraint start no earlier than 2019-01-24 09:00 → start no earlier than 2019-01-24; baseline start 2019-01-24 09:00 → 2019-01-24; baseline finish 2019-01-24 19:00 → 2019-01-24 |
| 195 | [PM]Comparar la planificación prevista y real en Project hito 3 | 2019-01-24 09:00 → 2019-01-24 | 2019-01-24 19:00 → 2019-01-24 | constraint start no earlier than 2019-01-24 09:00 → start no earlier than 2019-01-24; baseline start 2019-01-24 09:00 → 2019-01-24; baseline finish 2019-01-24 19:00 → 2019-01-24 |
| 196 | [PM]Confeccionar Informes de iteración e informe resumen de Hito 3 | 2019-01-24 09:00 → 2019-01-24 | 2019-01-24 19:00 → 2019-01-24 | constraint start no earlier than 2019-01-24 09:00 → start no earlier than 2019-01-24; baseline start 2019-01-24 09:00 → 2019-01-24; baseline finish 2019-01-24 19:00 → 2019-01-24 |
| 197 | [PM]Elaborar la presentación del Hito 3 | 2019-01-24 09:00 → 2019-01-24 | 2019-01-24 19:00 → 2019-01-24 | constraint start no earlier than 2019-01-24 09:00 → start no earlier than 2019-01-24; baseline start 2019-01-24 09:00 → 2019-01-24; baseline finish 2019-01-24 19:00 → 2019-01-24 |
| 198 | [PM]Exponer la presentación del Hito 3 | 2019-01-24 09:00 → 2019-01-24 | 2019-01-24 19:00 → 2019-01-24 | constraint start no earlier than 2019-01-24 09:00 → start no earlier than 2019-01-24; baseline start 2019-01-24 09:00 → 2019-01-24; baseline finish 2019-01-24 19:00 → 2019-01-24 |
| 199 | [TAG]Estructura básica del nodo (array de hijos, puntero a padre, puntero a entidad, funcionalidad básica -constructor, destructor, gets, sets, manejo de hijos….) | 2019-01-24 09:00 → 2019-01-24 | 2019-01-24 19:00 → 2019-01-24 | constraint start no earlier than 2019-01-24 09:00 → start no earlier than 2019-01-24; baseline start 2019-01-24 09:00 → 2019-01-24; baseline finish 2019-01-24 19:00 → 2019-01-24 |
| 200 | [TAG]Recorrido-dibujado del árbol | 2019-01-24 09:00 → 2019-01-24 | 2019-01-24 19:00 → 2019-01-24 | constraint start no earlier than 2019-01-24 09:00 → start no earlier than 2019-01-24; baseline start 2019-01-24 09:00 → 2019-01-24; baseline finish 2019-01-24 19:00 → 2019-01-24 |
| 201 | [TAG]Estructura básica de la entidad (Constructor, destructor, funciones… todas virtuales, vacías) | 2019-01-24 09:00 → 2019-01-24 | 2019-01-24 19:00 → 2019-01-24 | constraint start no earlier than 2019-01-24 09:00 → start no earlier than 2019-01-24; baseline start 2019-01-24 09:00 → 2019-01-24; baseline finish 2019-01-24 19:00 → 2019-01-24 |
| 202 | [TAG]Matrices (model, view, projection) y pila estáticas y su manejo | 2019-01-24 09:00 → 2019-01-24 | 2019-01-24 19:00 → 2019-01-24 | constraint start no earlier than 2019-01-24 09:00 → start no earlier than 2019-01-24; baseline start 2019-01-24 09:00 → 2019-01-24; baseline finish 2019-01-24 19:00 → 2019-01-24 |
| 203 | [TAG]Estructura básica de la transformación (Constructor, destructor, matriz transformación…) | 2019-01-24 09:00 → 2019-01-24 | 2019-01-24 19:00 → 2019-01-24 | constraint start no earlier than 2019-01-24 09:00 → start no earlier than 2019-01-24; baseline start 2019-01-24 09:00 → 2019-01-24; baseline finish 2019-01-24 19:00 → 2019-01-24 |
| 204 | [TAG]Operaciones de transformación (trasladar, rotar, escalar, identidad, trasponer, invertir, todas con GLM o GLMatrix) | 2019-01-24 09:00 → 2019-01-24 | 2019-01-24 19:00 → 2019-01-24 | constraint start no earlier than 2019-01-24 09:00 → start no earlier than 2019-01-24; baseline start 2019-01-24 09:00 → 2019-01-24; baseline finish 2019-01-24 19:00 → 2019-01-24 |
| 205 | [TAG]Dibujado (begindraw, enddraw, manejo pila y matriz model) | 2019-01-24 09:00 → 2019-01-24 | 2019-01-24 19:00 → 2019-01-24 | constraint start no earlier than 2019-01-24 09:00 → start no earlier than 2019-01-24; baseline start 2019-01-24 09:00 → 2019-01-24; baseline finish 2019-01-24 19:00 → 2019-01-24 |
| 206 | [TAG]Estructura básica de la cámara (Constructor, destructor, matriz proyección) | 2019-01-24 09:00 → 2019-01-24 | 2019-01-24 19:00 → 2019-01-24 | constraint start no earlier than 2019-01-24 09:00 → start no earlier than 2019-01-24; baseline start 2019-01-24 09:00 → 2019-01-24; baseline finish 2019-01-24 19:00 → 2019-01-24 |
| 207 | [TAG]Rellenar matriz perspectiva (con GLM o GLMatrix) | 2019-01-24 09:00 → 2019-01-24 | 2019-01-24 19:00 → 2019-01-24 | constraint start no earlier than 2019-01-24 09:00 → start no earlier than 2019-01-24; baseline start 2019-01-24 09:00 → 2019-01-24; baseline finish 2019-01-24 19:00 → 2019-01-24 |
| 208 | [TAG]Estructura básica de la luz (Constructor, destructor) | 2019-01-24 09:00 → 2019-01-24 | 2019-01-24 19:00 → 2019-01-24 | constraint start no earlier than 2019-01-24 09:00 → start no earlier than 2019-01-24; baseline start 2019-01-24 09:00 → 2019-01-24; baseline finish 2019-01-24 19:00 → 2019-01-24 |
| 209 | [TAG]Datos y funciones luz puntual | 2019-01-24 09:00 → 2019-01-24 | 2019-01-24 19:00 → 2019-01-24 | constraint start no earlier than 2019-01-24 09:00 → start no earlier than 2019-01-24; baseline start 2019-01-24 09:00 → 2019-01-24; baseline finish 2019-01-24 19:00 → 2019-01-24 |
| 210 | [TAG]Estructura básica de la malla (Constructor, destructor) | 2019-01-24 09:00 → 2019-01-24 | 2019-01-24 19:00 → 2019-01-24 | constraint start no earlier than 2019-01-24 09:00 → start no earlier than 2019-01-24; baseline start 2019-01-24 09:00 → 2019-01-24; baseline finish 2019-01-24 19:00 → 2019-01-24 |
| 211 | [TAG]Datos de mallas, texturas, materiales… (llamadas al gestor de recursos) | 2019-01-24 09:00 → 2019-01-24 | 2019-01-24 19:00 → 2019-01-24 | constraint start no earlier than 2019-01-24 09:00 → start no earlier than 2019-01-24; baseline start 2019-01-24 09:00 → 2019-01-24; baseline finish 2019-01-24 19:00 → 2019-01-24 |
| 212 | [TAG]Dibujado de mallas (begindraw, enddraw, matriz model…) | 2019-01-24 09:00 → 2019-01-24 | 2019-01-24 19:00 → 2019-01-24 | constraint start no earlier than 2019-01-24 09:00 → start no earlier than 2019-01-24; baseline start 2019-01-24 09:00 → 2019-01-24; baseline finish 2019-01-24 19:00 → 2019-01-24 |
| 213 | [TAG]Estructura básica del gestor de recursos (constructor, destructor, vectores de recursos) | 2019-01-24 09:00 → 2019-01-24 | 2019-01-24 19:00 → 2019-01-24 | constraint start no earlier than 2019-01-24 09:00 → start no earlier than 2019-01-24; baseline start 2019-01-24 09:00 → 2019-01-24; baseline finish 2019-01-24 19:00 → 2019-01-24 |

| ID | Task | Start | Finish | Other |
| --- | --- | --- | --- | --- |
| 214 | [TAG]Obtener recurso (gestión adecuada de memoria) | 2019-01-24 09:00 → 2019-01-24 | 2019-01-24 19:00 → 2019-01-24 | constraint start no earlier than 2019-01-24 09:00 → start no earlier than 2019-01-24; baseline start 2019-01-24 09:00 → 2019-01-24; baseline finish 2019-01-24 19:00 → 2019-01-24 |
| 215 | [TAG]Estructura básica del recurso (constructor, destructor. Es virtual, vacío) | 2019-01-24 09:00 → 2019-01-24 | 2019-01-24 19:00 → 2019-01-24 | constraint start no earlier than 2019-01-24 09:00 → start no earlier than 2019-01-24; baseline start 2019-01-24 09:00 → 2019-01-24; baseline finish 2019-01-24 19:00 → 2019-01-24 |
| 216 | [TAG]Estructura básica de la malla (constructor, destructor) | 2019-01-24 09:00 → 2019-01-24 | 2019-01-24 19:00 → 2019-01-24 | constraint start no earlier than 2019-01-24 09:00 → start no earlier than 2019-01-24; baseline start 2019-01-24 09:00 → 2019-01-24; baseline finish 2019-01-24 19:00 → 2019-01-24 |
| 217 | [TAG]Lectura de disco (con assimp) | 2019-01-24 09:00 → 2019-01-24 | 2019-01-24 19:00 → 2019-01-24 | constraint start no earlier than 2019-01-24 09:00 → start no earlier than 2019-01-24; baseline start 2019-01-24 09:00 → 2019-01-24; baseline finish 2019-01-24 19:00 → 2019-01-24 |
| 218 | [TAG]Creación de buffers de vértices, normales, índices… y relleno | 2019-01-24 09:00 → 2019-01-24 | 2019-01-24 19:00 → 2019-01-24 | constraint start no earlier than 2019-01-24 09:00 → start no earlier than 2019-01-24; baseline start 2019-01-24 09:00 → 2019-01-24; baseline finish 2019-01-24 19:00 → 2019-01-24 |
| 219 | [TAG]Dibujado de las mallas (draw, con paso de los buffers a OpenGL o WebGL) | 2019-01-24 09:00 → 2019-01-24 | 2019-01-24 19:00 → 2019-01-24 | constraint start no earlier than 2019-01-24 09:00 → start no earlier than 2019-01-24; baseline start 2019-01-24 09:00 → 2019-01-24; baseline finish 2019-01-24 19:00 → 2019-01-24 |
| 220 | [TAG]Estructura básica del material (constructor, destructor) | 2019-01-24 09:00 → 2019-01-24 | 2019-01-24 19:00 → 2019-01-24 | constraint start no earlier than 2019-01-24 09:00 → start no earlier than 2019-01-24; baseline start 2019-01-24 09:00 → 2019-01-24; baseline finish 2019-01-24 19:00 → 2019-01-24 |
| 221 | [TAG]Leer material de disco (con librería o con parser propio) y rellenar valores | 2019-01-24 09:00 → 2019-01-24 | 2019-01-24 19:00 → 2019-01-24 | constraint start no earlier than 2019-01-24 09:00 → start no earlier than 2019-01-24; baseline start 2019-01-24 09:00 → 2019-01-24; baseline finish 2019-01-24 19:00 → 2019-01-24 |
| 222 | [TAG]Dibujado de los materiales (preparar los materiales y cargarlos en OpenGL o WebGL) | 2019-01-24 09:00 → 2019-01-24 | 2019-01-24 19:00 → 2019-01-24 | constraint start no earlier than 2019-01-24 09:00 → start no earlier than 2019-01-24; baseline start 2019-01-24 09:00 → 2019-01-24; baseline finish 2019-01-24 19:00 → 2019-01-24 |
| 223 | [TAG]Estructura básica del shader (constructor, destructor) | 2019-01-24 09:00 → 2019-01-24 | 2019-01-24 19:00 → 2019-01-24 | constraint start no earlier than 2019-01-24 09:00 → start no earlier than 2019-01-24; baseline start 2019-01-24 09:00 → 2019-01-24; baseline finish 2019-01-24 19:00 → 2019-01-24 |
| 224 | [TAG]Lectura de shaders de disco (con parser propio) y guardarlo | 2019-01-24 09:00 → 2019-01-24 | 2019-01-24 19:00 → 2019-01-24 | constraint start no earlier than 2019-01-24 09:00 → start no earlier than 2019-01-24; baseline start 2019-01-24 09:00 → 2019-01-24; baseline finish 2019-01-24 19:00 → 2019-01-24 |
| 225 | [TAG]Estructura básica de la interfaz (constructor, destructor, inicialización motor y openGL) | 2019-01-24 09:00 → 2019-01-24 | 2019-01-24 19:00 → 2019-01-24 | constraint start no earlier than 2019-01-24 09:00 → start no earlier than 2019-01-24; baseline start 2019-01-24 09:00 → 2019-01-24; baseline finish 2019-01-24 19:00 → 2019-01-24 |
| 226 | [TAG]Funciones para crear cámaras y gestionarlas (manejo de las cámaras, registro, cálculo de la matriz view) | 2019-01-24 09:00 → 2019-01-24 | 2019-01-24 19:00 → 2019-01-24 | constraint start no earlier than 2019-01-24 09:00 → start no earlier than 2019-01-24; baseline start 2019-01-24 09:00 → 2019-01-24; baseline finish 2019-01-24 19:00 → 2019-01-24 |
| 227 | [TAG]Funciones para crear luces y gestionarlas (manejo de las luces registro, cálculo de la matriz light) | 2019-01-24 09:00 → 2019-01-24 | 2019-01-24 19:00 → 2019-01-24 | constraint start no earlier than 2019-01-24 09:00 → start no earlier than 2019-01-24; baseline start 2019-01-24 09:00 → 2019-01-24; baseline finish 2019-01-24 19:00 → 2019-01-24 |
| 228 | [TAG]Funciones para crear transformaciones (creación de varios nodos con las transformaciones, manejo de las transformaciones) | 2019-01-24 09:00 → 2019-01-24 | 2019-01-24 19:00 → 2019-01-24 | constraint start no earlier than 2019-01-24 09:00 → start no earlier than 2019-01-24; baseline start 2019-01-24 09:00 → 2019-01-24; baseline finish 2019-01-24 19:00 → 2019-01-24 |
| 229 | [TAG]Funciones para crear mallas y animaciones | 2019-01-24 09:00 → 2019-01-24 | 2019-01-24 19:00 → 2019-01-24 | constraint start no earlier than 2019-01-24 09:00 → start no earlier than 2019-01-24; baseline start 2019-01-24 09:00 → 2019-01-24; baseline finish 2019-01-24 19:00 → 2019-01-24 |
| 230 | [TAG]Funciones para crear shaders y gestionarlos | 2019-01-24 09:00 → 2019-01-24 | 2019-01-24 19:00 → 2019-01-24 | constraint start no earlier than 2019-01-24 09:00 → start no earlier than 2019-01-24; baseline start 2019-01-24 09:00 → 2019-01-24; baseline finish 2019-01-24 19:00 → 2019-01-24 |
| 231 | [TAG]Shader básico (Sombreado de Phong, reflexión de Phong) con materiales | 2019-01-24 09:00 → 2019-01-24 | 2019-01-24 19:00 → 2019-01-24 | constraint start no earlier than 2019-01-24 09:00 → start no earlier than 2019-01-24; baseline start 2019-01-24 09:00 → 2019-01-24; baseline finish 2019-01-24 19:00 → 2019-01-24 |
| 232 | [TAG]Integración con la aplicación | 2019-01-24 09:00 → 2019-01-24 | 2019-01-24 19:00 → 2019-01-24 | constraint start no earlier than 2019-01-24 09:00 → start no earlier than 2019-01-24; baseline start 2019-01-24 09:00 → 2019-01-24; baseline finish 2019-01-24 19:00 → 2019-01-24 |
| 233 | [TAG]Realización de una fachada entre el motor y la aplicación o videojuego | 2019-01-24 09:00 → 2019-01-24 | 2019-01-24 19:00 → 2019-01-24 | constraint start no earlier than 2019-01-24 09:00 → start no earlier than 2019-01-24; baseline start 2019-01-24 09:00 → 2019-01-24; baseline finish 2019-01-24 19:00 → 2019-01-24 |
| 234 | [TAG]Librería matemática (GLM o GLMatrix) | 2019-01-24 09:00 → 2019-01-24 | 2019-01-24 19:00 → 2019-01-24 | constraint start no earlier than 2019-01-24 09:00 → start no earlier than 2019-01-24; baseline start 2019-01-24 09:00 → 2019-01-24; baseline finish 2019-01-24 19:00 → 2019-01-24 |
| 235 | [TAG][Solo CED] Librería de lectura de mallas (assimp…) | 2019-01-24 09:00 → 2019-01-24 | 2019-01-24 19:00 → 2019-01-24 | constraint start no earlier than 2019-01-24 09:00 → start no earlier than 2019-01-24; baseline start 2019-01-24 09:00 → 2019-01-24; baseline finish 2019-01-24 19:00 → 2019-01-24 |
| 236 | [TAG][Solo CED] Librería de ventanas, entrada/salida... (GLFW…) | 2019-01-24 09:00 → 2019-01-24 | 2019-01-24 19:00 → 2019-01-24 | constraint start no earlier than 2019-01-24 09:00 → start no earlier than 2019-01-24; baseline start 2019-01-24 09:00 → 2019-01-24; baseline finish 2019-01-24 19:00 → 2019-01-24 |
| 237 | [V1]Flocking: comportamiento grupal emergente | 2019-01-24 09:00 → 2019-01-24 | 2019-01-24 19:00 → 2019-01-24 | constraint start no earlier than 2019-01-24 09:00 → start no earlier than 2019-01-24; baseline start 2019-01-24 09:00 → 2019-01-24; baseline finish 2019-01-24 19:00 → 2019-01-24 |
| 238 | [V1]Editor in-game de parámetros y comportamientos de la IA | 2019-01-24 09:00 → 2019-01-24 | 2019-01-24 19:00 → 2019-01-24 | constraint start no earlier than 2019-01-24 09:00 → start no earlier than 2019-01-24; baseline start 2019-01-24 09:00 → 2019-01-24; baseline finish 2019-01-24 19:00 → 2019-01-24 |
| 239 | [V1]Sistema de logros y puntuaciones web | 2019-01-24 09:00 → 2019-01-24 | 2019-01-24 19:00 → 2019-01-24 | constraint start no earlier than 2019-01-24 09:00 → start no earlier than 2019-01-24; baseline start 2019-01-24 09:00 → 2019-01-24; baseline finish 2019-01-24 19:00 → 2019-01-24 |
| 240 | [V2]Implementación de cesped y vegetación | 2019-01-24 09:00 → 2019-01-24 | 2019-01-24 19:00 → 2019-01-24 | constraint start no earlier than 2019-01-24 09:00 → start no earlier than 2019-01-24; baseline start 2019-01-24 09:00 → 2019-01-24; baseline finish 2019-01-24 19:00 → 2019-01-24 |
| 241 | [V2]Implementación de nubes | 2019-01-24 09:00 → 2019-01-24 | 2019-01-24 19:00 → 2019-01-24 | constraint start no earlier than 2019-01-24 09:00 → start no earlier than 2019-01-24; baseline start 2019-01-24 09:00 → 2019-01-24; baseline finish 2019-01-24 19:00 → 2019-01-24 |
| 242 | [V2]Implementación de sistemas de partículas | 2019-01-24 09:00 → 2019-01-24 | 2019-01-24 19:00 → 2019-01-24 | constraint start no earlier than 2019-01-24 09:00 → start no earlier than 2019-01-24; baseline start 2019-01-24 09:00 → 2019-01-24; baseline finish 2019-01-24 19:00 → 2019-01-24 |
| 243 | [TDS]Resto de la biblioteca (máx. 1/3), cuesheet y metadatos finales | 2019-01-24 09:00 → 2019-01-24 | 2019-01-24 19:00 → 2019-01-24 | constraint start no earlier than 2019-01-24 09:00 → start no earlier than 2019-01-24; baseline start 2019-01-24 09:00 → 2019-01-24; baseline finish 2019-01-24 19:00 → 2019-01-24 |
| 244 | <Tarea nueva> | 2019-01-24 09:00 → 2019-01-24 | 2019-01-24 19:00 → 2019-01-24 | constraint start no earlier than 2019-01-24 09:00 → start no earlier than 2019-01-24; baseline start 2019-01-24 09:00 → 2019-01-24; baseline finish 2019-01-24 19:00 → 2019-01-24 |
| 245 | Versión Producción - Lista para pulir | 2019-03-06 19:00 → 2019-03-06 | 2019-03-06 19:00 → 2019-03-06 | constraint start no earlier than 2019-03-06 09:00 → start no earlier than 2019-03-06; baseline start 2019-03-06 19:00 → 2019-03-06; baseline finish 2019-03-06 19:00 → 2019-03-06 |
| 246 | **hito 4** | 2019-03-27 09:00 → 2019-03-27 | 2019-05-06 19:00 → 2019-05-06 | constraint finish no later than 2019-05-23 19:00 → finish no later than 2019-05-23; baseline start 2019-03-27 09:00 → 2019-03-27; baseline finish 2019-05-06 19:00 → 2019-05-06 |
| 247 | **Iteracion 13** | 2019-03-27 09:00 → 2019-03-27 | 2019-03-27 19:00 → 2019-03-27 | constraint start no earlier than 2019-03-27 09:00 → start no earlier than 2019-03-27; baseline start 2019-03-27 09:00 → 2019-03-27; baseline finish 2019-03-27 19:00 → 2019-03-27 |
| 248 | <Tarea nueva> | 2019-03-27 09:00 → 2019-03-27 | 2019-03-27 19:00 → 2019-03-27 | baseline start 2019-03-27 09:00 → 2019-03-27; baseline finish 2019-03-27 19:00 → 2019-03-27 |
| 249 | **Semana santa** | 2019-04-17 09:00 → 2019-04-17 | 2019-04-17 19:00 → 2019-04-17 | constraint start no earlier than 2019-04-17 09:00 → start no earlier than 2019-04-17; baseline start 2019-04-17 09:00 → 2019-04-17; baseline finish 2019-04-17 19:00 → 2019-04-17 |
| 250 | <Tarea nueva> | 2019-04-17 09:00 → 2019-04-17 | 2019-04-17 19:00 → 2019-04-17 | baseline start 2019-04-17 09:00 → 2019-04-17; baseline finish 2019-04-17 19:00 → 2019-04-17 |
| 251 | **Iteracion 14** | 2019-05-06 09:00 → 2019-05-06 | 2019-05-06 19:00 → 2019-05-06 | constraint start no earlier than 2019-05-05 09:00 → start no earlier than 2019-05-05; baseline start 2019-05-06 09:00 → 2019-05-06; baseline finish 2019-05-06 19:00 → 2019-05-06 |
| 252 | <Tarea nueva> | 2019-05-06 09:00 → 2019-05-06 | 2019-05-06 19:00 → 2019-05-06 | baseline start 2019-05-06 09:00 → 2019-05-06; baseline finish 2019-05-06 19:00 → 2019-05-06 |
| 253 | [PM]Detallar plan iteraciones del mes de Abril-Mayo. Creación Subtareas y precedencias en Project | 2019-03-27 09:00 → 2019-03-27 | 2019-03-27 19:00 → 2019-03-27 | constraint start no earlier than 2019-03-27 09:00 → start no earlier than 2019-03-27; baseline start 2019-03-27 09:00 → 2019-03-27; baseline finish 2019-03-27 19:00 → 2019-03-27 |
| 254 | [PM]Detallar plan iteraciones del mes de Abril-Mayo. Asignar recursos a las tareas en Project | 2019-03-27 09:00 → 2019-03-27 | 2019-03-27 19:00 → 2019-03-27 | constraint start no earlier than 2019-03-27 09:00 → start no earlier than 2019-03-27; baseline start 2019-03-27 09:00 → 2019-03-27; baseline finish 2019-03-27 19:00 → 2019-03-27 |
| 255 | [PM]Registrar tiempos y % de realización de tareas en Project | 2019-03-27 09:00 → 2019-03-27 | 2019-03-27 19:00 → 2019-03-27 | constraint start no earlier than 2019-03-27 09:00 → start no earlier than 2019-03-27; baseline start 2019-03-27 09:00 → 2019-03-27; baseline finish 2019-03-27 19:00 → 2019-03-27 |
| 256 | [PM]Comparar la planificación prevista y real en Project hito 4 | 2019-03-27 09:00 → 2019-03-27 | 2019-03-27 19:00 → 2019-03-27 | constraint start no earlier than 2019-03-27 09:00 → start no earlier than 2019-03-27; baseline start 2019-03-27 09:00 → 2019-03-27; baseline finish 2019-03-27 19:00 → 2019-03-27 |
| 257 | [PM]Confeccionar Informes de iteración e informe resumen de Hito 4 | 2019-03-27 09:00 → 2019-03-27 | 2019-03-27 19:00 → 2019-03-27 | constraint start no earlier than 2019-03-27 09:00 → start no earlier than 2019-03-27; baseline start 2019-03-27 09:00 → 2019-03-27; baseline finish 2019-03-27 19:00 → 2019-03-27 |
| 258 | [PM]Elaborar la presentación del Hito 4 | 2019-03-27 09:00 → 2019-03-27 | 2019-03-27 19:00 → 2019-03-27 | constraint start no earlier than 2019-03-27 09:00 → start no earlier than 2019-03-27; baseline start 2019-03-27 09:00 → 2019-03-27; baseline finish 2019-03-27 19:00 → 2019-03-27 |
| 259 | [PM]Exponer la presentación del Hito 4 | 2019-03-27 09:00 → 2019-03-27 | 2019-03-27 19:00 → 2019-03-27 | constraint start no earlier than 2019-03-27 09:00 → start no earlier than 2019-03-27; baseline start 2019-03-27 09:00 → 2019-03-27; baseline finish 2019-03-27 19:00 → 2019-03-27 |
| 260 | [TAG]Estructura básica de la animación (Constructor, destructor) | 2019-03-27 09:00 → 2019-03-27 | 2019-03-27 19:00 → 2019-03-27 | constraint start no earlier than 2019-03-27 09:00 → start no earlier than 2019-03-27; baseline start 2019-03-27 09:00 → 2019-03-27; baseline finish 2019-03-27 19:00 → 2019-03-27 |
| 261 | [TAG]Datos de animaciones, mallas, texturas, materiales (multiples, con llamadas al gestor de recursos) | 2019-03-27 09:00 → 2019-03-27 | 2019-03-27 19:00 → 2019-03-27 | constraint start no earlier than 2019-03-27 09:00 → start no earlier than 2019-03-27; baseline start 2019-03-27 09:00 → 2019-03-27; baseline finish 2019-03-27 19:00 → 2019-03-27 |
| 262 | [TAG]Dibujado de texturas (preparar las texturas y cargarlas en OpenGL o WebGL) | 2019-03-27 09:00 → 2019-03-27 | 2019-03-27 19:00 → 2019-03-27 | constraint start no earlier than 2019-03-27 09:00 → start no earlier than 2019-03-27; baseline start 2019-03-27 09:00 → 2019-03-27; baseline finish 2019-03-27 19:00 → 2019-03-27 |
| 263 | [TAG]Shader básico (Sombreado de Phong, reflexión de Phong) con materiales y texturas | 2019-03-27 09:00 → 2019-03-27 | 2019-03-27 19:00 → 2019-03-27 | constraint start no earlier than 2019-03-27 09:00 → start no earlier than 2019-03-27; baseline start 2019-03-27 09:00 → 2019-03-27; baseline finish 2019-03-27 19:00 → 2019-03-27 |
| 264 | [TAG]Shader Cartoon | 2019-03-27 09:00 → 2019-03-27 | 2019-03-27 19:00 → 2019-03-27 | constraint start no earlier than 2019-03-27 09:00 → start no earlier than 2019-03-27; baseline start 2019-03-27 09:00 → 2019-03-27; baseline finish 2019-03-27 19:00 → 2019-03-27 |
| 265 | [TAG]Bounding boxes (incluye retocar nodos, entidades y recursos malla) | 2019-03-27 09:00 → 2019-03-27 | 2019-03-27 19:00 → 2019-03-27 | constraint start no earlier than 2019-03-27 09:00 → start no earlier than 2019-03-27; baseline start 2019-03-27 09:00 → 2019-03-27; baseline finish 2019-03-27 19:00 → 2019-03-27 |
| 266 | [TAG]Backface culling | 2019-03-27 09:00 → 2019-03-27 | 2019-03-27 19:00 → 2019-03-27 | constraint start no earlier than 2019-03-27 09:00 → start no earlier than 2019-03-27; baseline start 2019-03-27 09:00 → 2019-03-27; baseline finish 2019-03-27 19:00 → 2019-03-27 |
| 267 | [TAG]Frustum culling | 2019-03-27 09:00 → 2019-03-27 | 2019-03-27 19:00 → 2019-03-27 | constraint start no earlier than 2019-03-27 09:00 → start no earlier than 2019-03-27; baseline start 2019-03-27 09:00 → 2019-03-27; baseline finish 2019-03-27 19:00 → 2019-03-27 |
| 268 | [TAG]Sombras proyectadas | 2019-03-27 09:00 → 2019-03-27 | 2019-03-27 19:00 → 2019-03-27 | constraint start no earlier than 2019-03-27 09:00 → start no earlier than 2019-03-27; baseline start 2019-03-27 09:00 → 2019-03-27; baseline finish 2019-03-27 19:00 → 2019-03-27 |
| 269 | [TAG]Sistema de partículas (sólo la incorporación en el motor) | 2019-03-27 09:00 → 2019-03-27 | 2019-03-27 19:00 → 2019-03-27 | constraint start no earlier than 2019-03-27 09:00 → start no earlier than 2019-03-27; baseline start 2019-03-27 09:00 → 2019-03-27; baseline finish 2019-03-27 19:00 → 2019-03-27 |
| 270 | [PD]Créditos | 2019-03-27 09:00 → 2019-03-27 | 2019-03-27 19:00 → 2019-03-27 | constraint start no earlier than 2019-03-27 09:00 → start no earlier than 2019-03-27; baseline start 2019-03-27 09:00 → 2019-03-27; baseline finish 2019-03-27 19:00 → 2019-03-27 |
| 271 | [PD]Vídeo final juego / explicación parte del proyecto | 2019-03-27 09:00 → 2019-03-27 | 2019-03-27 19:00 → 2019-03-27 | constraint start no earlier than 2019-03-27 09:00 → start no earlier than 2019-03-27; baseline start 2019-03-27 09:00 → 2019-03-27; baseline finish 2019-03-27 19:00 → 2019-03-27 |
| 272 | [TDS]Integración de sonido y música en el juego | 2019-03-27 09:00 → 2019-03-27 | 2019-03-27 19:00 → 2019-03-27 | constraint start no earlier than 2019-03-27 09:00 → start no earlier than 2019-03-27; baseline start 2019-03-27 09:00 → 2019-03-27; baseline finish 2019-03-27 19:00 → 2019-03-27 |
| 273 | [TDS]Post producción (mezcla y masterización in-game) | 2019-03-27 09:00 → 2019-03-27 | 2019-03-27 19:00 → 2019-03-27 | constraint start no earlier than 2019-03-27 09:00 → start no earlier than 2019-03-27; baseline start 2019-03-27 09:00 → 2019-03-27; baseline finish 2019-03-27 19:00 → 2019-03-27 |
| 274 | [TDS]Sonido generado proceduralmente in-game | 2019-03-27 09:00 → 2019-03-27 | 2019-03-27 19:00 → 2019-03-27 | constraint start no earlier than 2019-03-27 09:00 → start no earlier than 2019-03-27; baseline start 2019-03-27 09:00 → 2019-03-27; baseline finish 2019-03-27 19:00 → 2019-03-27 |
| 275 | [RV]Rigging de los personajes | 2019-03-27 09:00 → 2019-03-27 | 2019-03-27 19:00 → 2019-03-27 | constraint start no earlier than 2019-03-27 09:00 → start no earlier than 2019-03-27; baseline start 2019-03-27 09:00 → 2019-03-27; baseline finish 2019-03-27 19:00 → 2019-03-27 |
| 276 | [RV]Captura de movimiento | 2019-03-27 09:00 → 2019-03-27 | 2019-03-27 19:00 → 2019-03-27 | constraint start no earlier than 2019-03-27 09:00 → start no earlier than 2019-03-27; baseline start 2019-03-27 09:00 → 2019-03-27; baseline finish 2019-03-27 19:00 → 2019-03-27 |
| 277 | [RV]Animación de los personajes | 2019-03-27 09:00 → 2019-03-27 | 2019-03-27 19:00 → 2019-03-27 | constraint start no earlier than 2019-03-27 09:00 → start no earlier than 2019-03-27; baseline start 2019-03-27 09:00 → 2019-03-27; baseline finish 2019-03-27 19:00 → 2019-03-27 |
| 278 | [RV]Texturizado del entorno y elementos | 2019-03-27 09:00 → 2019-03-27 | 2019-03-27 19:00 → 2019-03-27 | constraint start no earlier than 2019-03-27 09:00 → start no earlier than 2019-03-27; baseline start 2019-03-27 09:00 → 2019-03-27; baseline finish 2019-03-27 19:00 → 2019-03-27 |
| 279 | Version terminada | 2019-05-06 19:00 → 2019-05-06 | 2019-05-06 19:00 → 2019-05-06 | constraint start no earlier than 2018-10-24 09:00 → start no earlier than 2018-10-24; baseline start 2019-05-06 19:00 → 2019-05-06; baseline finish 2019-05-06 19:00 → 2019-05-06 |

## Version 10 (data date 2018-11-21, saved 2018-11-22)

Note of the change: Linea base 22-11-2018

Last finish stays 2019-05-06.

Changed:

| ID | Task | Other |
| --- | --- | --- |
| 84 | **Iteracion 6** | baseline finish 2018-12-06 → 2018-12-05 |
| 85 | [v1]Sistema de gestión de navegación (Pathplanning/following) | baseline start none → 2018-11-22; baseline finish none → 2018-11-30 |
| 86 | **[V1]Sistema de percepción sensorial (vista, oído, olfato, canales…)** | baseline start 2018-11-26 → 2018-11-22; baseline finish 2018-12-03 → 2018-11-29 |
| 87 | Investigacion | baseline start 2018-11-26 → 2018-11-22; baseline finish 2018-11-27 → 2018-11-23 |
| 88 | Diseño | baseline start 2018-11-28 → 2018-11-26; baseline finish 2018-11-28 → 2018-11-26 |
| 89 | Implementar | baseline start 2018-11-28 → 2018-11-26; baseline finish 2018-12-03 → 2018-11-29 |
| 90 | [V1]Sistema de toma de decisión con Behaviour Trees (3/3) (Implementacion) | baseline start none → 2018-11-30; baseline finish none → 2018-12-04 |
| 92 | [V2]Utilización de propiedades físicas en las mecánicas jugables | baseline start 2018-11-22 → 2018-11-29; baseline finish 2018-11-26 → 2018-12-03 |
| 93 | [RV]Bocetos del entorno | baseline start 2018-11-22 → 2018-11-29; baseline finish 2018-11-26 → 2018-12-03 |
| 102 | [V1]Sistema de distribución central de tiempo de proceso (Scheduling) | baseline start 2018-11-22 → 2018-11-27; baseline finish 2018-11-29 → 2018-12-04 |
| 105 | [V2]Uso de trazado de rayos y otros tests de las físicas | baseline start 2018-11-22 → 2018-11-30; baseline finish 2018-11-26 → 2018-12-04 |
| 106 | [V2]Mecánicas de acción | baseline start 2018-11-22 → 2018-11-30; baseline finish 2018-11-27 → 2018-12-05 |
| 107 | [PM] Presentacion de Licencias de programas | baseline start none → 2018-11-22; baseline finish none → 2018-11-23 |
| 113 | [v1]Gestión de recursos de IA con Level-of-Detail (LoD) | baseline start 2018-11-29 → 2018-12-06; baseline finish 2018-12-06 → 2018-12-12 |

## Version 11 (data date 2018-11-21, saved 2018-11-23)

Note of the change: He arrglado los conflictos Merge branch 'desarrollo' of https://github.com/ABPMultimediaUA/Deadly-Dance into desarrollo

Last finish stays 2019-05-06.

Added:

| ID | Task | Duration | Start | Finish | Predecessors | Constraint |
| --- | --- | --- | --- | --- | --- | --- |
| 86 | Investigacion | 10h | 2018-11-22 | 2018-11-23 |  |  |
| 87 | Implementacion | 20h | 2018-11-23 | 2018-11-27 | 86 |  |
| 109 | Investigacion | 10h | 2018-11-30 | 2018-12-03 |  | start no earlier than 2018-11-29 |
| 110 | Implementacion | 22h | 2018-12-03 | 2018-12-05 | 109 |  |

Changed:

| ID | Task | Start | Finish | Duration | Total float | Other |
| --- | --- | --- | --- | --- | --- | --- |
| 84 | **Iteracion 6** |  |  | 9.75d → 10d |  |  |
| 85 | **[v1]Movimiento IA (PATHFINDING)** |  | 2018-11-30 → 2018-11-27 (-3d) | 50h → 3.75d | 109.25d → 111.75d | was named [v1]Sistema de gestión de navegación (Pathplanning/following) |
| 92 | [V1]Sistema de toma de decisión con Behaviour Trees (3/3) (Implementacion) | 2018-11-30 → 2018-11-29 (-1d) |  |  | 109.25d → 109.75d |  |
| 108 | **[V2]Mecánicas de puzzles** |  |  | 30h → 4d | 108.25d → 108d | was named [V2]Mecánicas de acción; constraint start no earlier than 2018-11-29 → none |
| 128 | [v2]Mecanicas de Accion |  |  |  |  | was named [v2]Mecanicas de puzzle |

## Version 12 (data date 2018-12-06, saved 2018-12-06)

Note of the change: Informe de tiempos, planificacion, contabilizacion falta informe eva (en proceso)

Last finish stays 2019-05-06. Complete tasks 65 → 84.

Added:

| ID | Task | Duration | Start | Finish | Constraint | Resources |
| --- | --- | --- | --- | --- | --- | --- |
| 116 | [v2]Control de player colisiones | 10h | 2018-12-07 | 2018-12-10 | start no earlier than 2018-12-07 | Jose Ramon Barea Cecilia [50%]; María Sánchez Marqués [50%] |
| 117 | [v1] percepcion visual | 10h | 2018-12-07 | 2018-12-10 | start no earlier than 2018-12-07 | Jose Vicente Anton Coy [50%] |
| 118 | [v2]Mecanicas de puzzle 2/2 | 5h | 2018-12-07 | 2018-12-07 | start no earlier than 2018-12-07 | Marines Ánton Castelló [50%] |
| 134 | [V1]Sistema de distribución central de tiempo de proceso (Scheduling) | 38h | 2018-12-17 | 2018-12-21 | start no earlier than 2018-12-15 | David Ramón Sevilla [50%] |
| 135 | [V2]Uso de trazado de rayos y otros tests de las físicas | 17h | 2018-12-17 | 2018-12-19 | start no earlier than 2018-12-17 | Jose Ramon Barea Cecilia [50%]; María Sánchez Marqués [50%] |
| 137 | [PM]Registrar tiempos y % de realización de tareas en Project | 48min | 2018-12-21 | 2018-12-21 | finish no earlier than 2018-12-21 | David Ramón Sevilla [2%]; Débora Galdeano González [2%]; Jose Ramon Barea Cecilia [2%]; Jose Vicente Anton Coy [2%]; María Sánchez Marqués [2%]; Marines Ánton Castelló [2%] |

Changed:

| ID | Task | Start | Finish | Duration | Complete | Total float | Other |
| --- | --- | --- | --- | --- | --- | --- | --- |
| 11 | **Hito 1** |  | 2018-12-17 → 2018-12-21 (+4d) | 55.5d → 60d | 44% → 57% | 100.5d → 96d |  |
| 84 | **Iteracion 6** | 2018-11-22 A |  |  | 0% → 71% | 107.88d → 108d |  |
| 85 | **[v1]Movimiento IA (PATHFINDING)** | 2018-11-22 A | 2018-11-27 A |  | 0% → 100% | 111.75d → none |  |
| 86 | Investigacion | 2018-11-22 A | 2018-11-23 A |  | 0% → 100% | 111.75d → none |  |
| 87 | Implementacion | 2018-11-23 A | 2018-11-27 A |  | 0% → 100% | 111.75d → none |  |
| 88 | **[V1]Sistema de percepción sensorial (vista, oído, olfato, canales…)** | 2018-11-22 A | 2018-11-29 A |  | 0% → 100% | 109.75d → none |  |
| 89 | Investigacion | 2018-11-22 A | 2018-11-23 A |  | 0% → 100% | 109.75d → none |  |
| 90 | Diseño | 2018-11-26 A | 2018-11-26 A |  | 0% → 100% | 109.75d → none |  |
| 91 | Implementar | 2018-11-26 A | 2018-11-29 A |  | 0% → 100% | 109.75d → none |  |
| 92 | [V1]Sistema de toma de decisión con Behaviour Trees (3/3) (Implementacion) | 2018-11-29 A | 2018-12-04 A |  | 0% → 100% | 109.75d → none |  |
| 93 | [v2]Control del player: movimiento y colisiones sin motor de físicas | 2018-11-22 A |  |  | 0% → 50% |  |  |
| 94 | [V2]Utilización de propiedades físicas en las mecánicas jugables | 2018-11-29 A |  |  | 0% → 25% |  |  |
| 95 | [RV]Bocetos del entorno | 2018-11-29 A | 2018-12-03 A |  | 0% → 100% | 110.75d → none |  |
| 96 | **[TDS]Realizar sonidos para el juego 4/7** | 2018-11-22 A | 2018-11-22 A |  | 0% → 100% | 117.64d → none |  |
| 97 | Síntesis | 2018-11-22 A | 2018-11-22 A |  | 0% → 100% | 117.64d → none |  |
| 98 | Grabaciones propias | 2018-11-22 A | 2018-11-22 A |  | 0% → 100% | 117.64d → none |  |
| 99 | Sonidos externos | 2018-11-22 A | 2018-11-22 A |  | 0% → 100% | 117.64d → none |  |
| 100 | Música | 2018-11-22 A | 2018-11-22 A |  | 0% → 100% | 117.64d → none |  |
| 101 | Cue Sheet | 2018-11-22 A | 2018-11-22 A |  | 0% → 100% | 117.82d → none |  |
| 102 | Hoja de metadatos | 2018-11-22 A | 2018-11-22 A |  | 0% → 100% | 117.82d → none |  |
| 103 | Integración del motor de audio en el juego con prueba de concepto | 2018-11-22 A | 2018-11-22 A |  | 0% → 100% | 117.64d → none |  |
| 104 | [V1]Sistema de distribución central de tiempo de proceso (Scheduling) | 2018-11-27 A |  |  | 0% → 25% |  |  |
| 105 | [V2]Diseño e implementación b.objetos (4/10) | 2018-11-22 A | 2018-11-22 A |  | 0% → 100% | 117.12d → none |  |
| 106 | [v2]Diseño e implementacion b.componentes 3 | 2018-11-22 A | 2018-11-23 A |  | 0% → 100% | 116.75d → none |  |
| 108 | **[V2]Mecánicas de puzzles** | 2018-11-30 A |  |  | 0% → 75% |  |  |
| 109 | Investigacion | 2018-11-30 A | 2018-12-03 A |  | 0% → 100% | 108d → none |  |
| 110 | Implementacion | 2018-12-03 A |  |  | 0% → 64% |  |  |
| 111 | [PM] Presentacion de Licencias de programas | 2018-11-22 A | 2018-11-23 A |  | 0% → 100% | 116.75d → none |  |
| 112 | [PM]Registrar tiempos y % de realización de tareas en Project | 2018-12-04 A | 2018-12-04 A |  | 0% → 100% | 109d → none |  |
| 113 | **Iteracion 7** | 2018-12-06 → 2018-12-07 (+1d) | 2018-12-17 → 2018-12-21 (+4d) | 7.5d → 11d |  | 100.5d → 96d | constraint start no earlier than 2018-12-06 → none |
| 114 | [PM]Detallar plan iteraciones del mes de Diciembre. Creación Subtareas y precedencias en Project | 2018-12-06 → 2018-12-07 (+1d) | 2018-12-10 → 2018-12-11 (+1d) |  |  | 102.24d → 101.24d | constraint none → start no earlier than 2018-12-07 |
| 115 | [PM]Detallar plan iteraciones del mes de Diciembre. Asignar recursos a las tareas en Project | 2018-12-10 → 2018-12-11 (+1d) | 2018-12-13 → 2018-12-14 (+1d) |  |  | 102.24d → 101.24d | constraint none → start no earlier than 2018-12-07 |
| 119 | [v2]Mecanicas de Accion | 2018-12-06 → 2018-12-10 (+4d) | 2018-12-11 → 2018-12-13 (+2d) |  |  | 104d → 102d | constraint none → start no earlier than 2018-12-10 |
| 120 | [V2]Mecánicas de rol | 2018-12-06 → 2018-12-10 (+4d) | 2018-12-11 → 2018-12-13 (+2d) |  |  | 104.25d → 102.25d | constraint none → start no earlier than 2018-12-10 |
| 121 | **[TDS]Realizar sonidos para el juego 5/7** | 2018-12-06 → 2018-12-07 (+1d) | 2018-12-06 → 2018-12-07 (+1d) |  |  | 107.64d → 106.64d | constraint none → start no earlier than 2018-12-07 |
| 122 | Síntesis | 2018-12-06 → 2018-12-07 (+1d) | 2018-12-06 → 2018-12-07 (+1d) |  |  | 107.64d → 106.64d |  |
| 123 | Grabaciones propias | 2018-12-06 → 2018-12-07 (+1d) | 2018-12-06 → 2018-12-07 (+1d) |  |  | 107.64d → 106.64d |  |
| 124 | Sonidos externos | 2018-12-06 → 2018-12-07 (+1d) | 2018-12-06 → 2018-12-07 (+1d) |  |  | 107.64d → 106.64d |  |
| 125 | Música | 2018-12-06 → 2018-12-07 (+1d) | 2018-12-06 → 2018-12-07 (+1d) |  |  | 107.64d → 106.64d |  |
| 126 | Cue Sheet | 2018-12-06 → 2018-12-07 (+1d) | 2018-12-06 → 2018-12-07 (+1d) |  |  | 107.82d → 106.82d |  |
| 127 | Hoja de metadatos | 2018-12-06 → 2018-12-07 (+1d) | 2018-12-06 → 2018-12-07 (+1d) |  |  | 107.82d → 106.82d |  |
| 128 | Integración del motor de audio en el juego con prueba de concepto | 2018-12-06 → 2018-12-07 (+1d) | 2018-12-06 → 2018-12-07 (+1d) |  |  | 107.64d → 106.64d |  |
| 129 | [V2]Diseño e implementación b.objetos (5/10) | 2018-12-06 → 2018-12-07 (+1d) | 2018-12-06 → 2018-12-07 (+1d) |  |  | 107.12d → 106.12d | constraint none → start no earlier than 2018-12-07 |
| 130 | [v2]Diseño e implementacion b.componentes 5 | 2018-12-06 → 2018-12-07 (+1d) | 2018-12-07 → 2018-12-10 (+3d) |  |  | 106.75d → 105.75d | constraint start no earlier than 2018-11-26 → start no earlier than 2018-12-07 |
| 131 | [v2]Uso de sistema de depuración visual de las físicas | 2018-12-06 → 2018-12-11 (+5d) | 2018-12-07 → 2018-12-12 (+5d) |  |  | 106.75d → 103.75d | constraint none → start no earlier than 2018-12-11 |
| 132 | [v1]Gestión de recursos de IA con Level-of-Detail (LoD) | 2018-12-06 → 2018-12-13 (+7d) | 2018-12-12 → 2018-12-19 (+7d) |  |  | 103d → 98d | constraint none → start no earlier than 2018-12-13 |
| 133 | [v2]Power-ups y elementos adicionales | 2018-12-06 → 2018-12-13 (+7d) | 2018-12-11 → 2018-12-18 (+7d) |  |  | 104.5d → 99.5d | constraint none → start no earlier than 2018-12-13 |
| 136 | [PD]Cartel juego/proyecto | 2018-12-06 → 2018-12-10 (+4d) | 2018-12-17 → 2018-12-19 (+2d) |  |  | 100.5d → 98.5d | constraint none → start no earlier than 2018-12-10 |

## Version 13 (data date 2018-12-19, saved 2018-12-21)

Note of the change: planificacion iteracion navidad y iteracion 8

Last finish stays 2019-05-06. Complete tasks 84 → 102.

Added:

| ID | Task | Duration | Start | Finish | Constraint | Resources |
| --- | --- | --- | --- | --- | --- | --- |
| 150 | [v1]Gestión de recursos de IA con Level-of-Detail (LoD) | 40h | 2018-12-28 09:00 | 2019-01-03 19:00 | start no earlier than 2018-12-28 09:00 | David Ramón Sevilla [40%]; Marines Ánton Castelló [40%] |
| 151 | [v2]Power-ups y elementos adicionales | 28h | 2018-12-31 09:00 | 2019-01-03 13:00 | start no earlier than 2018-12-31 09:00 | Débora Galdeano González [40%]; María Sánchez Marqués [40%] |
| 155 | [v2]Uso de sistema de depuración visual de las físicas | 10h | 2018-12-24 09:00 | 2018-12-25 11:00 |  | David Ramón Sevilla [40%]; Jose Vicente Anton Coy [40%] |
| 183 | [PM]Registrar tiempos y % de realización de tareas en Project | 48min | 2019-01-25 18:12 | 2019-01-25 19:00 | finish no earlier than 2019-01-25 19:00 | David Ramón Sevilla [4%]; Débora Galdeano González [4%]; Jose Ramon Barea Cecilia [4%]; Jose Vicente Anton Coy [4%]; María Sánchez Marqués [4%]; Marines Ánton Castelló [4%] |

Removed: 155 <Tarea nueva>; 167 <Tarea nueva>; 177 [V2]Power-ups y elementos adicionales; 181 [PD]Trailer juego/proyecto

Changed:

| ID | Task | Start | Finish | Complete | Other |
| --- | --- | --- | --- | --- | --- |
| 1 | **Hito 0** | 2018-09-10 A → 2018-09-10 09:00 A | 2018-10-10 A → 2018-10-10 10:36 A |  | baseline start 2018-09-10 → 2018-09-10 09:00; baseline finish 2018-10-10 → 2018-10-10 10:36 |
| 2 | **Iteracion 1** | 2018-09-10 A → 2018-09-10 09:00 A | 2018-10-02 A → 2018-10-02 10:36 A |  | baseline start 2018-09-10 → 2018-09-10 09:00; baseline finish 2018-10-02 → 2018-10-02 10:36 |
| 3 | [PM]Rellenar documento de Concepto del proyecto | 2018-09-10 A → 2018-09-10 09:00 A | 2018-09-11 A → 2018-09-11 10:36 A |  | constraint start no earlier than 2018-09-10 → start no earlier than 2018-09-10 09:00; baseline start 2018-09-10 → 2018-09-10 09:00; baseline finish 2018-09-11 → 2018-09-11 10:36 |
| 4 | [PM]Rellenar Version inicial del documento Especificacion | 2018-10-01 A → 2018-10-01 09:00 A | 2018-10-02 A → 2018-10-02 10:36 A |  | baseline start 2018-10-01 → 2018-10-01 09:00; baseline finish 2018-10-02 → 2018-10-02 10:36 |
| 5 | **Iteracion 2** | 2018-10-01 A → 2018-10-01 09:00 A | 2018-10-10 A → 2018-10-10 10:36 A |  | baseline start 2018-10-01 → 2018-10-01 09:00; baseline finish 2018-10-10 → 2018-10-10 10:36 |
| 6 | [PM]Completar y Revisar documento Especificacion | 2018-10-01 A → 2018-10-01 09:00 A | 2018-10-02 A → 2018-10-02 10:36 A |  | baseline start 2018-10-01 → 2018-10-01 09:00; baseline finish 2018-10-02 → 2018-10-02 10:36 |
| 7 | [PM]Crear WBS del proyecto project | 2018-10-01 A → 2018-10-01 09:00 A | 2018-10-04 A → 2018-10-04 15:48 A |  | baseline start 2018-10-01 → 2018-10-01 09:00; baseline finish 2018-10-04 → 2018-10-04 15:48 |
| 8 | [PM]Crear plan general (tareas y precedencias basicas) en project | 2018-10-01 A → 2018-10-01 09:00 A | 2018-10-04 A → 2018-10-04 15:48 A |  | baseline start 2018-10-01 → 2018-10-01 09:00; baseline finish 2018-10-04 → 2018-10-04 15:48 |
| 9 | [PM]Elaborar el Presupuesto(hoja de calculo) | 2018-10-01 A → 2018-10-01 09:00 A | 2018-10-10 A → 2018-10-10 10:36 A |  | baseline start 2018-10-01 → 2018-10-01 09:00; baseline finish 2018-10-10 → 2018-10-10 10:36 |
| 10 | Documento de Especificaciones realizado | 2018-10-10 A → 2018-10-10 10:36 A | 2018-10-10 A → 2018-10-10 10:36 A |  | constraint start no earlier than 2018-10-10 → start no earlier than 2018-10-10 09:00; baseline start 2018-10-10 → 2018-10-10 10:36; baseline finish 2018-10-10 → 2018-10-10 10:36 |
| 11 | **Hito 1** | 2018-10-01 A → 2018-10-01 09:00 A | 2018-12-21 → 2018-12-21 19:00 | 57% → 73% | baseline start 2018-10-01 → 2018-10-01 09:00; baseline finish 2018-12-17 → 2018-12-21 19:00 |
| 12 | **Iteracion 3** | 2018-10-11 A → 2018-10-11 09:00 A | 2018-10-24 → 2018-10-24 19:00 |  | constraint start no earlier than 2018-10-11 → start no earlier than 2018-10-11 09:00; baseline start 2018-10-11 → 2018-10-11 09:00; baseline finish 2018-10-24 → 2018-10-24 19:00 |
| 13 | [V1]Documento de diseño de mecánicas de los NPCs | 2018-10-11 A → 2018-10-11 09:00 A | 2018-10-12 A → 2018-10-12 18:00 A |  | constraint must finish on 2018-10-24 → must finish on 2018-10-24 19:00; baseline start 2018-10-11 → 2018-10-11 09:00; baseline finish 2018-10-12 → 2018-10-12 18:00 |
| 14 | [v1] Documento de diseño de toma de decision: espacio y metodos | 2018-10-19 → 2018-10-19 09:00 | 2018-10-24 → 2018-10-24 19:00 |  | constraint must finish on 2018-10-24 → must finish on 2018-10-24 19:00; baseline start 2018-10-19 → 2018-10-19 09:00; baseline finish 2018-10-24 → 2018-10-24 19:00 |
| 15 | [V1]Documento de diseño técnico del motor de IA | 2018-10-18 → 2018-10-18 12:00 | 2018-10-24 → 2018-10-24 19:00 |  | constraint must finish on 2018-10-24 → must finish on 2018-10-24 19:00; baseline start 2018-10-18 → 2018-10-18 12:00; baseline finish 2018-10-24 → 2018-10-24 19:00 |
| 16 | **[V2]Diseño e implementación b.objetos (1/10)** | 2018-10-11 A → 2018-10-11 09:00 A | 2018-10-11 A → 2018-10-11 12:30 A |  | baseline start 2018-10-11 → 2018-10-11 09:00; baseline finish 2018-10-11 → 2018-10-11 12:30 |
| 17 | Investigacion | 2018-10-11 A → 2018-10-11 09:00 A | 2018-10-11 A → 2018-10-11 12:30 A |  | baseline start 2018-10-11 → 2018-10-11 09:00; baseline finish 2018-10-11 → 2018-10-11 12:30 |
| 18 | Diseño | 2018-10-11 A → 2018-10-11 09:00 A | 2018-10-11 A → 2018-10-11 12:30 A |  | baseline start 2018-10-11 → 2018-10-11 09:00; baseline finish 2018-10-11 → 2018-10-11 12:30 |
| 19 | **[TDS]Realizar sonidos para el juego (1/7)** | 2018-10-11 A → 2018-10-11 09:00 A | 2018-10-11 A → 2018-10-11 11:51 A |  | baseline start 2018-10-11 → 2018-10-11 09:00; baseline finish 2018-10-11 → 2018-10-11 11:51 |
| 20 | Síntesis | 2018-10-11 A → 2018-10-11 09:00 A | 2018-10-11 A → 2018-10-11 11:51 A |  | baseline start 2018-10-11 → 2018-10-11 09:00; baseline finish 2018-10-11 → 2018-10-11 11:51 |
| 21 | Grabaciones propias | 2018-10-11 A → 2018-10-11 09:00 A | 2018-10-11 A → 2018-10-11 11:51 A |  | baseline start 2018-10-11 → 2018-10-11 09:00; baseline finish 2018-10-11 → 2018-10-11 11:51 |
| 22 | Sonidos externos | 2018-10-11 A → 2018-10-11 09:00 A | 2018-10-11 A → 2018-10-11 11:51 A |  | baseline start 2018-10-11 → 2018-10-11 09:00; baseline finish 2018-10-11 → 2018-10-11 11:51 |
| 23 | Música | 2018-10-11 A → 2018-10-11 09:00 A | 2018-10-11 A → 2018-10-11 11:51 A |  | baseline start 2018-10-11 → 2018-10-11 09:00; baseline finish 2018-10-11 → 2018-10-11 11:51 |
| 24 | Cue Sheet | 2018-10-11 A → 2018-10-11 09:00 A | 2018-10-11 A → 2018-10-11 10:25 A |  | baseline start 2018-10-11 → 2018-10-11 09:00; baseline finish 2018-10-11 → 2018-10-11 10:25 |
| 25 | Hoja de metadatos | 2018-10-11 A → 2018-10-11 09:00 A | 2018-10-11 A → 2018-10-11 10:25 A |  | baseline start 2018-10-11 → 2018-10-11 09:00; baseline finish 2018-10-11 → 2018-10-11 10:25 |
| 26 | Integración del motor de audio en el juego con prueba de concepto | 2018-10-11 A → 2018-10-11 09:00 A | 2018-10-11 A → 2018-10-11 11:51 A |  | baseline start 2018-10-11 → 2018-10-11 09:00; baseline finish 2018-10-11 → 2018-10-11 11:51 |
| 27 | [RV]Boceto de los personajes (1/2) | 2018-10-11 A → 2018-10-11 09:00 A | 2018-10-12 A → 2018-10-12 18:00 A |  | constraint must finish on 2018-10-24 → must finish on 2018-10-24 19:00; baseline start 2018-10-11 → 2018-10-11 09:00; baseline finish 2018-10-12 → 2018-10-12 18:00 |
| 28 | [PD]Vídeo con animación del logo de la empresa (1/2) | 2018-10-11 A → 2018-10-11 09:00 A | 2018-10-16 A → 2018-10-16 17:00 A |  | constraint must finish on 2018-10-24 → must finish on 2018-10-24 19:00; baseline start 2018-10-11 → 2018-10-11 09:00; baseline finish 2018-10-16 → 2018-10-16 17:00 |
| 29 | [PM]Registrar tiempos y % de realización de tareas en Project | 2018-10-24 A → 2018-10-24 18:00 A | 2018-10-24 A → 2018-10-24 19:00 A |  | constraint must finish on 2018-10-24 → must finish on 2018-10-24 19:00; baseline start 2018-10-24 → 2018-10-24 18:00; baseline finish 2018-10-24 → 2018-10-24 19:00 |
| 30 | **Iteracion 4** | 2018-10-25 A → 2018-10-25 09:00 A | 2018-11-07 → 2018-11-07 09:48 |  | constraint start no earlier than 2018-10-25 → start no earlier than 2018-10-25 09:00; baseline start 2018-10-25 → 2018-10-25 09:00; baseline finish 2018-11-07 → 2018-11-07 09:48 |
| 31 | [v1] Documento de diseño de toma de decision: espacio y metodos (1/2) | 2018-10-25 A → 2018-10-25 09:00 A | 2018-10-25 A → 2018-10-25 13:00 A |  | baseline start 2018-10-25 → 2018-10-25 09:00; baseline finish 2018-10-25 → 2018-10-25 13:00 |
| 32 | [V1]Documento de diseño técnico del motor de IA (1/2) | 2018-10-31 A → 2018-10-31 09:00 A | 2018-10-31 A → 2018-10-31 19:00 A |  | baseline start 2018-10-31 → 2018-10-31 09:00; baseline finish 2018-10-31 → 2018-10-31 19:00 |
| 33 | **[V1]Sistema de toma de decisión con Behaviour Trees (1/2)** | 2018-10-29 A → 2018-10-29 09:00 A | 2018-10-30 A → 2018-10-30 18:00 A |  | baseline start 2018-10-29 → 2018-10-29 09:00; baseline finish 2018-10-30 → 2018-10-30 18:00 |
| 34 | Investigacion | 2018-10-29 A → 2018-10-29 09:00 A | 2018-10-30 A → 2018-10-30 11:00 A |  | constraint start no earlier than 2018-10-27 → start no earlier than 2018-10-27 09:00; baseline start 2018-10-29 → 2018-10-29 09:00; baseline finish 2018-10-30 → 2018-10-30 11:00 |
| 35 | Diseño | 2018-10-30 A → 2018-10-30 11:00 A | 2018-10-30 A → 2018-10-30 18:00 A |  | baseline start 2018-10-30 → 2018-10-30 11:00; baseline finish 2018-10-30 → 2018-10-30 18:00 |
| 36 | Implementar | 2018-10-30 A → 2018-10-30 18:00 A | 2018-10-30 A → 2018-10-30 18:00 A |  | baseline start 2018-10-30 → 2018-10-30 18:00; baseline finish 2018-10-30 → 2018-10-30 18:00 |
| 37 | [V1]Documento de diseño de mecánicas de los NPCs 2/2 | 2018-10-25 A → 2018-10-25 09:00 A | 2018-10-29 A → 2018-10-29 17:00 A |  | constraint finish no later than 2018-11-07 → finish no later than 2018-11-07 19:00; baseline start 2018-10-25 → 2018-10-25 09:00; baseline finish 2018-10-29 → 2018-10-29 17:00 |
| 38 | **[V2]Diseño e implementación b.objetos (2/10)** | 2018-10-30 A → 2018-10-30 09:00 A | 2018-10-30 A → 2018-10-30 18:00 A |  | constraint finish no later than 2018-11-07 → finish no later than 2018-11-07 19:00; baseline start 2018-10-30 → 2018-10-30 09:00; baseline finish 2018-10-30 → 2018-10-30 18:00 |
| 39 | Diseño | 2018-10-30 A → 2018-10-30 09:00 A | 2018-10-30 A → 2018-10-30 11:00 A |  | constraint start no earlier than 2018-10-30 → start no earlier than 2018-10-30 09:00; baseline start 2018-10-30 → 2018-10-30 09:00; baseline finish 2018-10-30 → 2018-10-30 11:00 |
| 40 | Implementacion | 2018-10-30 A → 2018-10-30 11:00 A | 2018-10-30 A → 2018-10-30 18:00 A |  | baseline start 2018-10-30 → 2018-10-30 11:00; baseline finish 2018-10-30 → 2018-10-30 18:00 |
| 41 | **[v2]Diseño e implementacion b.componentes 1** | 2018-10-31 A → 2018-10-31 09:00 A | 2018-11-01 A → 2018-11-01 11:00 A |  | constraint finish no later than 2018-11-07 → finish no later than 2018-11-07 19:00; baseline start 2018-10-31 → 2018-10-31 09:00; baseline finish 2018-11-01 → 2018-11-01 11:00 |
| 42 | Investigar | 2018-10-31 A → 2018-10-31 09:00 A | 2018-10-31 A → 2018-10-31 16:00 A |  | constraint start no earlier than 2018-10-31 → start no earlier than 2018-10-31 09:00; baseline start 2018-10-31 → 2018-10-31 09:00; baseline finish 2018-10-31 → 2018-10-31 16:00 |
| 43 | Diseñar | 2018-10-31 A → 2018-10-31 16:00 A | 2018-11-01 A → 2018-11-01 11:00 A |  | baseline start 2018-10-31 → 2018-10-31 16:00; baseline finish 2018-11-01 → 2018-11-01 11:00 |
| 44 | [v2]Utilización de joints en las mecánicas jugables (1/2) | 2018-10-25 A → 2018-10-25 09:00 A | 2018-10-25 A → 2018-10-25 13:00 A |  | baseline start 2018-10-25 → 2018-10-25 09:00; baseline finish 2018-10-25 → 2018-10-25 13:00 |
| 45 | [V2]Mecánicas básicas entidades sin IA | 2018-10-25 → 2018-10-25 15:00 | 2018-10-25 → 2018-10-25 16:00 |  | constraint finish no later than 2018-11-07 → finish no later than 2018-11-07 19:00; baseline start 2018-10-25 → 2018-10-25 15:00; baseline finish 2018-10-25 → 2018-10-25 16:00 |
| 46 | [RV]Boceto de los personajes 2/3 | 2018-11-02 A → 2018-11-02 09:00 A | 2018-11-05 A → 2018-11-05 18:00 A |  | constraint start no earlier than 2018-11-02 → start no earlier than 2018-11-02 09:00; baseline start 2018-11-02 → 2018-11-02 09:00; baseline finish 2018-11-05 → 2018-11-05 18:00 |
| 47 | [PD]Vídeo con animación del logo de la empresa (2/2) | 2018-10-25 A → 2018-10-25 09:00 A | 2018-10-30 A → 2018-10-30 17:00 A |  | baseline start 2018-10-25 → 2018-10-25 09:00; baseline finish 2018-10-30 → 2018-10-30 17:00 |
| 48 | **[TDS]Realizar sonidos para el juego 2/7** | 2018-10-25 A → 2018-10-25 09:00 A | 2018-10-25 A → 2018-10-25 11:51 A |  | constraint finish no later than 2018-11-07 → finish no later than 2018-11-07 19:00; baseline start 2018-10-25 → 2018-10-25 09:00; baseline finish 2018-10-25 → 2018-10-25 11:51 |
| 49 | Síntesis | 2018-10-25 A → 2018-10-25 09:00 A | 2018-10-25 A → 2018-10-25 11:51 A |  | baseline start 2018-10-25 → 2018-10-25 09:00; baseline finish 2018-10-25 → 2018-10-25 11:51 |
| 50 | Grabaciones propias | 2018-10-25 A → 2018-10-25 09:00 A | 2018-10-25 A → 2018-10-25 11:51 A |  | baseline start 2018-10-25 → 2018-10-25 09:00; baseline finish 2018-10-25 → 2018-10-25 11:51 |
| 51 | Sonidos externos | 2018-10-25 A → 2018-10-25 09:00 A | 2018-10-25 A → 2018-10-25 11:51 A |  | baseline start 2018-10-25 → 2018-10-25 09:00; baseline finish 2018-10-25 → 2018-10-25 11:51 |
| 52 | Música | 2018-10-25 A → 2018-10-25 09:00 A | 2018-10-25 A → 2018-10-25 11:51 A |  | baseline start 2018-10-25 → 2018-10-25 09:00; baseline finish 2018-10-25 → 2018-10-25 11:51 |
| 53 | Cue Sheet | 2018-10-25 A → 2018-10-25 09:00 A | 2018-10-25 A → 2018-10-25 10:25 A |  | baseline start 2018-10-25 → 2018-10-25 09:00; baseline finish 2018-10-25 → 2018-10-25 10:25 |
| 54 | Hoja de metadatos | 2018-10-25 A → 2018-10-25 09:00 A | 2018-10-25 A → 2018-10-25 10:25 A |  | baseline start 2018-10-25 → 2018-10-25 09:00; baseline finish 2018-10-25 → 2018-10-25 10:25 |
| 55 | Integración del motor de audio en el juego con prueba de concepto | 2018-10-25 A → 2018-10-25 09:00 A | 2018-10-25 A → 2018-10-25 11:51 A |  | baseline start 2018-10-25 → 2018-10-25 09:00; baseline finish 2018-10-25 → 2018-10-25 11:51 |
| 56 | [PM]Registrar tiempos y % de realización de tareas en Project | 2018-11-07 A → 2018-11-07 09:00 A | 2018-11-07 A → 2018-11-07 09:48 A |  | constraint start no earlier than 2018-11-07 → start no earlier than 2018-11-07 09:00; baseline start 2018-11-07 → 2018-11-07 09:00; baseline finish 2018-11-07 → 2018-11-07 09:48 |
| 57 | [PM]Rellenar documento Gestión de riesgos | 2018-11-02 A → 2018-11-02 09:00 A | 2018-11-06 A → 2018-11-06 18:02 A |  | constraint start no earlier than 2018-11-02 → start no earlier than 2018-11-02 09:00; baseline start 2018-11-02 → 2018-11-02 09:00; baseline finish 2018-11-06 → 2018-11-06 18:02 |
| 58 | **Iteracion 5** | 2018-11-08 A → 2018-11-08 09:00 A | 2018-11-21 A → 2018-11-21 19:00 A |  | constraint start no earlier than 2018-11-08 → start no earlier than 2018-11-08 09:00; baseline start 2018-11-08 → 2018-11-08 09:00; baseline finish 2018-11-21 → 2018-11-21 19:00 |
| 59 | [RV]Boceto de los personajes 3/3 | 2018-11-08 A → 2018-11-08 09:00 A | 2018-11-08 A → 2018-11-08 13:00 A |  | baseline start 2018-11-08 → 2018-11-08 09:00; baseline finish 2018-11-08 → 2018-11-08 13:00 |
| 60 | [v1] Documento de diseño de toma de decision: espacio y metodos (2/2) | 2018-11-08 A → 2018-11-08 09:00 A | 2018-11-13 A → 2018-11-13 13:00 A |  | baseline start 2018-11-08 → 2018-11-08 09:00; baseline finish 2018-11-13 → 2018-11-13 13:00 |
| 61 | [V1]Documento de diseño técnico del motor de IA (2/2) | 2018-11-09 A → 2018-11-09 09:00 A | 2018-11-14 A → 2018-11-14 16:00 A |  | constraint start no earlier than 2018-11-09 → start no earlier than 2018-11-09 09:00; baseline start 2018-11-09 → 2018-11-09 09:00; baseline finish 2018-11-14 → 2018-11-14 16:00 |
| 62 | [V1]Sistema de toma de decisión con Behaviour Trees (3/2) (investigacion y diseño) | 2018-11-09 A → 2018-11-09 09:00 A | 2018-11-15 A → 2018-11-15 13:00 A |  | constraint start no earlier than 2018-11-09 → start no earlier than 2018-11-09 09:00; baseline start 2018-11-09 → 2018-11-09 09:00; baseline finish 2018-11-15 → 2018-11-15 13:00 |
| 63 | [v2]Utilización de joints en las mecánicas jugables (2/2) | 2018-11-09 A → 2018-11-09 09:00 A | 2018-11-12 A → 2018-11-12 16:00 A |  | constraint start no earlier than 2018-11-09 → start no earlier than 2018-11-09 09:00; baseline start 2018-11-09 → 2018-11-09 09:00; baseline finish 2018-11-12 → 2018-11-12 16:00 |
| 64 | [V2]Mecánicas básicas entidades sin IA | 2018-11-08 A → 2018-11-08 09:00 A | 2018-11-15 A → 2018-11-15 19:00 A |  | baseline start 2018-11-08 → 2018-11-08 09:00; baseline finish 2018-11-15 → 2018-11-15 19:00 |
| 65 | [PM]Detallar plan iteraciones del mes de Noviembre. Creación Subtareas y precedencias en Project | 2018-11-08 A → 2018-11-08 09:00 A | 2018-11-12 A → 2018-11-12 18:24 A |  | baseline start 2018-11-08 → 2018-11-08 09:00; baseline finish 2018-11-12 → 2018-11-12 18:24 |
| 66 | [PM]Detallar plan iteraciones del mes de Noviembre. Asignar recursos a las tareas en Project | 2018-11-12 A → 2018-11-12 18:24 A | 2018-11-15 A → 2018-11-15 17:24 A |  | baseline start 2018-11-12 → 2018-11-12 18:24; baseline finish 2018-11-15 → 2018-11-15 17:24 |
| 67 | [PM]Aplicar el modelo EVA en Project | 2018-11-16 A → 2018-11-16 09:00 A | 2018-11-20 A → 2018-11-20 16:36 A |  | constraint start no earlier than 2018-11-16 → start no earlier than 2018-11-16 09:00; baseline start 2018-11-16 → 2018-11-16 09:00; baseline finish 2018-11-20 → 2018-11-20 16:36 |
| 68 | [RV]Bocetos de los elementos | 2018-11-16 A → 2018-11-16 09:00 A | 2018-11-20 A → 2018-11-20 11:00 A |  | constraint start no earlier than 2018-11-16 → start no earlier than 2018-11-16 09:00; baseline start 2018-11-16 → 2018-11-16 09:00; baseline finish 2018-11-20 → 2018-11-20 11:00 |
| 69 | **[V2]Diseño e implementación b.objetos (3/10)** | 2018-11-15 A → 2018-11-15 09:00 A | 2018-11-15 A → 2018-11-15 18:00 A |  | baseline start 2018-11-15 → 2018-11-15 09:00; baseline finish 2018-11-15 → 2018-11-15 18:00 |
| 70 | Implementacion | 2018-11-15 A → 2018-11-15 09:00 A | 2018-11-15 A → 2018-11-15 18:00 A |  | constraint start no earlier than 2018-11-15 → start no earlier than 2018-11-15 09:00; baseline start 2018-11-15 → 2018-11-15 09:00; baseline finish 2018-11-15 → 2018-11-15 18:00 |

| ID | Task | Start | Finish | Complete | Total float | Other |
| --- | --- | --- | --- | --- | --- | --- |
| 71 | [v2]Diseño e implementacion b.componentes 2 | 2018-11-15 A → 2018-11-15 09:00 A | 2018-11-16 A → 2018-11-16 11:00 A |  |  | constraint start no earlier than 2018-11-15 → start no earlier than 2018-11-15 09:00; baseline start 2018-11-15 → 2018-11-15 09:00; baseline finish 2018-11-16 → 2018-11-16 11:00 |
| 72 | [v2]Formato propio para la definicion de los niveles(documentos con la especifiacion del formato) | 2018-11-13 A → 2018-11-13 09:00 A | 2018-11-14 A → 2018-11-14 12:00 A |  |  | constraint start no earlier than 2018-11-13 → start no earlier than 2018-11-13 09:00; baseline start 2018-11-13 → 2018-11-13 09:00; baseline finish 2018-11-14 → 2018-11-14 12:00 |
| 73 | [V2]Creación de un cargador de niveles | 2018-11-14 A → 2018-11-14 12:00 A | 2018-11-19 A → 2018-11-19 18:00 A |  |  | baseline start 2018-11-14 → 2018-11-14 12:00; baseline finish 2018-11-19 → 2018-11-19 18:00 |
| 74 | [v2]Implementacion de camara de seguimiento | 2018-11-16 A → 2018-11-16 09:00 A | 2018-11-20 A → 2018-11-20 10:00 A |  |  | constraint start no earlier than 2018-11-16 → start no earlier than 2018-11-16 09:00; baseline start 2018-11-16 → 2018-11-16 09:00; baseline finish 2018-11-20 → 2018-11-20 10:00 |
| 75 | **[TDS]Realizar sonidos para el juego 3/7** | 2018-11-08 A → 2018-11-08 09:00 A | 2018-11-08 A → 2018-11-08 11:51 A |  |  | baseline start 2018-11-08 → 2018-11-08 09:00; baseline finish 2018-11-08 → 2018-11-08 11:51 |
| 76 | Síntesis | 2018-11-08 A → 2018-11-08 09:00 A | 2018-11-08 A → 2018-11-08 11:51 A |  |  | baseline start 2018-11-08 → 2018-11-08 09:00; baseline finish 2018-11-08 → 2018-11-08 11:51 |
| 77 | Grabaciones propias | 2018-11-08 A → 2018-11-08 09:00 A | 2018-11-08 A → 2018-11-08 11:51 A |  |  | baseline start 2018-11-08 → 2018-11-08 09:00; baseline finish 2018-11-08 → 2018-11-08 11:51 |
| 78 | Sonidos externos | 2018-11-08 A → 2018-11-08 09:00 A | 2018-11-08 A → 2018-11-08 11:51 A |  |  | baseline start 2018-11-08 → 2018-11-08 09:00; baseline finish 2018-11-08 → 2018-11-08 11:51 |
| 79 | Música | 2018-11-08 A → 2018-11-08 09:00 A | 2018-11-08 A → 2018-11-08 11:51 A |  |  | baseline start 2018-11-08 → 2018-11-08 09:00; baseline finish 2018-11-08 → 2018-11-08 11:51 |
| 80 | Cue Sheet | 2018-11-08 A → 2018-11-08 09:00 A | 2018-11-08 A → 2018-11-08 10:25 A |  |  | baseline start 2018-11-08 → 2018-11-08 09:00; baseline finish 2018-11-08 → 2018-11-08 10:25 |
| 81 | Hoja de metadatos | 2018-11-08 A → 2018-11-08 09:00 A | 2018-11-08 A → 2018-11-08 10:25 A |  |  | baseline start 2018-11-08 → 2018-11-08 09:00; baseline finish 2018-11-08 → 2018-11-08 10:25 |
| 82 | Integración del motor de audio en el juego con prueba de concepto | 2018-11-08 A → 2018-11-08 09:00 A | 2018-11-08 A → 2018-11-08 11:51 A |  |  | baseline start 2018-11-08 → 2018-11-08 09:00; baseline finish 2018-11-08 → 2018-11-08 11:51 |
| 83 | [PM]Registrar tiempos y % de realización de tareas en Project | 2018-11-21 A → 2018-11-21 18:12 A | 2018-11-21 A → 2018-11-21 19:00 A |  |  | constraint finish no earlier than 2018-11-21 → finish no earlier than 2018-11-21 19:00; baseline start 2018-11-21 → 2018-11-21 18:12; baseline finish 2018-11-21 → 2018-11-21 19:00 |
| 84 | **Iteracion 6** | 2018-11-22 A → 2018-11-22 09:00 A | 2018-12-05 → 2018-12-05 19:00 |  |  | constraint start no earlier than 2018-11-22 → start no earlier than 2018-11-22 09:00; baseline start 2018-11-22 → 2018-11-22 09:00; baseline finish 2018-12-05 → 2018-12-05 19:00 |
| 85 | **[v1]Movimiento IA (PATHFINDING)** | 2018-11-22 A → 2018-11-22 09:00 A | 2018-11-27 A → 2018-11-27 17:00 A |  |  | baseline start 2018-11-22 → 2018-11-22 09:00; baseline finish 2018-11-30 → 2018-11-27 17:00 |
| 86 | Investigacion | 2018-11-22 A → 2018-11-22 09:00 A | 2018-11-23 A → 2018-11-23 11:00 A |  |  | baseline start none → 2018-11-22 09:00; baseline finish none → 2018-11-23 11:00 |
| 87 | Implementacion | 2018-11-23 A → 2018-11-23 11:00 A | 2018-11-27 A → 2018-11-27 17:00 A |  |  | baseline start none → 2018-11-23 11:00; baseline finish none → 2018-11-27 17:00 |
| 88 | **[V1]Sistema de percepción sensorial (vista, oído, olfato, canales…)** | 2018-11-22 A → 2018-11-22 09:00 A | 2018-11-29 A → 2018-11-29 17:00 A |  |  | baseline start 2018-11-22 → 2018-11-22 09:00; baseline finish 2018-11-29 → 2018-11-29 17:00 |
| 89 | Investigacion | 2018-11-22 A → 2018-11-22 09:00 A | 2018-11-23 A → 2018-11-23 19:00 A |  |  | constraint start no earlier than 2018-11-22 → start no earlier than 2018-11-22 09:00; baseline start 2018-11-22 → 2018-11-22 09:00; baseline finish 2018-11-23 → 2018-11-23 19:00 |
| 90 | Diseño | 2018-11-26 A → 2018-11-26 09:00 A | 2018-11-26 A → 2018-11-26 17:00 A |  |  | baseline start 2018-11-26 → 2018-11-26 09:00; baseline finish 2018-11-26 → 2018-11-26 17:00 |
| 91 | Implementar | 2018-11-26 A → 2018-11-26 17:00 A | 2018-11-29 A → 2018-11-29 17:00 A |  |  | baseline start 2018-11-26 → 2018-11-26 17:00; baseline finish 2018-11-29 → 2018-11-29 17:00 |
| 92 | [V1]Sistema de toma de decisión con Behaviour Trees (3/3) (Implementacion) | 2018-11-29 A → 2018-11-29 17:00 A | 2018-12-04 A → 2018-12-04 11:00 A |  |  | baseline start 2018-11-30 → 2018-11-29 17:00; baseline finish 2018-12-04 → 2018-12-04 11:00 |
| 93 | [v2]Control del player: movimiento y colisiones sin motor de físicas | 2018-11-22 A → 2018-11-22 09:00 A | 2018-11-28 → 2018-11-28 19:00 |  |  | baseline start 2018-11-22 → 2018-11-22 09:00; baseline finish 2018-11-28 → 2018-11-28 19:00 |
| 94 | [V2]Utilización de propiedades físicas en las mecánicas jugables | 2018-11-29 A → 2018-11-29 09:00 A | 2018-12-03 → 2018-12-03 10:00 |  |  | constraint start no earlier than 2018-11-29 → start no earlier than 2018-11-29 07:00; baseline start 2018-11-29 → 2018-11-29 09:00; baseline finish 2018-12-03 → 2018-12-03 10:00 |
| 95 | [RV]Bocetos del entorno | 2018-11-29 A → 2018-11-29 09:00 A | 2018-12-03 A → 2018-12-03 11:00 A |  |  | constraint start no earlier than 2018-11-29 → start no earlier than 2018-11-29 09:00; baseline start 2018-11-29 → 2018-11-29 09:00; baseline finish 2018-12-03 → 2018-12-03 11:00 |
| 96 | **[TDS]Realizar sonidos para el juego 4/7** | 2018-11-22 A → 2018-11-22 09:00 A | 2018-11-22 A → 2018-11-22 11:51 A |  |  | baseline start 2018-11-22 → 2018-11-22 09:00; baseline finish 2018-11-22 → 2018-11-22 11:51 |
| 97 | Síntesis | 2018-11-22 A → 2018-11-22 09:00 A | 2018-11-22 A → 2018-11-22 11:51 A |  |  | baseline start 2018-11-22 → 2018-11-22 09:00; baseline finish 2018-11-22 → 2018-11-22 11:51 |
| 98 | Grabaciones propias | 2018-11-22 A → 2018-11-22 09:00 A | 2018-11-22 A → 2018-11-22 11:51 A |  |  | baseline start 2018-11-22 → 2018-11-22 09:00; baseline finish 2018-11-22 → 2018-11-22 11:51 |
| 99 | Sonidos externos | 2018-11-22 A → 2018-11-22 09:00 A | 2018-11-22 A → 2018-11-22 11:51 A |  |  | baseline start 2018-11-22 → 2018-11-22 09:00; baseline finish 2018-11-22 → 2018-11-22 11:51 |
| 100 | Música | 2018-11-22 A → 2018-11-22 09:00 A | 2018-11-22 A → 2018-11-22 11:51 A |  |  | baseline start 2018-11-22 → 2018-11-22 09:00; baseline finish 2018-11-22 → 2018-11-22 11:51 |
| 101 | Cue Sheet | 2018-11-22 A → 2018-11-22 09:00 A | 2018-11-22 A → 2018-11-22 10:25 A |  |  | baseline start 2018-11-22 → 2018-11-22 09:00; baseline finish 2018-11-22 → 2018-11-22 10:25 |
| 102 | Hoja de metadatos | 2018-11-22 A → 2018-11-22 09:00 A | 2018-11-22 A → 2018-11-22 10:25 A |  |  | baseline start 2018-11-22 → 2018-11-22 09:00; baseline finish 2018-11-22 → 2018-11-22 10:25 |
| 103 | Integración del motor de audio en el juego con prueba de concepto | 2018-11-22 A → 2018-11-22 09:00 A | 2018-11-22 A → 2018-11-22 11:51 A |  |  | baseline start 2018-11-22 → 2018-11-22 09:00; baseline finish 2018-11-22 → 2018-11-22 11:51 |
| 104 | [V1]Sistema de distribución central de tiempo de proceso (Scheduling) | 2018-11-27 A → 2018-11-27 12:00 A | 2018-12-04 → 2018-12-04 13:00 |  |  | constraint start no earlier than 2018-11-27 → start no earlier than 2018-11-27 12:00; baseline start 2018-11-27 → 2018-11-27 12:00; baseline finish 2018-12-04 → 2018-12-04 13:00 |
| 105 | [V2]Diseño e implementación b.objetos (4/10) | 2018-11-22 A → 2018-11-22 09:00 A | 2018-11-22 A → 2018-11-22 18:00 A |  |  | baseline start 2018-11-22 → 2018-11-22 09:00; baseline finish 2018-11-22 → 2018-11-22 18:00 |
| 106 | [v2]Diseño e implementacion b.componentes 3 | 2018-11-22 A → 2018-11-22 09:00 A | 2018-11-23 A → 2018-11-23 11:00 A |  |  | baseline start 2018-11-22 → 2018-11-22 09:00; baseline finish 2018-11-23 → 2018-11-23 11:00 |
| 107 | [V2]Uso de trazado de rayos y otros tests de las físicas | 2018-11-30 → 2018-11-30 15:00 | 2018-12-04 → 2018-12-04 16:00 |  |  | constraint start no earlier than 2018-11-30 → start no earlier than 2018-11-30 13:00; baseline start 2018-11-30 → 2018-11-30 15:00; baseline finish 2018-12-04 → 2018-12-04 16:00 |
| 108 | **[V2]Mecánicas de puzzles** | 2018-11-30 A → 2018-11-30 09:00 A | 2018-12-05 → 2018-12-05 19:00 |  |  | baseline start 2018-11-30 → 2018-11-30 09:00; baseline finish 2018-12-05 → 2018-12-05 19:00 |
| 109 | Investigacion | 2018-11-30 A → 2018-11-30 09:00 A | 2018-12-03 A → 2018-12-03 11:00 A |  |  | constraint start no earlier than 2018-11-29 → start no earlier than 2018-11-29 23:00; baseline start none → 2018-11-30 09:00; baseline finish none → 2018-12-03 11:00 |
| 110 | Implementacion | 2018-12-03 A → 2018-12-03 11:00 A | 2018-12-05 → 2018-12-05 19:00 |  |  | baseline start none → 2018-12-03 11:00; baseline finish none → 2018-12-05 19:00 |
| 111 | [PM] Presentacion de Licencias de programas | 2018-11-22 A → 2018-11-22 09:00 A | 2018-11-23 A → 2018-11-23 11:00 A |  |  | baseline start 2018-11-22 → 2018-11-22 09:00; baseline finish 2018-11-23 → 2018-11-23 11:00 |
| 112 | [PM]Registrar tiempos y % de realización de tareas en Project | 2018-12-04 A → 2018-12-04 18:12 A | 2018-12-04 A → 2018-12-04 19:00 A |  |  | constraint finish no earlier than 2018-12-04 → finish no earlier than 2018-12-04 19:00; baseline start 2018-12-04 → 2018-12-04 18:12; baseline finish 2018-12-04 → 2018-12-04 19:00 |
| 113 | **Iteracion 7** | 2018-12-07 → 2018-12-07 09:00 A | 2018-12-21 → 2018-12-21 19:00 | 0% → 61% |  | baseline start 2018-12-06 → 2018-12-07 09:00; baseline finish 2018-12-17 → 2018-12-21 19:00 |
| 114 | [PM]Detallar plan iteraciones del mes de Diciembre. Creación Subtareas y precedencias en Project | 2018-12-07 → 2018-12-07 09:00 A | 2018-12-11 → 2018-12-11 18:02 |  | 101.24d → 104.12d | constraint start no earlier than 2018-12-07 → start no earlier than 2018-12-07 09:00; resources none → David Ramón Sevilla [10%]; Jose Ramon Barea Cecilia [5%]; Jose Vicente Anton Coy [10%]; baseline start 2018-12-06 → 2018-12-07 09:00; baseline finish 2018-12-10 → 2018-12-11 18:02 |
| 115 | [PM]Detallar plan iteraciones del mes de Diciembre. Asignar recursos a las tareas en Project | 2018-12-11 → 2018-12-11 18:02 A | 2018-12-14 → 2018-12-14 17:04 A | 0% → 100% | 101.24d → none | constraint start no earlier than 2018-12-07 → start no earlier than 2018-12-07 09:00; resources none → David Ramón Sevilla [5%]; Jose Vicente Anton Coy [5%]; baseline start 2018-12-10 → 2018-12-11 18:02; baseline finish 2018-12-13 → 2018-12-14 17:04 |
| 116 | [v2]Control de player colisiones | 2018-12-07 → 2018-12-07 09:00 A | 2018-12-10 → 2018-12-10 11:00 A | 0% → 100% | 105.75d → none | constraint start no earlier than 2018-12-07 → start no earlier than 2018-12-07 09:00; baseline start none → 2018-12-07 09:00; baseline finish none → 2018-12-10 11:00 |
| 117 | [v1] percepcion visual | 2018-12-07 → 2018-12-07 09:00 A | 2018-12-10 → 2018-12-10 11:00 A | 0% → 100% | 105.75d → none | constraint start no earlier than 2018-12-07 → start no earlier than 2018-12-07 09:00; baseline start none → 2018-12-07 09:00; baseline finish none → 2018-12-10 11:00 |
| 118 | [v2]Mecanicas de puzzle 2/2 | 2018-12-07 → 2018-12-07 09:00 A | 2018-12-07 → 2018-12-07 16:00 A | 0% → 100% | 106.38d → none | constraint start no earlier than 2018-12-07 → start no earlier than 2018-12-07 09:00; baseline start none → 2018-12-07 09:00; baseline finish none → 2018-12-07 16:00 |
| 119 | [v2]Mecanicas de Accion | 2018-12-10 → 2018-12-10 09:00 A | 2018-12-13 → 2018-12-13 19:00 A | 0% → 100% | 102d → none | constraint start no earlier than 2018-12-10 → start no earlier than 2018-12-10 09:00; resources none → Débora Galdeano González [40%]; David Ramón Sevilla [40%]; Jose Ramon Barea Cecilia [40%]; baseline start 2018-12-06 → 2018-12-10 09:00; baseline finish 2018-12-11 → 2018-12-13 19:00 |
| 120 | [V2]Mecánicas de rol | 2018-12-10 → 2018-12-10 09:00 A | 2018-12-13 → 2018-12-13 17:00 A | 0% → 100% | 102.25d → none | constraint start no earlier than 2018-12-10 → start no earlier than 2018-12-10 09:00; resources none → María Sánchez Marqués [40%]; Marines Ánton Castelló [40%]; Jose Vicente Anton Coy [40%]; baseline start 2018-12-06 → 2018-12-10 09:00; baseline finish 2018-12-11 → 2018-12-13 17:00 |
| 121 | **[TDS]Realizar sonidos para el juego 5/7** | 2018-12-07 → 2018-12-07 09:00 A | 2018-12-07 → 2018-12-07 11:51 A | 0% → 100% | 106.64d → none | constraint start no earlier than 2018-12-07 → start no earlier than 2018-12-07 09:00; resources none → Débora Galdeano González [8%]; David Ramón Sevilla [8%]; María Sánchez Marqués [8%]; Jose Ramon Barea Cecilia [8%]; baseline start 2018-12-06 → 2018-12-07 09:00; baseline finish 2018-12-06 → 2018-12-07 11:51 |
| 122 | Síntesis | 2018-12-07 → 2018-12-07 09:00 A | 2018-12-07 → 2018-12-07 11:51 A | 0% → 100% | 106.64d → none | baseline start 2018-12-06 → 2018-12-07 09:00; baseline finish 2018-12-06 → 2018-12-07 11:51 |
| 123 | Grabaciones propias | 2018-12-07 → 2018-12-07 09:00 A | 2018-12-07 → 2018-12-07 11:51 A | 0% → 100% | 106.64d → none | baseline start 2018-12-06 → 2018-12-07 09:00; baseline finish 2018-12-06 → 2018-12-07 11:51 |
| 124 | Sonidos externos | 2018-12-07 → 2018-12-07 09:00 A | 2018-12-07 → 2018-12-07 11:51 A | 0% → 100% | 106.64d → none | baseline start 2018-12-06 → 2018-12-07 09:00; baseline finish 2018-12-06 → 2018-12-07 11:51 |
| 125 | Música | 2018-12-07 → 2018-12-07 09:00 A | 2018-12-07 → 2018-12-07 11:51 A | 0% → 100% | 106.64d → none | baseline start 2018-12-06 → 2018-12-07 09:00; baseline finish 2018-12-06 → 2018-12-07 11:51 |
| 126 | Cue Sheet | 2018-12-07 → 2018-12-07 09:00 A | 2018-12-07 → 2018-12-07 10:25 A | 0% → 100% | 106.82d → none | baseline start 2018-12-06 → 2018-12-07 09:00; baseline finish 2018-12-06 → 2018-12-07 10:25 |
| 127 | Hoja de metadatos | 2018-12-07 → 2018-12-07 09:00 A | 2018-12-07 → 2018-12-07 10:25 A | 0% → 100% | 106.82d → none | baseline start 2018-12-06 → 2018-12-07 09:00; baseline finish 2018-12-06 → 2018-12-07 10:25 |
| 128 | Integración del motor de audio en el juego con prueba de concepto | 2018-12-07 → 2018-12-07 09:00 A | 2018-12-07 → 2018-12-07 11:51 A | 0% → 100% | 106.64d → none | baseline start 2018-12-06 → 2018-12-07 09:00; baseline finish 2018-12-06 → 2018-12-07 11:51 |
| 129 | [V2]Diseño e implementación b.objetos (5/10) | 2018-12-07 → 2018-12-07 09:00 A | 2018-12-07 → 2018-12-07 18:00 A | 0% → 100% | 106.12d → none | constraint start no earlier than 2018-12-07 → start no earlier than 2018-12-07 09:00; resources none → Jose Ramon Barea Cecilia [5%]; Jose Vicente Anton Coy [5%]; David Ramón Sevilla [5%]; María Sánchez Marqués [5%]; Marines Ánton Castelló [5%]; Débora Galdeano González [5%]; baseline start 2018-12-06 → 2018-12-07 09:00; baseline finish 2018-12-06 → 2018-12-07 18:00 |
| 130 | [v2]Diseño e implementacion b.componentes 5 | 2018-12-07 → 2018-12-07 09:00 A | 2018-12-10 → 2018-12-10 11:00 A | 0% → 100% | 105.75d → none | constraint start no earlier than 2018-12-07 → start no earlier than 2018-12-07 09:00; resources none → Jose Ramon Barea Cecilia [8%]; Jose Vicente Anton Coy [8%]; David Ramón Sevilla [8%]; María Sánchez Marqués [8%]; Marines Ánton Castelló [8%]; Débora Galdeano González [8%]; baseline start 2018-12-06 → 2018-12-07 09:00; baseline finish 2018-12-07 → 2018-12-10 11:00 |
| 131 | [v2]Uso de sistema de depuración visual de las físicas | 2018-12-11 → 2018-12-11 09:00 | 2018-12-12 → 2018-12-12 11:00 |  |  | constraint start no earlier than 2018-12-11 → start no earlier than 2018-12-11 09:00; resources none → David Ramón Sevilla [40%]; Jose Vicente Anton Coy [40%]; baseline start 2018-12-06 → 2018-12-11 09:00; baseline finish 2018-12-07 → 2018-12-12 11:00 |
| 132 | [v1]Gestión de recursos de IA con Level-of-Detail (LoD) | 2018-12-13 → 2018-12-13 09:00 | 2018-12-19 → 2018-12-19 19:00 |  |  | constraint start no earlier than 2018-12-13 → start no earlier than 2018-12-13 09:00; resources none → David Ramón Sevilla [40%]; Marines Ánton Castelló [40%]; baseline start 2018-12-06 → 2018-12-13 09:00; baseline finish 2018-12-12 → 2018-12-19 19:00 |
| 133 | [v2]Power-ups y elementos adicionales | 2018-12-13 → 2018-12-13 09:00 | 2018-12-18 → 2018-12-18 13:00 |  |  | constraint start no earlier than 2018-12-13 → start no earlier than 2018-12-13 09:00; resources none → Débora Galdeano González [40%]; María Sánchez Marqués [40%]; baseline start 2018-12-06 → 2018-12-13 09:00; baseline finish 2018-12-11 → 2018-12-18 13:00 |
| 134 | [V1]Sistema de distribución central de tiempo de proceso (Scheduling) | 2018-12-17 → 2018-12-17 09:00 | 2018-12-21 → 2018-12-21 17:00 |  |  | constraint start no earlier than 2018-12-15 → start no earlier than 2018-12-15 09:00; baseline start none → 2018-12-17 09:00; baseline finish none → 2018-12-21 17:00 |
| 135 | [V2]Uso de trazado de rayos y otros tests de las físicas | 2018-12-17 → 2018-12-17 09:00 A | 2018-12-19 → 2018-12-19 10:00 A | 0% → 100% | 98.88d → none | constraint start no earlier than 2018-12-17 → start no earlier than 2018-12-17 09:00; baseline start none → 2018-12-17 09:00; baseline finish none → 2018-12-19 10:00 |
| 136 | [PD]Cartel juego/proyecto | 2018-12-10 → 2018-12-10 09:00 A | 2018-12-19 → 2018-12-19 13:00 A | 0% → 100% | 98.5d → none | constraint start no earlier than 2018-12-10 → start no earlier than 2018-12-10 09:00; resources none → Jose Ramon Barea Cecilia [6%]; Marines Ánton Castelló [6%]; Jose Vicente Anton Coy [6%]; David Ramón Sevilla [6%]; baseline start 2018-12-06 → 2018-12-10 09:00; baseline finish 2018-12-17 → 2018-12-19 13:00 |
| 137 | [PM]Registrar tiempos y % de realización de tareas en Project | 2018-12-21 → 2018-12-21 18:12 A | 2018-12-21 → 2018-12-21 19:00 A | 0% → 100% | 96d → none | constraint finish no earlier than 2018-12-21 → finish no earlier than 2018-12-21 19:00; baseline start 2018-12-04 → 2018-12-21 18:12; baseline finish 2018-12-04 → 2018-12-21 19:00 |
| 138 | [PM]Comparar la planificación prevista y real en Project hito 1 | 2018-10-01 → 2018-10-01 09:00 | 2018-10-03 → 2018-10-03 16:36 |  |  | baseline start 2018-10-01 → 2018-10-01 09:00; baseline finish 2018-10-03 → 2018-10-03 16:36 |
| 139 | [PM]Confeccionar Informes de iteración e informe resumen de Hito 1 | 2018-10-03 → 2018-10-03 16:36 | 2018-10-08 → 2018-10-08 12:12 |  |  | baseline start 2018-10-03 → 2018-10-03 16:36; baseline finish 2018-10-08 → 2018-10-08 12:12 |
| 140 | [PM]Elaborar la presentación del Hito 1 | 2018-10-08 → 2018-10-08 12:12 | 2018-10-10 → 2018-10-10 10:36 |  |  | baseline start 2018-10-08 → 2018-10-08 12:12; baseline finish 2018-10-10 → 2018-10-10 10:36 |

| ID | Task | Start | Finish | Duration | Total float | Predecessors | Other |
| --- | --- | --- | --- | --- | --- | --- | --- |
| 141 | [PM]Exponer la presentación del Hito 1 | 2018-10-10 → 2018-10-10 10:36 | 2018-10-11 → 2018-10-11 19:00 |  |  |  | baseline start 2018-10-10 → 2018-10-10 10:36; baseline finish 2018-10-11 → 2018-10-11 19:00 |
| 142 | Versión Alpha de mecánicas | 2018-12-22 → 2018-12-22 09:00 | 2018-12-22 → 2018-12-22 09:00 |  |  |  | constraint start no earlier than 2018-12-22 → start no earlier than 2018-12-22 09:00; baseline start 2018-12-22 → 2018-12-22 09:00; baseline finish 2018-12-22 → 2018-12-22 09:00 |
| 143 | **Hito 2** | 2018-12-24 → 2018-12-24 09:00 | 2019-01-14 → 2019-01-25 19:00 (+11d) | 15.25d? → 25d? | 9.75d → 0d |  | baseline start 2018-12-24 → 2018-12-24 09:00; baseline finish 2019-01-14 → 2019-01-14 11:00 |
| 144 | **Navidad** | 2018-12-24 → 2018-12-24 09:00 | 2018-12-25 → 2019-01-06 19:00 (+12d) | 1.25d? → 10d | 23.75d → 15d |  | constraint start no earlier than 2018-12-22 → start no earlier than 2018-12-22 09:00; baseline start 2018-12-24 → 2018-12-24 09:00; baseline finish 2018-12-25 → 2018-12-25 11:00 |
| 145 | [PM]Detallar plan iteraciones del mes de Enero. Creación Subtareas y precedencias en Project | 2018-12-24 → 2018-12-24 09:00 | 2018-12-24 → 2018-12-31 17:00 (+7d) | 1d? → 46h | 24d → 19.25d |  | constraint start no earlier than 2018-12-22 → none; resources none → Jose Vicente Anton Coy [5%]; María Sánchez Marqués [5%]; Jose Ramon Barea Cecilia [5%]; baseline start 2018-12-24 → 2018-12-24 09:00; baseline finish 2018-12-24 → 2018-12-24 19:00 |
| 146 | [PM]Detallar plan iteraciones del mes de Enero. Asignar recursos a las tareas en Project | 2018-12-24 → 2018-12-28 09:00 (+4d) | 2018-12-24 → 2019-01-04 17:00 (+11d) | 1d? → 46h | 24d → 15.25d |  | constraint start no earlier than 2018-12-22 → start no earlier than 2018-12-28 09:00; resources none → Jose Ramon Barea Cecilia [5%]; Jose Vicente Anton Coy [5%]; María Sánchez Marqués [5%]; baseline start 2018-12-24 → 2018-12-24 09:00; baseline finish 2018-12-24 → 2018-12-24 19:00 |
| 147 | [V2]Implementación del HUD | 2018-12-24 → 2018-12-24 09:00 | 2018-12-24 → 2018-12-26 19:00 (+2d) | 1d → 24h | 24d → 22d |  | constraint start no earlier than 2018-12-22 → none; resources none → Jose Vicente Anton Coy [40%]; María Sánchez Marqués [40%]; baseline start 2018-12-24 → 2018-12-24 09:00; baseline finish 2018-12-24 → 2018-12-24 19:00 |
| 148 | [PM]Revisar especificación proyecto | 2018-12-24 → 2018-12-24 09:00 | 2018-12-24 → 2018-12-27 16:00 (+3d) | 1d → 29h | 24d → 21.38d |  | constraint start no earlier than 2018-12-22 → none; resources none → María Sánchez Marqués [4%]; Jose Ramon Barea Cecilia [4%]; Jose Vicente Anton Coy [4%]; David Ramón Sevilla [4%]; Marines Ánton Castelló [4%]; Débora Galdeano González [4%]; baseline start 2018-12-24 → 2018-12-24 09:00; baseline finish 2018-12-24 → 2018-12-24 19:00 |
| 149 | [PM]Reestimar proyecto | 2018-12-24 → 2018-12-28 09:00 (+4d) | 2018-12-24 → 2019-01-02 16:00 (+9d) | 1d? → 29h | 24d → 17.38d |  | constraint start no earlier than 2018-12-22 → start no earlier than 2018-12-28 09:00; resources none → Jose Vicente Anton Coy [4%]; Jose Ramon Barea Cecilia [4%]; María Sánchez Marqués [4%]; Marines Ánton Castelló [4%]; Débora Galdeano González [4%]; David Ramón Sevilla [4%]; baseline start 2018-12-24 → 2018-12-24 09:00; baseline finish 2018-12-24 → 2018-12-24 19:00 |
| 152 | [V1]Sistema de distribución central de tiempo de proceso (Scheduling) | 2018-12-24 → 2018-12-31 09:00 (+7d) | 2018-12-24 → 2019-01-04 17:00 (+11d) | 1d? → 38h | 24d → 15.25d |  | constraint start no earlier than 2018-12-22 → start no earlier than 2018-12-31 09:00; resources none → David Ramón Sevilla [50%]; baseline start 2018-12-24 → 2018-12-17 09:00; baseline finish 2018-12-24 → 2018-12-21 17:00 |
| 153 | [V2]Diseño e implementación b.objetos (6/10) | 2018-12-24 → 2018-12-24 09:00 | 2018-12-24 → 2018-12-24 18:00 |  |  |  | resources none → Jose Ramon Barea Cecilia [4%]; Jose Vicente Anton Coy [4%]; David Ramón Sevilla [4%]; María Sánchez Marqués [4%]; Marines Ánton Castelló [4%]; Débora Galdeano González [4%]; baseline start 2018-12-24 → 2018-12-24 09:00; baseline finish 2018-12-24 → 2018-12-24 18:00 |
| 154 | [v2]Diseño e implementacion b.componentes 6 | 2018-12-24 → 2018-12-24 09:00 | 2018-12-25 → 2018-12-25 11:00 |  |  |  | constraint start no earlier than 2018-12-10 → none; resources none → David Ramón Sevilla [4%]; Débora Galdeano González [4%]; Jose Ramon Barea Cecilia [4%]; Jose Vicente Anton Coy [4%]; María Sánchez Marqués [4%]; Marines Ánton Castelló [4%]; baseline start 2018-12-24 → 2018-12-24 09:00; baseline finish 2018-12-25 → 2018-12-25 11:00 |
| 156 | **[TDS]Realizar sonidos para el juego 6/7** | 2018-12-24 → 2018-12-24 09:00 | 2018-12-24 → 2018-12-24 11:51 |  |  |  | resources none → Débora Galdeano González [10%]; María Sánchez Marqués [10%]; Jose Ramon Barea Cecilia [10%]; David Ramón Sevilla [10%]; baseline start 2018-12-24 → 2018-12-24 09:00; baseline finish 2018-12-24 → 2018-12-24 11:51 |
| 157 | Síntesis | 2018-12-24 → 2018-12-24 09:00 | 2018-12-24 → 2018-12-24 11:51 |  |  |  | baseline start 2018-12-24 → 2018-12-24 09:00; baseline finish 2018-12-24 → 2018-12-24 11:51 |
| 158 | Grabaciones propias | 2018-12-24 → 2018-12-24 09:00 | 2018-12-24 → 2018-12-24 11:51 |  |  |  | baseline start 2018-12-24 → 2018-12-24 09:00; baseline finish 2018-12-24 → 2018-12-24 11:51 |
| 159 | Sonidos externos | 2018-12-24 → 2018-12-24 09:00 | 2018-12-24 → 2018-12-24 11:51 |  |  |  | baseline start 2018-12-24 → 2018-12-24 09:00; baseline finish 2018-12-24 → 2018-12-24 11:51 |
| 160 | Música | 2018-12-24 → 2018-12-24 09:00 | 2018-12-24 → 2018-12-24 11:51 |  |  |  | baseline start 2018-12-24 → 2018-12-24 09:00; baseline finish 2018-12-24 → 2018-12-24 11:51 |
| 161 | Cue Sheet | 2018-12-24 → 2018-12-24 09:00 | 2018-12-24 → 2018-12-24 10:25 |  |  |  | baseline start 2018-12-24 → 2018-12-24 09:00; baseline finish 2018-12-24 → 2018-12-24 10:25 |
| 162 | Hoja de metadatos | 2018-12-24 → 2018-12-24 09:00 | 2018-12-24 → 2018-12-24 10:25 |  |  |  | baseline start 2018-12-24 → 2018-12-24 09:00; baseline finish 2018-12-24 → 2018-12-24 10:25 |
| 163 | Integración del motor de audio en el juego con prueba de concepto | 2018-12-24 → 2018-12-24 09:00 | 2018-12-24 → 2018-12-24 11:51 |  |  |  | baseline start 2018-12-24 → 2018-12-24 09:00; baseline finish 2018-12-24 → 2018-12-24 11:51 |
| 164 | [PM]Registrar tiempos y % de realización de tareas en Project | 2018-12-24 → 2019-01-04 18:12 (+11d) | 2018-12-24 → 2019-01-06 19:00 (+13d) | 1d? → 48min | 24d → 15d | none → 150 | constraint start no earlier than 2018-12-22 → finish no earlier than 2019-01-06 19:00; resources none → David Ramón Sevilla [2%]; Débora Galdeano González [2%]; Jose Ramon Barea Cecilia [2%]; Jose Vicente Anton Coy [2%]; María Sánchez Marqués [2%]; Marines Ánton Castelló [2%]; baseline start 2018-12-24 → 2018-12-21 18:12; baseline finish 2018-12-24 → 2018-12-21 19:00 |
| 165 | **Iteracion 8** | 2019-01-11 → 2019-01-07 09:00 (-4d) | 2019-01-14 → 2019-01-25 19:00 (+11d) | 1.25d? → 15d | 9.75d → 0d |  | constraint start no earlier than 2019-01-11 → start no earlier than 2019-01-07 09:00; baseline start 2019-01-11 → 2019-01-11 09:00; baseline finish 2019-01-14 → 2019-01-14 11:00 |
| 166 | [V2]Diseño e implementación b.objetos (7/10) | 2019-01-11 → 2019-01-07 09:00 (-4d) | 2019-01-11 → 2019-01-07 18:00 (-4d) |  | 10.12d → 14.12d |  | constraint none → start no earlier than 2019-01-07 09:00; resources none → David Ramón Sevilla [4%]; María Sánchez Marqués [4%]; Marines Ánton Castelló [4%]; Jose Ramon Barea Cecilia [4%]; Jose Vicente Anton Coy [4%]; Débora Galdeano González [4%]; baseline start 2019-01-11 → 2019-01-11 09:00; baseline finish 2019-01-11 → 2019-01-11 18:00 |
| 167 | [v2]Diseño e implementacion b.componentes 7 | 2019-01-11 → 2019-01-07 09:00 (-4d) | 2019-01-14 → 2019-01-08 11:00 (-6d) |  | 9.75d → 13.75d |  | constraint start no earlier than 2018-12-24 → start no earlier than 2019-01-07 09:00; resources none → Jose Ramon Barea Cecilia [4%]; David Ramón Sevilla [4%]; Jose Vicente Anton Coy [4%]; María Sánchez Marqués [4%]; Marines Ánton Castelló [4%]; Débora Galdeano González [4%]; baseline start 2019-01-11 → 2019-01-11 09:00; baseline finish 2019-01-14 → 2019-01-14 11:00 |
| 168 | **[TDS]Realizar sonidos para el juego 7/7** | 2019-01-11 → 2019-01-07 09:00 (-4d) | 2019-01-11 → 2019-01-07 11:51 (-4d) |  | 10.64d → 14.64d |  | resources none → Débora Galdeano González [15%]; David Ramón Sevilla [15%]; Jose Ramon Barea Cecilia [15%]; María Sánchez Marqués [15%]; baseline start 2019-01-11 → 2019-01-11 09:00; baseline finish 2019-01-11 → 2019-01-11 11:51 |
| 169 | Síntesis | 2019-01-11 → 2019-01-07 09:00 (-4d) | 2019-01-11 → 2019-01-07 11:51 (-4d) |  | 10.64d → 14.64d |  | baseline start 2019-01-11 → 2019-01-11 09:00; baseline finish 2019-01-11 → 2019-01-11 11:51 |
| 170 | Grabaciones propias | 2019-01-11 → 2019-01-07 09:00 (-4d) | 2019-01-11 → 2019-01-07 11:51 (-4d) |  | 10.64d → 14.64d |  | baseline start 2019-01-11 → 2019-01-11 09:00; baseline finish 2019-01-11 → 2019-01-11 11:51 |
| 171 | Sonidos externos | 2019-01-11 → 2019-01-07 09:00 (-4d) | 2019-01-11 → 2019-01-07 11:51 (-4d) |  | 10.64d → 14.64d |  | baseline start 2019-01-11 → 2019-01-11 09:00; baseline finish 2019-01-11 → 2019-01-11 11:51 |
| 172 | Música | 2019-01-11 → 2019-01-07 09:00 (-4d) | 2019-01-11 → 2019-01-07 11:51 (-4d) |  | 10.64d → 14.64d |  | baseline start 2019-01-11 → 2019-01-11 09:00; baseline finish 2019-01-11 → 2019-01-11 11:51 |
| 173 | Cue Sheet | 2019-01-11 → 2019-01-07 09:00 (-4d) | 2019-01-11 → 2019-01-07 10:25 (-4d) |  | 10.82d → 14.82d |  | baseline start 2019-01-11 → 2019-01-11 09:00; baseline finish 2019-01-11 → 2019-01-11 10:25 |
| 174 | Hoja de metadatos | 2019-01-11 → 2019-01-07 09:00 (-4d) | 2019-01-11 → 2019-01-07 10:25 (-4d) |  | 10.82d → 14.82d |  | baseline start 2019-01-11 → 2019-01-11 09:00; baseline finish 2019-01-11 → 2019-01-11 10:25 |
| 175 | Integración del motor de audio en el juego con prueba de concepto | 2019-01-11 → 2019-01-07 09:00 (-4d) | 2019-01-11 → 2019-01-07 11:51 (-4d) |  | 10.64d → 14.64d |  | baseline start 2019-01-11 → 2019-01-11 09:00; baseline finish 2019-01-11 → 2019-01-11 11:51 |
| 176 | [V1]Sistema de depuración visual in-game de la IA | 2018-12-24 → 2019-01-17 09:00 (+24d) | 2018-12-24 → 2019-01-25 11:00 (+32d) | 1d → 50h | 24d → 0.75d |  | constraint start no earlier than 2018-12-22 → start no earlier than 2019-01-17 09:00; resources none → Jose Ramon Barea Cecilia [4%]; David Ramón Sevilla [4%]; Jose Vicente Anton Coy [4%]; María Sánchez Marqués [4%]; Marines Ánton Castelló [4%]; Débora Galdeano González [4%]; baseline start 2018-12-24 → 2018-12-24 09:00; baseline finish 2018-12-24 → 2018-12-24 19:00 |
| 177 | [V2]Integración de librería para GUI | 2018-12-24 → 2019-01-07 09:00 (+14d) | 2018-12-24 → 2019-01-07 17:00 (+14d) | 1d → 6h | 24d → 14.25d |  | constraint start no earlier than 2018-12-22 → start no earlier than 2019-01-07 09:00; resources none → Marines Ánton Castelló [40%]; Débora Galdeano González [40%]; baseline start 2018-12-24 → 2018-12-24 09:00; baseline finish 2018-12-24 → 2018-12-24 19:00 |
| 178 | [V2]Implementación de menús | 2018-12-24 → 2019-01-11 09:00 (+18d) | 2018-12-24 → 2019-01-17 12:00 (+24d) | 1d → 35h | 24d → 6.62d |  | constraint start no earlier than 2018-12-22 → start no earlier than 2019-01-11 09:00; resources none → Jose Ramon Barea Cecilia [40%]; baseline start 2018-12-24 → 2018-12-24 09:00; baseline finish 2018-12-24 → 2018-12-24 19:00 |
| 179 | [PD]Making of juego/proyecto | 2018-12-24 → 2019-01-16 09:00 (+23d) | 2018-12-24 → 2019-01-25 13:00 (+32d) | 1d → 60h | 24d → 0.5d |  | constraint start no earlier than 2018-12-22 → start no earlier than 2019-01-16 09:00; resources none → David Ramón Sevilla [40%]; Jose Vicente Anton Coy [40%]; baseline start 2018-12-24 → 2018-12-24 09:00; baseline finish 2018-12-24 → 2018-12-24 19:00 |
| 180 | [RV]Modelado de los personajes | 2018-12-24 → 2019-01-14 09:00 (+21d) | 2018-12-24 → 2019-01-23 13:00 (+30d) | 1d → 60h | 24d → 2.5d |  | constraint start no earlier than 2018-12-22 → start no earlier than 2019-01-14 09:00; resources none → Jose Ramon Barea Cecilia [40%]; María Sánchez Marqués [40%]; baseline start 2018-12-24 → 2018-12-24 09:00; baseline finish 2018-12-24 → 2018-12-24 19:00 |
| 181 | [RV]Texturizado de los personajes | 2018-12-24 → 2019-01-21 09:00 (+28d) | 2018-12-24 → 2019-01-25 19:00 (+32d) | 1d → 40h | 24d → 0d |  | constraint start no earlier than 2018-12-22 → start no earlier than 2019-01-21 09:00; resources none → Débora Galdeano González [40%]; baseline start 2018-12-24 → 2018-12-24 09:00; baseline finish 2018-12-24 → 2018-12-24 19:00 |
| 182 | [RV]Modelado del entorno y elementos | 2018-12-24 → 2019-01-07 09:00 (+14d) | 2018-12-24 → 2019-01-11 19:00 (+18d) | 1d → 40h | 24d → 10d |  | constraint start no earlier than 2018-12-22 → start no earlier than 2018-12-22 09:00; resources none → María Sánchez Marqués [40%]; Jose Ramon Barea Cecilia [40%]; baseline start 2018-12-24 → 2018-12-24 09:00; baseline finish 2018-12-24 → 2018-12-24 19:00 |
| 184 | [PM]Comparar la planificación prevista y real en Project hito 2 | 2018-12-24 → 2018-12-24 09:00 | 2018-12-24 → 2018-12-24 19:00 |  |  |  | constraint start no earlier than 2018-12-22 → start no earlier than 2018-12-22 09:00; baseline start 2018-12-24 → 2018-12-24 09:00; baseline finish 2018-12-24 → 2018-12-24 19:00 |
| 185 | [PM]Confeccionar Informes de iteración e informe resumen de Hito 2 | 2018-12-24 → 2018-12-24 09:00 | 2018-12-24 → 2018-12-24 19:00 |  |  |  | constraint start no earlier than 2018-12-22 → start no earlier than 2018-12-22 09:00; baseline start 2018-12-24 → 2018-12-24 09:00; baseline finish 2018-12-24 → 2018-12-24 19:00 |
| 186 | Version Beta del juego, que se pueda jugar | 2019-01-14 → 2019-01-25 19:00 (+11d) | 2019-01-14 → 2019-01-25 19:00 (+11d) |  | 80.75d → 71d |  | constraint start no earlier than 2018-12-22 → start no earlier than 2018-12-22 09:00; baseline start 2019-01-14 → 2019-01-14 11:00; baseline finish 2019-01-14 → 2019-01-14 11:00 |
| 187 | **Hito 3** | 2019-01-24 → 2019-01-24 09:00 | 2019-03-06 → 2019-03-06 19:00 |  |  |  | constraint finish no later than 2019-03-26 → finish no later than 2019-03-26 19:00; baseline start 2019-01-24 → 2019-01-24 09:00; baseline finish 2019-03-06 → 2019-03-06 19:00 |
| 188 | **Iteracion 9** | 2019-01-25 → 2019-01-25 09:00 | 2019-01-28 → 2019-01-28 11:00 |  |  |  | constraint start no earlier than 2019-01-25 → start no earlier than 2019-01-25 09:00; baseline start 2019-01-25 → 2019-01-25 09:00; baseline finish 2019-01-28 → 2019-01-28 11:00 |
| 189 | [V2]Diseño e implementación b.objetos (8/10) | 2019-01-25 → 2019-01-25 09:00 | 2019-01-25 → 2019-01-25 18:00 |  |  |  | baseline start 2019-01-25 → 2019-01-25 09:00; baseline finish 2019-01-25 → 2019-01-25 18:00 |
| 190 | [v2]Diseño e implementacion b.componentes 8 | 2019-01-25 → 2019-01-25 09:00 | 2019-01-28 → 2019-01-28 11:00 |  |  |  | constraint start no earlier than 2019-01-07 → start no earlier than 2019-01-07 09:00; baseline start 2019-01-25 → 2019-01-25 09:00; baseline finish 2019-01-28 → 2019-01-28 11:00 |
| 191 | <Tarea nueva> | 2019-01-25 → 2019-01-25 09:00 | 2019-01-25 → 2019-01-25 19:00 |  |  |  | baseline start 2019-01-25 → 2019-01-25 09:00; baseline finish 2019-01-25 → 2019-01-25 19:00 |
| 192 | **Iteracion 10** | 2019-02-06 → 2019-02-06 09:00 | 2019-02-07 → 2019-02-07 11:00 |  |  |  | constraint start no earlier than 2019-02-06 → start no earlier than 2019-02-06 09:00; baseline start 2019-02-06 → 2019-02-06 09:00; baseline finish 2019-02-07 → 2019-02-07 11:00 |
| 193 | [V2]Diseño e implementación b.objetos (9/10) | 2019-02-06 → 2019-02-06 09:00 | 2019-02-06 → 2019-02-06 18:00 |  |  |  | baseline start 2019-02-06 → 2019-02-06 09:00; baseline finish 2019-02-06 → 2019-02-06 18:00 |
| 194 | [v2]Diseño e implementacion b.componentes 9 | 2019-02-06 → 2019-02-06 09:00 | 2019-02-07 → 2019-02-07 11:00 |  |  |  | constraint start no earlier than 2019-01-21 → start no earlier than 2019-01-21 09:00; baseline start 2019-02-06 → 2019-02-06 09:00; baseline finish 2019-02-07 → 2019-02-07 11:00 |
| 195 | <Tarea nueva> | 2019-02-06 → 2019-02-06 09:00 | 2019-02-06 → 2019-02-06 19:00 |  |  |  | baseline start 2019-02-06 → 2019-02-06 09:00; baseline finish 2019-02-06 → 2019-02-06 19:00 |
| 196 | **Iteracion 11** | 2019-02-20 → 2019-02-20 09:00 | 2019-02-21 → 2019-02-21 11:00 |  |  |  | constraint start no earlier than 2019-02-20 → start no earlier than 2019-02-20 09:00; baseline start 2019-02-20 → 2019-02-20 09:00; baseline finish 2019-02-21 → 2019-02-21 11:00 |
| 197 | [V2]Diseño e implementación b.objetos (final) | 2019-02-20 → 2019-02-20 09:00 | 2019-02-20 → 2019-02-20 18:00 |  |  |  | baseline start 2019-02-20 → 2019-02-20 09:00; baseline finish 2019-02-20 → 2019-02-20 18:00 |
| 198 | [v2]Diseño e implementacion b.componentes (final) | 2019-02-20 → 2019-02-20 09:00 | 2019-02-21 → 2019-02-21 11:00 |  |  |  | constraint start no earlier than 2019-02-04 → start no earlier than 2019-02-04 09:00; baseline start 2019-02-20 → 2019-02-20 09:00; baseline finish 2019-02-21 → 2019-02-21 11:00 |
| 199 | <Tarea nueva> | 2019-02-20 → 2019-02-20 09:00 | 2019-02-20 → 2019-02-20 19:00 |  |  |  | baseline start 2019-02-20 → 2019-02-20 09:00; baseline finish 2019-02-20 → 2019-02-20 19:00 |
| 200 | **Iteracion 12** | 2019-03-06 → 2019-03-06 09:00 | 2019-03-06 → 2019-03-06 19:00 |  |  |  | constraint start no earlier than 2019-03-06 → start no earlier than 2019-03-06 09:00; baseline start 2019-03-06 → 2019-03-06 09:00; baseline finish 2019-03-06 → 2019-03-06 19:00 |
| 201 | <Tarea nueva> | 2019-03-06 → 2019-03-06 09:00 | 2019-03-06 → 2019-03-06 19:00 |  |  |  | baseline start 2019-03-06 → 2019-03-06 09:00; baseline finish 2019-03-06 → 2019-03-06 19:00 |
| 202 | [PM]Detallar plan iteraciones del mes de Febrero-Marzo. Creación Subtareas y precedencias en Project | 2019-01-24 → 2019-01-24 09:00 | 2019-01-24 → 2019-01-24 19:00 |  |  |  | constraint start no earlier than 2019-01-24 → start no earlier than 2019-01-24 09:00; baseline start 2019-01-24 → 2019-01-24 09:00; baseline finish 2019-01-24 → 2019-01-24 19:00 |
| 203 | [PM]Detallar plan iteraciones del mes de Febrero-Marzo Asignar recursos a las tareas en Project | 2019-01-24 → 2019-01-24 09:00 | 2019-01-24 → 2019-01-24 19:00 |  |  |  | constraint start no earlier than 2019-01-24 → start no earlier than 2019-01-24 09:00; baseline start 2019-01-24 → 2019-01-24 09:00; baseline finish 2019-01-24 → 2019-01-24 19:00 |
| 204 | [PM]Registrar tiempos y % de realización de tareas en Project | 2019-01-24 → 2019-01-24 09:00 | 2019-01-24 → 2019-01-24 19:00 |  |  |  | constraint start no earlier than 2019-01-24 → start no earlier than 2019-01-24 09:00; baseline start 2019-01-24 → 2019-01-24 09:00; baseline finish 2019-01-24 → 2019-01-24 19:00 |
| 205 | [PM]Comparar la planificación prevista y real en Project hito 3 | 2019-01-24 → 2019-01-24 09:00 | 2019-01-24 → 2019-01-24 19:00 |  |  |  | constraint start no earlier than 2019-01-24 → start no earlier than 2019-01-24 09:00; baseline start 2019-01-24 → 2019-01-24 09:00; baseline finish 2019-01-24 → 2019-01-24 19:00 |
| 206 | [PM]Confeccionar Informes de iteración e informe resumen de Hito 3 | 2019-01-24 → 2019-01-24 09:00 | 2019-01-24 → 2019-01-24 19:00 |  |  |  | constraint start no earlier than 2019-01-24 → start no earlier than 2019-01-24 09:00; baseline start 2019-01-24 → 2019-01-24 09:00; baseline finish 2019-01-24 → 2019-01-24 19:00 |
| 207 | [PM]Elaborar la presentación del Hito 3 | 2019-01-24 → 2019-01-24 09:00 | 2019-01-24 → 2019-01-24 19:00 |  |  |  | constraint start no earlier than 2019-01-24 → start no earlier than 2019-01-24 09:00; baseline start 2019-01-24 → 2019-01-24 09:00; baseline finish 2019-01-24 → 2019-01-24 19:00 |
| 208 | [PM]Exponer la presentación del Hito 3 | 2019-01-24 → 2019-01-24 09:00 | 2019-01-24 → 2019-01-24 19:00 |  |  |  | constraint start no earlier than 2019-01-24 → start no earlier than 2019-01-24 09:00; baseline start 2019-01-24 → 2019-01-24 09:00; baseline finish 2019-01-24 → 2019-01-24 19:00 |
| 209 | [TAG]Estructura básica del nodo (array de hijos, puntero a padre, puntero a entidad, funcionalidad básica -constructor, destructor, gets, sets, manejo de hijos….) | 2019-01-24 → 2019-01-24 09:00 | 2019-01-24 → 2019-01-24 19:00 |  |  |  | constraint start no earlier than 2019-01-24 → start no earlier than 2019-01-24 09:00; baseline start 2019-01-24 → 2019-01-24 09:00; baseline finish 2019-01-24 → 2019-01-24 19:00 |
| 210 | [TAG]Recorrido-dibujado del árbol | 2019-01-24 → 2019-01-24 09:00 | 2019-01-24 → 2019-01-24 19:00 |  |  |  | constraint start no earlier than 2019-01-24 → start no earlier than 2019-01-24 09:00; baseline start 2019-01-24 → 2019-01-24 09:00; baseline finish 2019-01-24 → 2019-01-24 19:00 |
| 211 | [TAG]Estructura básica de la entidad (Constructor, destructor, funciones… todas virtuales, vacías) | 2019-01-24 → 2019-01-24 09:00 | 2019-01-24 → 2019-01-24 19:00 |  |  |  | constraint start no earlier than 2019-01-24 → start no earlier than 2019-01-24 09:00; baseline start 2019-01-24 → 2019-01-24 09:00; baseline finish 2019-01-24 → 2019-01-24 19:00 |
| 212 | [TAG]Matrices (model, view, projection) y pila estáticas y su manejo | 2019-01-24 → 2019-01-24 09:00 | 2019-01-24 → 2019-01-24 19:00 |  |  |  | constraint start no earlier than 2019-01-24 → start no earlier than 2019-01-24 09:00; baseline start 2019-01-24 → 2019-01-24 09:00; baseline finish 2019-01-24 → 2019-01-24 19:00 |
| 213 | [TAG]Estructura básica de la transformación (Constructor, destructor, matriz transformación…) | 2019-01-24 → 2019-01-24 09:00 | 2019-01-24 → 2019-01-24 19:00 |  |  |  | constraint start no earlier than 2019-01-24 → start no earlier than 2019-01-24 09:00; baseline start 2019-01-24 → 2019-01-24 09:00; baseline finish 2019-01-24 → 2019-01-24 19:00 |
| 214 | [TAG]Operaciones de transformación (trasladar, rotar, escalar, identidad, trasponer, invertir, todas con GLM o GLMatrix) | 2019-01-24 → 2019-01-24 09:00 | 2019-01-24 → 2019-01-24 19:00 |  |  |  | constraint start no earlier than 2019-01-24 → start no earlier than 2019-01-24 09:00; baseline start 2019-01-24 → 2019-01-24 09:00; baseline finish 2019-01-24 → 2019-01-24 19:00 |

| ID | Task | Start | Finish | Other |
| --- | --- | --- | --- | --- |
| 215 | [TAG]Dibujado (begindraw, enddraw, manejo pila y matriz model) | 2019-01-24 → 2019-01-24 09:00 | 2019-01-24 → 2019-01-24 19:00 | constraint start no earlier than 2019-01-24 → start no earlier than 2019-01-24 09:00; baseline start 2019-01-24 → 2019-01-24 09:00; baseline finish 2019-01-24 → 2019-01-24 19:00 |
| 216 | [TAG]Estructura básica de la cámara (Constructor, destructor, matriz proyección) | 2019-01-24 → 2019-01-24 09:00 | 2019-01-24 → 2019-01-24 19:00 | constraint start no earlier than 2019-01-24 → start no earlier than 2019-01-24 09:00; baseline start 2019-01-24 → 2019-01-24 09:00; baseline finish 2019-01-24 → 2019-01-24 19:00 |
| 217 | [TAG]Rellenar matriz perspectiva (con GLM o GLMatrix) | 2019-01-24 → 2019-01-24 09:00 | 2019-01-24 → 2019-01-24 19:00 | constraint start no earlier than 2019-01-24 → start no earlier than 2019-01-24 09:00; baseline start 2019-01-24 → 2019-01-24 09:00; baseline finish 2019-01-24 → 2019-01-24 19:00 |
| 218 | [TAG]Estructura básica de la luz (Constructor, destructor) | 2019-01-24 → 2019-01-24 09:00 | 2019-01-24 → 2019-01-24 19:00 | constraint start no earlier than 2019-01-24 → start no earlier than 2019-01-24 09:00; baseline start 2019-01-24 → 2019-01-24 09:00; baseline finish 2019-01-24 → 2019-01-24 19:00 |
| 219 | [TAG]Datos y funciones luz puntual | 2019-01-24 → 2019-01-24 09:00 | 2019-01-24 → 2019-01-24 19:00 | constraint start no earlier than 2019-01-24 → start no earlier than 2019-01-24 09:00; baseline start 2019-01-24 → 2019-01-24 09:00; baseline finish 2019-01-24 → 2019-01-24 19:00 |
| 220 | [TAG]Estructura básica de la malla (Constructor, destructor) | 2019-01-24 → 2019-01-24 09:00 | 2019-01-24 → 2019-01-24 19:00 | constraint start no earlier than 2019-01-24 → start no earlier than 2019-01-24 09:00; baseline start 2019-01-24 → 2019-01-24 09:00; baseline finish 2019-01-24 → 2019-01-24 19:00 |
| 221 | [TAG]Datos de mallas, texturas, materiales… (llamadas al gestor de recursos) | 2019-01-24 → 2019-01-24 09:00 | 2019-01-24 → 2019-01-24 19:00 | constraint start no earlier than 2019-01-24 → start no earlier than 2019-01-24 09:00; baseline start 2019-01-24 → 2019-01-24 09:00; baseline finish 2019-01-24 → 2019-01-24 19:00 |
| 222 | [TAG]Dibujado de mallas (begindraw, enddraw, matriz model…) | 2019-01-24 → 2019-01-24 09:00 | 2019-01-24 → 2019-01-24 19:00 | constraint start no earlier than 2019-01-24 → start no earlier than 2019-01-24 09:00; baseline start 2019-01-24 → 2019-01-24 09:00; baseline finish 2019-01-24 → 2019-01-24 19:00 |
| 223 | [TAG]Estructura básica del gestor de recursos (constructor, destructor, vectores de recursos) | 2019-01-24 → 2019-01-24 09:00 | 2019-01-24 → 2019-01-24 19:00 | constraint start no earlier than 2019-01-24 → start no earlier than 2019-01-24 09:00; baseline start 2019-01-24 → 2019-01-24 09:00; baseline finish 2019-01-24 → 2019-01-24 19:00 |
| 224 | [TAG]Obtener recurso (gestión adecuada de memoria) | 2019-01-24 → 2019-01-24 09:00 | 2019-01-24 → 2019-01-24 19:00 | constraint start no earlier than 2019-01-24 → start no earlier than 2019-01-24 09:00; baseline start 2019-01-24 → 2019-01-24 09:00; baseline finish 2019-01-24 → 2019-01-24 19:00 |
| 225 | [TAG]Estructura básica del recurso (constructor, destructor. Es virtual, vacío) | 2019-01-24 → 2019-01-24 09:00 | 2019-01-24 → 2019-01-24 19:00 | constraint start no earlier than 2019-01-24 → start no earlier than 2019-01-24 09:00; baseline start 2019-01-24 → 2019-01-24 09:00; baseline finish 2019-01-24 → 2019-01-24 19:00 |
| 226 | [TAG]Estructura básica de la malla (constructor, destructor) | 2019-01-24 → 2019-01-24 09:00 | 2019-01-24 → 2019-01-24 19:00 | constraint start no earlier than 2019-01-24 → start no earlier than 2019-01-24 09:00; baseline start 2019-01-24 → 2019-01-24 09:00; baseline finish 2019-01-24 → 2019-01-24 19:00 |
| 227 | [TAG]Lectura de disco (con assimp) | 2019-01-24 → 2019-01-24 09:00 | 2019-01-24 → 2019-01-24 19:00 | constraint start no earlier than 2019-01-24 → start no earlier than 2019-01-24 09:00; baseline start 2019-01-24 → 2019-01-24 09:00; baseline finish 2019-01-24 → 2019-01-24 19:00 |
| 228 | [TAG]Creación de buffers de vértices, normales, índices… y relleno | 2019-01-24 → 2019-01-24 09:00 | 2019-01-24 → 2019-01-24 19:00 | constraint start no earlier than 2019-01-24 → start no earlier than 2019-01-24 09:00; baseline start 2019-01-24 → 2019-01-24 09:00; baseline finish 2019-01-24 → 2019-01-24 19:00 |
| 229 | [TAG]Dibujado de las mallas (draw, con paso de los buffers a OpenGL o WebGL) | 2019-01-24 → 2019-01-24 09:00 | 2019-01-24 → 2019-01-24 19:00 | constraint start no earlier than 2019-01-24 → start no earlier than 2019-01-24 09:00; baseline start 2019-01-24 → 2019-01-24 09:00; baseline finish 2019-01-24 → 2019-01-24 19:00 |
| 230 | [TAG]Estructura básica del material (constructor, destructor) | 2019-01-24 → 2019-01-24 09:00 | 2019-01-24 → 2019-01-24 19:00 | constraint start no earlier than 2019-01-24 → start no earlier than 2019-01-24 09:00; baseline start 2019-01-24 → 2019-01-24 09:00; baseline finish 2019-01-24 → 2019-01-24 19:00 |
| 231 | [TAG]Leer material de disco (con librería o con parser propio) y rellenar valores | 2019-01-24 → 2019-01-24 09:00 | 2019-01-24 → 2019-01-24 19:00 | constraint start no earlier than 2019-01-24 → start no earlier than 2019-01-24 09:00; baseline start 2019-01-24 → 2019-01-24 09:00; baseline finish 2019-01-24 → 2019-01-24 19:00 |
| 232 | [TAG]Dibujado de los materiales (preparar los materiales y cargarlos en OpenGL o WebGL) | 2019-01-24 → 2019-01-24 09:00 | 2019-01-24 → 2019-01-24 19:00 | constraint start no earlier than 2019-01-24 → start no earlier than 2019-01-24 09:00; baseline start 2019-01-24 → 2019-01-24 09:00; baseline finish 2019-01-24 → 2019-01-24 19:00 |
| 233 | [TAG]Estructura básica del shader (constructor, destructor) | 2019-01-24 → 2019-01-24 09:00 | 2019-01-24 → 2019-01-24 19:00 | constraint start no earlier than 2019-01-24 → start no earlier than 2019-01-24 09:00; baseline start 2019-01-24 → 2019-01-24 09:00; baseline finish 2019-01-24 → 2019-01-24 19:00 |
| 234 | [TAG]Lectura de shaders de disco (con parser propio) y guardarlo | 2019-01-24 → 2019-01-24 09:00 | 2019-01-24 → 2019-01-24 19:00 | constraint start no earlier than 2019-01-24 → start no earlier than 2019-01-24 09:00; baseline start 2019-01-24 → 2019-01-24 09:00; baseline finish 2019-01-24 → 2019-01-24 19:00 |
| 235 | [TAG]Estructura básica de la interfaz (constructor, destructor, inicialización motor y openGL) | 2019-01-24 → 2019-01-24 09:00 | 2019-01-24 → 2019-01-24 19:00 | constraint start no earlier than 2019-01-24 → start no earlier than 2019-01-24 09:00; baseline start 2019-01-24 → 2019-01-24 09:00; baseline finish 2019-01-24 → 2019-01-24 19:00 |
| 236 | [TAG]Funciones para crear cámaras y gestionarlas (manejo de las cámaras, registro, cálculo de la matriz view) | 2019-01-24 → 2019-01-24 09:00 | 2019-01-24 → 2019-01-24 19:00 | constraint start no earlier than 2019-01-24 → start no earlier than 2019-01-24 09:00; baseline start 2019-01-24 → 2019-01-24 09:00; baseline finish 2019-01-24 → 2019-01-24 19:00 |
| 237 | [TAG]Funciones para crear luces y gestionarlas (manejo de las luces registro, cálculo de la matriz light) | 2019-01-24 → 2019-01-24 09:00 | 2019-01-24 → 2019-01-24 19:00 | constraint start no earlier than 2019-01-24 → start no earlier than 2019-01-24 09:00; baseline start 2019-01-24 → 2019-01-24 09:00; baseline finish 2019-01-24 → 2019-01-24 19:00 |
| 238 | [TAG]Funciones para crear transformaciones (creación de varios nodos con las transformaciones, manejo de las transformaciones) | 2019-01-24 → 2019-01-24 09:00 | 2019-01-24 → 2019-01-24 19:00 | constraint start no earlier than 2019-01-24 → start no earlier than 2019-01-24 09:00; baseline start 2019-01-24 → 2019-01-24 09:00; baseline finish 2019-01-24 → 2019-01-24 19:00 |
| 239 | [TAG]Funciones para crear mallas y animaciones | 2019-01-24 → 2019-01-24 09:00 | 2019-01-24 → 2019-01-24 19:00 | constraint start no earlier than 2019-01-24 → start no earlier than 2019-01-24 09:00; baseline start 2019-01-24 → 2019-01-24 09:00; baseline finish 2019-01-24 → 2019-01-24 19:00 |
| 240 | [TAG]Funciones para crear shaders y gestionarlos | 2019-01-24 → 2019-01-24 09:00 | 2019-01-24 → 2019-01-24 19:00 | constraint start no earlier than 2019-01-24 → start no earlier than 2019-01-24 09:00; baseline start 2019-01-24 → 2019-01-24 09:00; baseline finish 2019-01-24 → 2019-01-24 19:00 |
| 241 | [TAG]Shader básico (Sombreado de Phong, reflexión de Phong) con materiales | 2019-01-24 → 2019-01-24 09:00 | 2019-01-24 → 2019-01-24 19:00 | constraint start no earlier than 2019-01-24 → start no earlier than 2019-01-24 09:00; baseline start 2019-01-24 → 2019-01-24 09:00; baseline finish 2019-01-24 → 2019-01-24 19:00 |
| 242 | [TAG]Integración con la aplicación | 2019-01-24 → 2019-01-24 09:00 | 2019-01-24 → 2019-01-24 19:00 | constraint start no earlier than 2019-01-24 → start no earlier than 2019-01-24 09:00; baseline start 2019-01-24 → 2019-01-24 09:00; baseline finish 2019-01-24 → 2019-01-24 19:00 |
| 243 | [TAG]Realización de una fachada entre el motor y la aplicación o videojuego | 2019-01-24 → 2019-01-24 09:00 | 2019-01-24 → 2019-01-24 19:00 | constraint start no earlier than 2019-01-24 → start no earlier than 2019-01-24 09:00; baseline start 2019-01-24 → 2019-01-24 09:00; baseline finish 2019-01-24 → 2019-01-24 19:00 |
| 244 | [TAG]Librería matemática (GLM o GLMatrix) | 2019-01-24 → 2019-01-24 09:00 | 2019-01-24 → 2019-01-24 19:00 | constraint start no earlier than 2019-01-24 → start no earlier than 2019-01-24 09:00; baseline start 2019-01-24 → 2019-01-24 09:00; baseline finish 2019-01-24 → 2019-01-24 19:00 |
| 245 | [TAG][Solo CED] Librería de lectura de mallas (assimp…) | 2019-01-24 → 2019-01-24 09:00 | 2019-01-24 → 2019-01-24 19:00 | constraint start no earlier than 2019-01-24 → start no earlier than 2019-01-24 09:00; baseline start 2019-01-24 → 2019-01-24 09:00; baseline finish 2019-01-24 → 2019-01-24 19:00 |
| 246 | [TAG][Solo CED] Librería de ventanas, entrada/salida... (GLFW…) | 2019-01-24 → 2019-01-24 09:00 | 2019-01-24 → 2019-01-24 19:00 | constraint start no earlier than 2019-01-24 → start no earlier than 2019-01-24 09:00; baseline start 2019-01-24 → 2019-01-24 09:00; baseline finish 2019-01-24 → 2019-01-24 19:00 |
| 247 | [V1]Flocking: comportamiento grupal emergente | 2019-01-24 → 2019-01-24 09:00 | 2019-01-24 → 2019-01-24 19:00 | constraint start no earlier than 2019-01-24 → start no earlier than 2019-01-24 09:00; baseline start 2019-01-24 → 2019-01-24 09:00; baseline finish 2019-01-24 → 2019-01-24 19:00 |
| 248 | [V1]Editor in-game de parámetros y comportamientos de la IA | 2019-01-24 → 2019-01-24 09:00 | 2019-01-24 → 2019-01-24 19:00 | constraint start no earlier than 2019-01-24 → start no earlier than 2019-01-24 09:00; baseline start 2019-01-24 → 2019-01-24 09:00; baseline finish 2019-01-24 → 2019-01-24 19:00 |
| 249 | [V1]Sistema de logros y puntuaciones web | 2019-01-24 → 2019-01-24 09:00 | 2019-01-24 → 2019-01-24 19:00 | constraint start no earlier than 2019-01-24 → start no earlier than 2019-01-24 09:00; baseline start 2019-01-24 → 2019-01-24 09:00; baseline finish 2019-01-24 → 2019-01-24 19:00 |
| 250 | [V2]Implementación de cesped y vegetación | 2019-01-24 → 2019-01-24 09:00 | 2019-01-24 → 2019-01-24 19:00 | constraint start no earlier than 2019-01-24 → start no earlier than 2019-01-24 09:00; baseline start 2019-01-24 → 2019-01-24 09:00; baseline finish 2019-01-24 → 2019-01-24 19:00 |
| 251 | [V2]Implementación de nubes | 2019-01-24 → 2019-01-24 09:00 | 2019-01-24 → 2019-01-24 19:00 | constraint start no earlier than 2019-01-24 → start no earlier than 2019-01-24 09:00; baseline start 2019-01-24 → 2019-01-24 09:00; baseline finish 2019-01-24 → 2019-01-24 19:00 |
| 252 | [V2]Implementación de sistemas de partículas | 2019-01-24 → 2019-01-24 09:00 | 2019-01-24 → 2019-01-24 19:00 | constraint start no earlier than 2019-01-24 → start no earlier than 2019-01-24 09:00; baseline start 2019-01-24 → 2019-01-24 09:00; baseline finish 2019-01-24 → 2019-01-24 19:00 |
| 253 | [TDS]Resto de la biblioteca (máx. 1/3), cuesheet y metadatos finales | 2019-01-24 → 2019-01-24 09:00 | 2019-01-24 → 2019-01-24 19:00 | constraint start no earlier than 2019-01-24 → start no earlier than 2019-01-24 09:00; baseline start 2019-01-24 → 2019-01-24 09:00; baseline finish 2019-01-24 → 2019-01-24 19:00 |
| 254 | <Tarea nueva> | 2019-01-24 → 2019-01-24 09:00 | 2019-01-24 → 2019-01-24 19:00 | constraint start no earlier than 2019-01-24 → start no earlier than 2019-01-24 09:00; baseline start 2019-01-24 → 2019-01-24 09:00; baseline finish 2019-01-24 → 2019-01-24 19:00 |
| 255 | Versión Producción - Lista para pulir | 2019-03-06 → 2019-03-06 19:00 | 2019-03-06 → 2019-03-06 19:00 | constraint start no earlier than 2019-03-06 → start no earlier than 2019-03-06 09:00; baseline start 2019-03-06 → 2019-03-06 19:00; baseline finish 2019-03-06 → 2019-03-06 19:00 |
| 256 | **hito 4** | 2019-03-27 → 2019-03-27 09:00 | 2019-05-06 → 2019-05-06 19:00 | constraint finish no later than 2019-05-23 → finish no later than 2019-05-23 19:00; baseline start 2019-03-27 → 2019-03-27 09:00; baseline finish 2019-05-06 → 2019-05-06 19:00 |
| 257 | **Iteracion 13** | 2019-03-27 → 2019-03-27 09:00 | 2019-03-27 → 2019-03-27 19:00 | constraint start no earlier than 2019-03-27 → start no earlier than 2019-03-27 09:00; baseline start 2019-03-27 → 2019-03-27 09:00; baseline finish 2019-03-27 → 2019-03-27 19:00 |
| 258 | <Tarea nueva> | 2019-03-27 → 2019-03-27 09:00 | 2019-03-27 → 2019-03-27 19:00 | baseline start 2019-03-27 → 2019-03-27 09:00; baseline finish 2019-03-27 → 2019-03-27 19:00 |
| 259 | **Semana santa** | 2019-04-17 → 2019-04-17 09:00 | 2019-04-17 → 2019-04-17 19:00 | constraint start no earlier than 2019-04-17 → start no earlier than 2019-04-17 09:00; baseline start 2019-04-17 → 2019-04-17 09:00; baseline finish 2019-04-17 → 2019-04-17 19:00 |
| 260 | <Tarea nueva> | 2019-04-17 → 2019-04-17 09:00 | 2019-04-17 → 2019-04-17 19:00 | baseline start 2019-04-17 → 2019-04-17 09:00; baseline finish 2019-04-17 → 2019-04-17 19:00 |
| 261 | **Iteracion 14** | 2019-05-06 → 2019-05-06 09:00 | 2019-05-06 → 2019-05-06 19:00 | constraint start no earlier than 2019-05-05 → start no earlier than 2019-05-05 09:00; baseline start 2019-05-06 → 2019-05-06 09:00; baseline finish 2019-05-06 → 2019-05-06 19:00 |
| 262 | <Tarea nueva> | 2019-05-06 → 2019-05-06 09:00 | 2019-05-06 → 2019-05-06 19:00 | baseline start 2019-05-06 → 2019-05-06 09:00; baseline finish 2019-05-06 → 2019-05-06 19:00 |
| 263 | [PM]Detallar plan iteraciones del mes de Abril-Mayo. Creación Subtareas y precedencias en Project | 2019-03-27 → 2019-03-27 09:00 | 2019-03-27 → 2019-03-27 19:00 | constraint start no earlier than 2019-03-27 → start no earlier than 2019-03-27 09:00; baseline start 2019-03-27 → 2019-03-27 09:00; baseline finish 2019-03-27 → 2019-03-27 19:00 |
| 264 | [PM]Detallar plan iteraciones del mes de Abril-Mayo. Asignar recursos a las tareas en Project | 2019-03-27 → 2019-03-27 09:00 | 2019-03-27 → 2019-03-27 19:00 | constraint start no earlier than 2019-03-27 → start no earlier than 2019-03-27 09:00; baseline start 2019-03-27 → 2019-03-27 09:00; baseline finish 2019-03-27 → 2019-03-27 19:00 |
| 265 | [PM]Registrar tiempos y % de realización de tareas en Project | 2019-03-27 → 2019-03-27 09:00 | 2019-03-27 → 2019-03-27 19:00 | constraint start no earlier than 2019-03-27 → start no earlier than 2019-03-27 09:00; baseline start 2019-03-27 → 2019-03-27 09:00; baseline finish 2019-03-27 → 2019-03-27 19:00 |
| 266 | [PM]Comparar la planificación prevista y real en Project hito 4 | 2019-03-27 → 2019-03-27 09:00 | 2019-03-27 → 2019-03-27 19:00 | constraint start no earlier than 2019-03-27 → start no earlier than 2019-03-27 09:00; baseline start 2019-03-27 → 2019-03-27 09:00; baseline finish 2019-03-27 → 2019-03-27 19:00 |
| 267 | [PM]Confeccionar Informes de iteración e informe resumen de Hito 4 | 2019-03-27 → 2019-03-27 09:00 | 2019-03-27 → 2019-03-27 19:00 | constraint start no earlier than 2019-03-27 → start no earlier than 2019-03-27 09:00; baseline start 2019-03-27 → 2019-03-27 09:00; baseline finish 2019-03-27 → 2019-03-27 19:00 |
| 268 | [PM]Elaborar la presentación del Hito 4 | 2019-03-27 → 2019-03-27 09:00 | 2019-03-27 → 2019-03-27 19:00 | constraint start no earlier than 2019-03-27 → start no earlier than 2019-03-27 09:00; baseline start 2019-03-27 → 2019-03-27 09:00; baseline finish 2019-03-27 → 2019-03-27 19:00 |
| 269 | [PM]Exponer la presentación del Hito 4 | 2019-03-27 → 2019-03-27 09:00 | 2019-03-27 → 2019-03-27 19:00 | constraint start no earlier than 2019-03-27 → start no earlier than 2019-03-27 09:00; baseline start 2019-03-27 → 2019-03-27 09:00; baseline finish 2019-03-27 → 2019-03-27 19:00 |
| 270 | [TAG]Estructura básica de la animación (Constructor, destructor) | 2019-03-27 → 2019-03-27 09:00 | 2019-03-27 → 2019-03-27 19:00 | constraint start no earlier than 2019-03-27 → start no earlier than 2019-03-27 09:00; baseline start 2019-03-27 → 2019-03-27 09:00; baseline finish 2019-03-27 → 2019-03-27 19:00 |
| 271 | [TAG]Datos de animaciones, mallas, texturas, materiales (multiples, con llamadas al gestor de recursos) | 2019-03-27 → 2019-03-27 09:00 | 2019-03-27 → 2019-03-27 19:00 | constraint start no earlier than 2019-03-27 → start no earlier than 2019-03-27 09:00; baseline start 2019-03-27 → 2019-03-27 09:00; baseline finish 2019-03-27 → 2019-03-27 19:00 |
| 272 | [TAG]Dibujado de texturas (preparar las texturas y cargarlas en OpenGL o WebGL) | 2019-03-27 → 2019-03-27 09:00 | 2019-03-27 → 2019-03-27 19:00 | constraint start no earlier than 2019-03-27 → start no earlier than 2019-03-27 09:00; baseline start 2019-03-27 → 2019-03-27 09:00; baseline finish 2019-03-27 → 2019-03-27 19:00 |
| 273 | [TAG]Shader básico (Sombreado de Phong, reflexión de Phong) con materiales y texturas | 2019-03-27 → 2019-03-27 09:00 | 2019-03-27 → 2019-03-27 19:00 | constraint start no earlier than 2019-03-27 → start no earlier than 2019-03-27 09:00; baseline start 2019-03-27 → 2019-03-27 09:00; baseline finish 2019-03-27 → 2019-03-27 19:00 |
| 274 | [TAG]Shader Cartoon | 2019-03-27 → 2019-03-27 09:00 | 2019-03-27 → 2019-03-27 19:00 | constraint start no earlier than 2019-03-27 → start no earlier than 2019-03-27 09:00; baseline start 2019-03-27 → 2019-03-27 09:00; baseline finish 2019-03-27 → 2019-03-27 19:00 |
| 275 | [TAG]Bounding boxes (incluye retocar nodos, entidades y recursos malla) | 2019-03-27 → 2019-03-27 09:00 | 2019-03-27 → 2019-03-27 19:00 | constraint start no earlier than 2019-03-27 → start no earlier than 2019-03-27 09:00; baseline start 2019-03-27 → 2019-03-27 09:00; baseline finish 2019-03-27 → 2019-03-27 19:00 |
| 276 | [TAG]Backface culling | 2019-03-27 → 2019-03-27 09:00 | 2019-03-27 → 2019-03-27 19:00 | constraint start no earlier than 2019-03-27 → start no earlier than 2019-03-27 09:00; baseline start 2019-03-27 → 2019-03-27 09:00; baseline finish 2019-03-27 → 2019-03-27 19:00 |
| 277 | [TAG]Frustum culling | 2019-03-27 → 2019-03-27 09:00 | 2019-03-27 → 2019-03-27 19:00 | constraint start no earlier than 2019-03-27 → start no earlier than 2019-03-27 09:00; baseline start 2019-03-27 → 2019-03-27 09:00; baseline finish 2019-03-27 → 2019-03-27 19:00 |
| 278 | [TAG]Sombras proyectadas | 2019-03-27 → 2019-03-27 09:00 | 2019-03-27 → 2019-03-27 19:00 | constraint start no earlier than 2019-03-27 → start no earlier than 2019-03-27 09:00; baseline start 2019-03-27 → 2019-03-27 09:00; baseline finish 2019-03-27 → 2019-03-27 19:00 |
| 279 | [TAG]Sistema de partículas (sólo la incorporación en el motor) | 2019-03-27 → 2019-03-27 09:00 | 2019-03-27 → 2019-03-27 19:00 | constraint start no earlier than 2019-03-27 → start no earlier than 2019-03-27 09:00; baseline start 2019-03-27 → 2019-03-27 09:00; baseline finish 2019-03-27 → 2019-03-27 19:00 |
| 280 | [PD]Créditos | 2019-03-27 → 2019-03-27 09:00 | 2019-03-27 → 2019-03-27 19:00 | constraint start no earlier than 2019-03-27 → start no earlier than 2019-03-27 09:00; baseline start 2019-03-27 → 2019-03-27 09:00; baseline finish 2019-03-27 → 2019-03-27 19:00 |
| 281 | [PD]Vídeo final juego / explicación parte del proyecto | 2019-03-27 → 2019-03-27 09:00 | 2019-03-27 → 2019-03-27 19:00 | constraint start no earlier than 2019-03-27 → start no earlier than 2019-03-27 09:00; baseline start 2019-03-27 → 2019-03-27 09:00; baseline finish 2019-03-27 → 2019-03-27 19:00 |
| 282 | [TDS]Integración de sonido y música en el juego | 2019-03-27 → 2019-03-27 09:00 | 2019-03-27 → 2019-03-27 19:00 | constraint start no earlier than 2019-03-27 → start no earlier than 2019-03-27 09:00; baseline start 2019-03-27 → 2019-03-27 09:00; baseline finish 2019-03-27 → 2019-03-27 19:00 |
| 283 | [TDS]Post producción (mezcla y masterización in-game) | 2019-03-27 → 2019-03-27 09:00 | 2019-03-27 → 2019-03-27 19:00 | constraint start no earlier than 2019-03-27 → start no earlier than 2019-03-27 09:00; baseline start 2019-03-27 → 2019-03-27 09:00; baseline finish 2019-03-27 → 2019-03-27 19:00 |
| 284 | [TDS]Sonido generado proceduralmente in-game | 2019-03-27 → 2019-03-27 09:00 | 2019-03-27 → 2019-03-27 19:00 | constraint start no earlier than 2019-03-27 → start no earlier than 2019-03-27 09:00; baseline start 2019-03-27 → 2019-03-27 09:00; baseline finish 2019-03-27 → 2019-03-27 19:00 |

| ID | Task | Start | Finish | Other |
| --- | --- | --- | --- | --- |
| 285 | [RV]Rigging de los personajes | 2019-03-27 → 2019-03-27 09:00 | 2019-03-27 → 2019-03-27 19:00 | constraint start no earlier than 2019-03-27 → start no earlier than 2019-03-27 09:00; baseline start 2019-03-27 → 2019-03-27 09:00; baseline finish 2019-03-27 → 2019-03-27 19:00 |
| 286 | [RV]Captura de movimiento | 2019-03-27 → 2019-03-27 09:00 | 2019-03-27 → 2019-03-27 19:00 | constraint start no earlier than 2019-03-27 → start no earlier than 2019-03-27 09:00; baseline start 2019-03-27 → 2019-03-27 09:00; baseline finish 2019-03-27 → 2019-03-27 19:00 |
| 287 | [RV]Animación de los personajes | 2019-03-27 → 2019-03-27 09:00 | 2019-03-27 → 2019-03-27 19:00 | constraint start no earlier than 2019-03-27 → start no earlier than 2019-03-27 09:00; baseline start 2019-03-27 → 2019-03-27 09:00; baseline finish 2019-03-27 → 2019-03-27 19:00 |
| 288 | [RV]Texturizado del entorno y elementos | 2019-03-27 → 2019-03-27 09:00 | 2019-03-27 → 2019-03-27 19:00 | constraint start no earlier than 2019-03-27 → start no earlier than 2019-03-27 09:00; baseline start 2019-03-27 → 2019-03-27 09:00; baseline finish 2019-03-27 → 2019-03-27 19:00 |
| 289 | Version terminada | 2019-05-06 → 2019-05-06 19:00 | 2019-05-06 → 2019-05-06 19:00 | constraint start no earlier than 2018-10-24 → start no earlier than 2018-10-24 09:00; baseline start 2019-05-06 → 2019-05-06 19:00; baseline finish 2019-05-06 → 2019-05-06 19:00 |

## Version 14 (data date 2019-01-16, saved 2019-01-16)

Note of the change: Planificacion iteracion 8

Last finish stays 2019-05-06.

Added:

| ID | Task | Duration | Start | Finish | Constraint | Resources |
| --- | --- | --- | --- | --- | --- | --- |
| 166 | [PM]Detallar plan iteraciones del mes de Enero. Asignar recursos a las tareas en Project | 9.6h | 2019-01-14 09:00 | 2019-01-15 10:36 | start no earlier than 2019-01-14 09:00 | Jose Ramon Barea Cecilia [20%] |
| 167 | [PM]Detallar plan iteraciones del mes de Enero. Creación Subtareas y precedencias en Project | 9.6h | 2019-01-14 09:00 | 2019-01-15 10:36 | start no earlier than 2019-01-14 09:00 | Jose Ramon Barea Cecilia [20%] |
| 168 | [PM]Revisar especificación proyecto | 28h | 2019-01-14 09:00 | 2019-01-17 13:00 | start no earlier than 2019-01-14 09:00 | María Sánchez Marqués [8.6%] |
| 169 | [PM]Reestimar proyecto | 28h | 2019-01-14 09:00 | 2019-01-17 13:00 | start no earlier than 2019-01-14 09:00 | María Sánchez Marqués [8.6%] |
| 173 | [V1]Sistema de logros y puntuaciones web | 40h | 2019-01-14 09:00 | 2019-01-18 19:00 | start no earlier than 2019-01-14 09:00 | Jose Vicente Anton Coy [20%] |
| 187 | [TDS]Realizar sonidos para el juego 8/7 | 15h | 2019-01-17 09:00 | 2019-01-18 18:00 | start no earlier than 2019-01-17 09:00 | David Ramón Sevilla [15%]; María Sánchez Marqués [15%]; Jose Ramon Barea Cecilia [15%] |

Changed:

| ID | Task | Start | Finish | Duration | Total float | Predecessors | Other |
| --- | --- | --- | --- | --- | --- | --- | --- |
| 33 | **[V1]Sistema de toma de decisión con Behaviour Trees (1/2)** |  |  |  |  | 15 → none |  |
| 143 | **Hito 2** |  | 2019-01-25 19:00 → 2019-01-30 13:00 (+5d) | 25d? → 27.5d | 0d → -2.5d |  |  |
| 165 | **Iteracion 8** |  | 2019-01-25 19:00 → 2019-01-30 13:00 (+5d) | 15d → 17.5d | 0d → -2.5d |  |  |
| 170 | [PM]Registrar tiempos y % de realización de tareas en Project | 2019-01-25 18:12 → 2019-01-14 09:00 (-11d) | 2019-01-25 19:00 → 2019-01-14 09:48 (-11d) |  | 0d → 9.9d |  | constraint finish no earlier than 2019-01-25 19:00 → start no earlier than 2019-01-14 09:00 |
| 171 | [V2]Diseño e implementación b.objetos (7/10) | 2019-01-07 09:00 → 2019-01-14 09:00 (+7d) | 2019-01-07 18:00 → 2019-01-14 18:00 (+7d) |  | 14.12d → 7.12d |  | constraint start no earlier than 2019-01-07 09:00 → start no earlier than 2019-01-14 09:00; resources David Ramón Sevilla [4%]; María Sánchez Marqués [4%]; Marines Ánton Castelló [4%]; Jose Ramon Barea Cecilia [4%]; Jose Vicente Anton Coy [4%]; Débora Galdeano González [4%] → David Ramón Sevilla [4%]; María Sánchez Marqués [4%]; Marines Ánton Castelló [30%]; Jose Ramon Barea Cecilia [4%]; Jose Vicente Anton Coy [4%]; Débora Galdeano González [15%] |
| 172 | [v2]Diseño e implementacion b.componentes 7 | 2019-01-07 09:00 → 2019-01-14 09:00 (+7d) | 2019-01-08 11:00 → 2019-01-15 11:00 (+7d) |  | 13.75d → 6.75d |  | constraint start no earlier than 2019-01-07 09:00 → start no earlier than 2019-01-14 09:00; resources Jose Ramon Barea Cecilia [4%]; David Ramón Sevilla [4%]; Jose Vicente Anton Coy [4%]; María Sánchez Marqués [4%]; Marines Ánton Castelló [4%]; Débora Galdeano González [4%] → Jose Ramon Barea Cecilia [4%]; David Ramón Sevilla [4%]; Jose Vicente Anton Coy [4%]; María Sánchez Marqués [4%]; Marines Ánton Castelló [30%]; Débora Galdeano González [15%] |
| 174 | [V2]Integración de librería para GUI | 2019-01-07 09:00 → 2019-01-14 09:00 (+7d) | 2019-01-07 17:00 → 2019-01-14 17:00 (+7d) |  | 14.25d → 7.25d |  | constraint start no earlier than 2019-01-07 09:00 → start no earlier than 2019-01-14 09:00; resources Marines Ánton Castelló [40%]; Débora Galdeano González [40%] → Marines Ánton Castelló [5%]; Débora Galdeano González [5%]; David Ramón Sevilla [5%]; Jose Vicente Anton Coy [5%]; Jose Ramon Barea Cecilia [10%] |
| 175 | [V2]Implementación de menús | 2019-01-11 09:00 → 2019-01-14 09:00 (+3d) | 2019-01-17 12:00 → 2019-01-18 12:00 (+1d) |  | 6.62d → 3.62d |  | constraint start no earlier than 2019-01-11 09:00 → start no earlier than 2019-01-14 09:00; resources Jose Ramon Barea Cecilia [40%] → Jose Vicente Anton Coy [5%]; Débora Galdeano González [5%]; Marines Ánton Castelló [5%]; David Ramón Sevilla [10%]; María Sánchez Marqués [10%] |
| 176 | [RV]Modelado de los personajes |  |  |  | 2.5d → -4.5d |  | resources Jose Ramon Barea Cecilia [40%]; María Sánchez Marqués [40%] → Débora Galdeano González [30%] |
| 177 | [V1]Sistema de depuración visual in-game de la IA |  |  |  |  |  | resources Jose Ramon Barea Cecilia [4%]; David Ramón Sevilla [4%]; Jose Vicente Anton Coy [4%]; María Sánchez Marqués [4%]; Marines Ánton Castelló [4%]; Débora Galdeano González [4%] → David Ramón Sevilla [4%]; Jose Vicente Anton Coy [4%]; Marines Ánton Castelló [4%]; Débora Galdeano González [4%] |
| 178 | [RV]Texturizado de los personajes | 2019-01-21 09:00 → 2019-01-23 15:00 (+2d) | 2019-01-25 19:00 → 2019-01-30 13:00 (+5d) |  | 0d → -4.5d | none → 176 | resources Débora Galdeano González [40%] → Débora Galdeano González [10%] |
| 179 | **[TDS]Realizar sonidos para el juego 7/7** |  |  |  |  |  | resources Débora Galdeano González [15%]; David Ramón Sevilla [15%]; Jose Ramon Barea Cecilia [15%]; María Sánchez Marqués [15%] → David Ramón Sevilla [15%]; Jose Ramon Barea Cecilia [15%]; María Sánchez Marqués [15%] |
| 188 | [PM]Comparar la planificación prevista y real en Project hito 2 | 2018-12-24 09:00 → 2019-01-22 09:00 (+29d) | 2018-12-24 19:00 → 2019-01-22 17:00 (+29d) | 1d? → 6h | 24d → 3.25d |  | constraint start no earlier than 2018-12-22 09:00 → start no earlier than 2019-01-22 09:00; resources none → Jose Ramon Barea Cecilia [20%] |
| 189 | [PM]Confeccionar Informes de iteración e informe resumen de Hito 2 | 2018-12-24 09:00 → 2019-01-22 09:00 (+29d) | 2018-12-24 19:00 → 2019-01-22 17:00 (+29d) | 1d? → 6h | 24d → 3.25d |  | constraint start no earlier than 2018-12-22 09:00 → start no earlier than 2019-01-22 09:00; resources none → Jose Ramon Barea Cecilia [5%]; María Sánchez Marqués [15%] |
| 190 | Version Beta del juego, que se pueda jugar | 2019-01-25 19:00 → 2019-01-30 13:00 (+5d) | 2019-01-25 19:00 → 2019-01-30 13:00 (+5d) |  | 71d → 68.5d |  |  |
| 192 | **Iteracion 9** |  | 2019-01-28 11:00 → 2019-02-05 13:00 (+8d) | 1.25d? → 7.5d? | 41.75d → 35.5d |  |  |
| 195 | [RV]Modelado del entorno y elementos | 2019-01-07 09:00 → 2019-01-25 09:00 (+18d) | 2019-01-11 19:00 → 2019-01-31 19:00 (+20d) |  | 10d → 38d |  |  |
| 196 | [PD]Making of juego/proyecto | 2019-01-16 09:00 → 2019-01-25 09:00 (+9d) | 2019-01-25 13:00 → 2019-02-05 13:00 (+11d) |  | 0.5d → 35.5d |  |  |

## Version 15 (data date 2019-01-16, saved 2019-01-23)

Note of the change: Update ABP Planificacion.mpp

Last finish stays 2019-05-06.

Removed: 195 [RV]Modelado del entorno y elementos; 196 [PD]Making of juego/proyecto

Changed:

| ID | Task | Start | Finish | Duration | Complete | Total float | Other |
| --- | --- | --- | --- | --- | --- | --- | --- |
| 11 | **Hito 1** |  |  |  | 73% → 75% |  |  |
| 12 | **Iteracion 3** |  |  |  | 55% → 70% |  |  |
| 143 | **Hito 2** |  | 2019-01-30 13:00 → 2019-01-25 19:00 (-5d) | 27.5d → 25d |  | -2.5d → 0d | baseline start 2018-12-24 09:00 → 2018-12-21 18:12; baseline finish 2019-01-14 11:00 → 2019-01-17 13:00 |
| 165 | **Iteracion 8** |  | 2019-01-30 13:00 → 2019-01-25 19:00 (-5d) | 17.5d → 15d |  | -2.5d → 0d | baseline start 2019-01-11 09:00 → 2018-12-21 18:12; baseline finish 2019-01-14 11:00 → 2019-01-17 13:00 |
| 168 | [PM]Revisar especificación proyecto |  |  |  |  |  | baseline start none → 2019-01-14 09:00; baseline finish none → 2019-01-17 13:00 |
| 178 | [RV]Texturizado de los personajes |  | 2019-01-30 13:00 → 2019-01-25 19:00 (-5d) | 40h → 20h |  | -4.5d → 0d |  |
| 190 | Version Beta del juego, que se pueda jugar | 2019-01-30 13:00 → 2019-01-25 19:00 (-5d) | 2019-01-30 13:00 → 2019-01-25 19:00 (-5d) |  |  | 68.5d → 71d |  |
| 192 | **Iteracion 9** |  | 2019-02-05 13:00 → 2019-01-28 11:00 (-8d) | 7.5d? → 1.25d? |  | 35.5d → 41.75d |  |

## Version 16 (data date 2019-01-24, saved 2019-01-24)

Note of the change: Update ABP Planificacion.mpp

Last finish stays 2019-05-06. Complete tasks 102 → 113.

Removed: 148 [PM]Revisar especificación proyecto; 149 [PM]Reestimar proyecto

Changed:

| ID | Task | Start | Finish | Complete | Total float | Other |
| --- | --- | --- | --- | --- | --- | --- |
| 143 | **Hito 2** | 2018-12-24 09:00 A |  | 0% → 26% |  | baseline start 2018-12-21 18:12 → 2018-12-11 09:00 |
| 144 | **Navidad** | 2018-12-24 09:00 A |  | 0% → 61% |  | baseline start 2018-12-24 09:00 → 2018-12-11 09:00; baseline finish 2018-12-25 11:00 → 2019-01-04 17:00 |
| 145 | [PM]Detallar plan iteraciones del mes de Enero. Creación Subtareas y precedencias en Project | 2018-12-24 09:00 A |  | 0% → 50% |  |  |
| 146 | [PM]Detallar plan iteraciones del mes de Enero. Asignar recursos a las tareas en Project | 2018-12-28 09:00 A |  | 0% → 50% |  | baseline start 2018-12-24 09:00 → 2018-12-28 09:00; baseline finish 2018-12-24 19:00 → 2019-01-04 17:00 |
| 147 | [V2]Implementación del HUD | 2018-12-24 09:00 A | 2018-12-26 19:00 A | 0% → 100% | 22d → none |  |
| 148 | [v1]Gestión de recursos de IA con Level-of-Detail (LoD) | 2018-12-28 09:00 A |  | 0% → 50% | 15.9d → 16d |  |
| 149 | [v2]Power-ups y elementos adicionales | 2018-12-31 09:00 A |  | 0% → 50% |  |  |
| 150 | [V1]Sistema de distribución central de tiempo de proceso (Scheduling) | 2018-12-31 09:00 A |  | 0% → 50% |  |  |
| 151 | [V2]Diseño e implementación b.objetos (6/10) | 2018-12-24 09:00 A | 2018-12-24 18:00 A | 0% → 100% | 24.12d → none |  |
| 152 | [v2]Diseño e implementacion b.componentes 6 | 2018-12-24 09:00 A | 2018-12-25 11:00 A | 0% → 100% | 23.75d → none |  |
| 153 | [v2]Uso de sistema de depuración visual de las físicas | 2018-12-24 09:00 A |  | 0% → 50% |  |  |
| 154 | **[TDS]Realizar sonidos para el juego 6/7** | 2018-12-24 09:00 A | 2018-12-24 11:51 A | 0% → 100% | 24.64d → none |  |
| 155 | Síntesis | 2018-12-24 09:00 A | 2018-12-24 11:51 A | 0% → 100% | 24.64d → none |  |
| 156 | Grabaciones propias | 2018-12-24 09:00 A | 2018-12-24 11:51 A | 0% → 100% | 24.64d → none |  |
| 157 | Sonidos externos | 2018-12-24 09:00 A | 2018-12-24 11:51 A | 0% → 100% | 24.64d → none |  |
| 158 | Música | 2018-12-24 09:00 A | 2018-12-24 11:51 A | 0% → 100% | 24.64d → none |  |
| 159 | Cue Sheet | 2018-12-24 09:00 A | 2018-12-24 10:25 A | 0% → 100% | 24.82d → none |  |
| 160 | Hoja de metadatos | 2018-12-24 09:00 A | 2018-12-24 10:25 A | 0% → 100% | 24.82d → none |  |
| 161 | Integración del motor de audio en el juego con prueba de concepto | 2018-12-24 09:00 A | 2018-12-24 11:51 A | 0% → 100% | 24.64d → none |  |
| 162 | [PM]Registrar tiempos y % de realización de tareas en Project | 2019-01-04 18:12 A | 2019-01-06 19:00 A | 0% → 100% | 15d → none |  |

## Version 17 (data date 2019-01-25, saved 2019-01-25)

Note of the change: Update ABP Planificacion.mpp

Last finish stays 2019-05-06. Complete tasks 113 → 132.

Added:

| ID | Task | Duration | Start | Finish | Resources |
| --- | --- | --- | --- | --- | --- |
| 169 | [general] Mejoras y optimizacion del codigo | 253h | 2019-01-07 09:00 A | 2019-02-19 16:00 A | Jose Ramon Barea Cecilia [1%]; Jose Vicente Anton Coy [10%]; María Sánchez Marqués [2%]; Marines Ánton Castelló [20%]; David Ramón Sevilla [16%]; Débora Galdeano González [51%] |
| 175 | [v2]Power-ups y elementos adicionales | 28h | 2019-01-07 09:00 A | 2019-01-10 13:00 | Débora Galdeano González [20%] |
| 185 | [v2]Uso de sistema de depuración visual de las físicas | 10h | 2019-01-14 09:00 A | 2019-01-15 11:00 A | Débora Galdeano González [10%] |
| 187 | [v2]Retocar mecanicas de Accion | 20h | 2019-01-07 09:00 A | 2019-01-09 13:00 A | María Sánchez Marqués [20%] |
| 188 | [v2]Retocar Control del player: movimiento y colisiones sin motor de fisicas | 4h | 2019-01-08 09:00 A | 2019-01-08 13:00 A | Jose Ramon Barea Cecilia [20%] |
| 189 | [v2]Retocar mecanicas de puzzle 3/2 | 4.15h | 2019-01-08 09:00 A | 2019-01-08 15:09 A | Marines Ánton Castelló [10%] |
| 190 | [TAG] Aprendizaje OpenGL | 35h | 2019-01-14 09:00 A | 2019-01-18 12:00 A | David Ramón Sevilla |

Changed:

| ID | Task | Start | Finish | Duration | Complete | Total float | Other |
| --- | --- | --- | --- | --- | --- | --- | --- |
| 143 | **Hito 2** |  | 2019-01-25 19:00 → 2019-02-19 16:00 (+25d) | 25d → 41.62d | 26% → 78% |  | baseline start 2018-12-11 09:00 → 2018-12-21 18:12 |
| 144 | **Navidad** |  |  |  |  |  | baseline start 2018-12-11 09:00 → 2018-12-24 09:00; baseline finish 2019-01-04 17:00 → 2019-01-06 19:00 |
| 163 | **Iteracion 8** | 2019-01-07 09:00 A | 2019-01-25 19:00 → 2019-02-19 16:00 (+25d) | 15d → 31.62d | 0% → 84% |  |  |
| 164 | [PM]Detallar plan iteraciones del mes de Enero. Asignar recursos a las tareas en Project | 2019-01-14 09:00 A |  |  | 0% → 63% |  |  |
| 165 | [PM]Detallar plan iteraciones del mes de Enero. Creación Subtareas y precedencias en Project | 2019-01-14 09:00 A |  |  | 0% → 63% |  |  |
| 166 | [PM]Revisar especificación proyecto | 2019-01-14 09:00 A |  |  | 0% → 46% |  |  |
| 167 | [PM]Reestimar proyecto | 2019-01-14 09:00 A |  |  | 0% → 32% |  |  |
| 168 | [PM]Registrar tiempos y % de realización de tareas en Project | 2019-01-14 09:00 A | 2019-01-14 09:48 A |  | 0% → 100% | 9.9d → none |  |
| 170 | [V2]Diseño e implementación b.objetos (7/10) | 2019-01-14 09:00 A | 2019-01-14 18:00 → 2019-01-25 12:00 A (+11d) | 7h → 75h | 0% → 100% | 9.12d → none | resources David Ramón Sevilla [4%]; María Sánchez Marqués [4%]; Marines Ánton Castelló [30%]; Jose Ramon Barea Cecilia [4%]; Jose Vicente Anton Coy [4%]; Débora Galdeano González [15%] → David Ramón Sevilla [16%]; María Sánchez Marqués [2%]; Marines Ánton Castelló [20%]; Jose Ramon Barea Cecilia [1%]; Jose Vicente Anton Coy [10%]; Débora Galdeano González [51%] |
| 171 | [v2]Diseño e implementacion b.componentes 7 | 2019-01-14 09:00 A | 2019-01-15 11:00 → 2019-01-30 13:00 A (+15d) | 10h → 100h | 0% → 100% | 8.75d → none | resources Jose Ramon Barea Cecilia [4%]; David Ramón Sevilla [4%]; Jose Vicente Anton Coy [4%]; María Sánchez Marqués [4%]; Marines Ánton Castelló [30%]; Débora Galdeano González [15%] → Jose Ramon Barea Cecilia [1%]; David Ramón Sevilla [16%]; Jose Vicente Anton Coy [11%]; María Sánchez Marqués [2%]; Marines Ánton Castelló [21%]; Débora Galdeano González [57%] |
| 172 | [V1]Sistema de logros y puntuaciones web | 2019-01-14 09:00 A | 2019-01-18 19:00 A |  | 0% → 100% | 5d → none |  |
| 173 | [V2]Integración de librería para GUI | 2019-01-14 09:00 A | 2019-01-14 17:00 A |  | 0% → 100% | 9.25d → none | resources Marines Ánton Castelló [5%]; Débora Galdeano González [5%]; David Ramón Sevilla [5%]; Jose Vicente Anton Coy [5%]; Jose Ramon Barea Cecilia [10%] → Jose Vicente Anton Coy [5%] |
| 174 | [RV]Modelado de los personajes | 2019-01-14 09:00 A |  |  | 0% → 10% | 0d → 0.12d |  |
| 176 | [RV]Texturizado de los personajes | 2019-01-23 15:00 A |  |  | 0% → 5% |  |  |
| 177 | **[TDS]Realizar sonidos para el juego 7/7** | 2019-01-07 09:00 A | 2019-01-07 11:51 A |  | 0% → 100% | 14.64d → none | resources David Ramón Sevilla [15%]; Jose Ramon Barea Cecilia [15%]; María Sánchez Marqués [15%] → David Ramón Sevilla [7%]; Jose Ramon Barea Cecilia [30%]; María Sánchez Marqués [8%] |
| 178 | Síntesis | 2019-01-07 09:00 A | 2019-01-07 11:51 A |  | 0% → 100% | 14.64d → none |  |
| 179 | Grabaciones propias | 2019-01-07 09:00 A | 2019-01-07 11:51 A |  | 0% → 100% | 14.64d → none |  |
| 180 | Sonidos externos | 2019-01-07 09:00 A | 2019-01-07 11:51 A |  | 0% → 100% | 14.64d → none |  |
| 181 | Música | 2019-01-07 09:00 A | 2019-01-07 11:51 A |  | 0% → 100% | 14.64d → none |  |
| 182 | Cue Sheet | 2019-01-07 09:00 A | 2019-01-07 10:25 A |  | 0% → 100% | 14.82d → none |  |
| 183 | Hoja de metadatos | 2019-01-07 09:00 A | 2019-01-07 10:25 A |  | 0% → 100% | 14.82d → none |  |
| 184 | Integración del motor de audio en el juego con prueba de concepto | 2019-01-07 09:00 A | 2019-01-07 11:51 A |  | 0% → 100% | 14.64d → none |  |
| 186 | [TDS]Realizar sonidos para el juego 8/7 | 2019-01-17 09:00 A | 2019-01-18 18:00 → 2019-01-24 17:00 A (+6d) | 15h → 46h | 0% → 100% | 5.12d → none | resources David Ramón Sevilla [15%]; María Sánchez Marqués [15%]; Jose Ramon Barea Cecilia [15%] → David Ramón Sevilla [7%]; María Sánchez Marqués [8%]; Jose Ramon Barea Cecilia [30%] |
| 191 | [PM]Comparar la planificación prevista y real en Project hito 2 | 2019-01-22 09:00 A | 2019-01-22 17:00 → 2019-01-22 13:00 | 6h → 4h | 0% → 75% | 3.25d → 3.5d |  |
| 192 | [PM]Confeccionar Informes de iteración e informe resumen de Hito 2 | 2019-01-22 09:00 A | 2019-01-22 17:00 → 2019-01-23 11:00 (+1d) | 6h → 10h | 0% → 50% | 3.25d → 2.75d | resources Jose Ramon Barea Cecilia [5%]; María Sánchez Marqués [15%] → Jose Ramon Barea Cecilia; María Sánchez Marqués [15%] |
| 193 | Version Beta del juego, que se pueda jugar | 2019-01-25 19:00 → 2019-02-19 16:00 (+25d) | 2019-01-25 19:00 → 2019-02-19 16:00 (+25d) |  |  | 71d → 54.38d |  |
| 195 | **Iteracion 9** |  | 2019-01-28 11:00 → 2019-02-04 11:00 (+7d) | 1.25d? → 6.25d? |  | 41.75d → 36.75d |  |
| 198 | [V1]Sistema de depuración visual in-game de la IA | 2019-01-17 09:00 → 2019-01-25 09:00 (+8d) | 2019-01-25 11:00 → 2019-02-04 11:00 (+10d) |  |  | 0.75d → 36.75d |  |
| 199 | [V2]Implementación de menús | 2019-01-14 09:00 → 2019-01-25 09:00 (+11d) | 2019-01-18 12:00 → 2019-01-31 12:00 (+13d) |  |  | 5.62d → 38.62d |  |

## Version 18 (data date 2019-01-28, saved 2019-01-25)

Note of the change: Update ABP Planificacion.mpp

Last finish stays 2019-05-06. Complete tasks 132 → 131.

Added:

| ID | Task | Duration | Start | Finish | Constraint | Resources |
| --- | --- | --- | --- | --- | --- | --- |
| 196 | [PM]Detallar plan iteraciones del mes de Febrero-Marzo. Creación Subtareas y precedencias en Project | 9.6h | 2019-01-25 09:00 | 2019-01-28 10:36 |  | Jose Ramon Barea Cecilia [20%] |
| 197 | [PM]Detallar plan iteraciones del mes de Febrero-Marzo Asignar recursos a las tareas en Project | 9.6d | 2019-01-25 09:00 | 2019-02-07 15:48 |  | Jose Ramon Barea Cecilia [20%] |
| 198 | [PM]Registrar tiempos y % de realización de tareas en Project | 48min | 2019-01-25 09:00 | 2019-01-25 09:48 |  | Todos [4%] |
| 199 | [general] Mejoras y optimizacion del codigo | 10h | 2019-01-28 09:00 | 2019-01-29 11:00 | start no earlier than 2019-01-28 09:00 | David Ramón Sevilla [4%]; Débora Galdeano González [4%]; Jose Ramon Barea Cecilia [4%]; Jose Vicente Anton Coy [4%]; María Sánchez Marqués [4%]; Marines Ánton Castelló [4%] |
| 203 | [TDS]Resto de la biblioteca (máx. 1/3), cuesheet y metadatos finales | 4h | 2019-01-25 09:00 | 2019-01-25 13:00 |  | Débora Galdeano González [10%]; David Ramón Sevilla [10%]; Jose Ramon Barea Cecilia [10%]; María Sánchez Marqués [20%] |
| 204 | [TAG]Aprendizaje OpenGL | 30h | 2019-01-28 09:00 | 2019-01-31 17:00 | start no earlier than 2019-01-28 09:00 | Jose Vicente Anton Coy [20%]; Jose Ramon Barea Cecilia [10%] |
| 205 | [PD]Making of juego/proyecto | 40h | 2019-01-25 09:00 | 2019-01-31 19:00 |  | David Ramón Sevilla [20%]; Marines Ánton Castelló [10%]; María Sánchez Marqués [10%] |
| 206 | [V1]Sistema de depuración visual in-game de la IA | 50h | 2019-01-28 09:00 | 2019-02-05 11:00 | start no earlier than 2019-01-28 09:00 | Marines Ánton Castelló [10%]; Jose Vicente Anton Coy [10%]; David Ramón Sevilla [10%] |
| 207 | [RV]Modelado de los personajes | 120h | 2019-01-25 09:00 | 2019-02-14 19:00 |  | Débora Galdeano González [10%]; María Sánchez Marqués [10%]; Marines Ánton Castelló [10%] |
| 208 | [v2]Power-ups y elementos adicionales | 28h | 2019-01-28 09:00 | 2019-01-31 13:00 | start no earlier than 2019-01-28 09:00 | Débora Galdeano González [10%]; David Ramón Sevilla [10%] |
| 211 | [PM]Confeccionar Informes de iteración e informe resumen de Hito 3 | 6h | 2019-02-04 09:00 | 2019-02-04 17:00 | start no earlier than 2019-02-04 09:00 | María Sánchez Marqués [10%]; Jose Ramon Barea Cecilia [5%] |

Changed:

| ID | Task | Start | Finish | Duration | Complete | Total float | Other |
| --- | --- | --- | --- | --- | --- | --- | --- |
| 169 | [general] Mejoras y optimizacion del codigo |  |  |  |  |  | resources Jose Ramon Barea Cecilia [1%]; Jose Vicente Anton Coy [10%]; María Sánchez Marqués [2%]; Marines Ánton Castelló [20%]; David Ramón Sevilla [16%]; Débora Galdeano González [51%] → Jose Ramon Barea Cecilia [1%]; Jose Vicente Anton Coy [8%]; María Sánchez Marqués [2%]; Marines Ánton Castelló [18%]; David Ramón Sevilla [13%]; Débora Galdeano González [61%] |
| 175 | [v2]Power-ups y elementos adicionales |  | 2019-01-10 13:00 → 2019-01-10 17:00 | 28h → 30h | 60% → 56% | 11.5d → 11.25d | baseline start none → 2019-01-07 09:00; baseline finish none → 2019-01-10 17:00 |
| 186 | [TDS]Realizar sonidos para el juego 8/7 |  | 2019-01-24 17:00 A → 2019-01-25 12:00 (+1d) | 46h → 51h | 100% → 96% | none → 0.62d |  |
| 190 | [TAG] Aprendizaje OpenGL |  | 2019-01-18 12:00 A → 2019-01-18 18:00 A | 35h → 39h |  |  |  |
| 192 | [PM]Confeccionar Informes de iteración e informe resumen de Hito 2 |  | 2019-01-23 11:00 → 2019-01-22 17:00 (-1d) | 10h → 6h | 50% → 83% | 2.75d → 3.25d |  |
| 195 | **Iteracion 9** |  | 2019-02-04 11:00 → 2019-02-14 19:00 (+10d) | 6.25d? → 15d |  | 36.75d → 28d |  |
| 200 | [V2]Diseño e implementación b.objetos (8/10) |  |  |  |  |  | resources none → Todos [4%] |
| 201 | [v2]Diseño e implementacion b.componentes 8 |  |  |  |  |  | resources none → Todos [4%] |
| 210 | [PM]Comparar la planificación prevista y real en Project hito 3 | 2019-01-25 09:00 → 2019-02-04 09:00 (+10d) | 2019-01-25 19:00 → 2019-02-04 17:00 (+10d) | 1d? → 6h |  | 42d → 36.25d | was named <Tarea nueva>; constraint none → start no earlier than 2019-02-04 09:00; resources none → Jose Ramon Barea Cecilia [20%] |

## Version 19 (data date 2019-01-29, saved 2019-01-29)

Note of the change: Update ABP Planificacion.mpp

Last finish stays 2019-05-06. Complete tasks 131 → 140.

Changed:

| ID | Task | Start | Finish | Duration | Complete | Total float | Other |
| --- | --- | --- | --- | --- | --- | --- | --- |
| 14 | [v1] Documento de diseño de toma de decision: espacio y metodos |  |  |  |  |  | baseline start 2018-10-19 09:00 → none; baseline finish 2018-10-24 19:00 → none |
| 143 | **Hito 2** |  | 2019-02-19 16:00 → 2019-01-25 19:00 (-25d) | 41.62d → 25d | 78% → 70% |  | baseline start 2018-12-21 18:12 → 2018-12-24 09:00; baseline finish 2019-01-17 13:00 → 2019-01-25 19:00 |
| 145 | [PM]Detallar plan iteraciones del mes de Enero. Creación Subtareas y precedencias en Project |  |  |  |  |  | baseline finish 2018-12-24 19:00 → 2018-12-31 17:00 |
| 147 | [V2]Implementación del HUD |  |  |  |  |  | baseline finish 2018-12-24 19:00 → 2018-12-26 19:00 |
| 148 | [v1]Gestión de recursos de IA con Level-of-Detail (LoD) |  |  |  |  |  | baseline start 2018-12-13 09:00 → 2018-12-28 09:00; baseline finish 2018-12-19 19:00 → 2019-01-03 19:00 |
| 149 | [v2]Power-ups y elementos adicionales |  |  |  |  |  | baseline start 2018-12-13 09:00 → 2018-12-31 09:00; baseline finish 2018-12-18 13:00 → 2019-01-03 13:00 |
| 150 | [V1]Sistema de distribución central de tiempo de proceso (Scheduling) |  |  |  |  |  | baseline start 2018-12-17 09:00 → 2018-12-31 09:00; baseline finish 2018-12-21 17:00 → 2019-01-04 17:00 |
| 153 | [v2]Uso de sistema de depuración visual de las físicas |  |  |  |  |  | baseline start 2018-12-11 09:00 → 2018-12-24 09:00; baseline finish 2018-12-12 11:00 → 2018-12-25 11:00 |
| 162 | [PM]Registrar tiempos y % de realización de tareas en Project |  |  |  |  |  | baseline start 2018-12-21 18:12 → 2019-01-04 18:12; baseline finish 2018-12-21 19:00 → 2019-01-06 19:00 |
| 163 | **Iteracion 8** |  | 2019-02-19 16:00 → 2019-01-25 19:00 (-25d) | 31.62d → 15d | 84% → 76% |  | baseline start 2018-12-21 18:12 → 2019-01-07 09:00; baseline finish 2019-01-17 13:00 → 2019-01-25 19:00 |
| 164 | [PM]Detallar plan iteraciones del mes de Enero. Asignar recursos a las tareas en Project |  |  |  |  |  | baseline start none → 2019-01-14 09:00; baseline finish none → 2019-01-15 10:36 |
| 165 | [PM]Detallar plan iteraciones del mes de Enero. Creación Subtareas y precedencias en Project |  |  |  |  |  | baseline start none → 2019-01-14 09:00; baseline finish none → 2019-01-15 10:36 |
| 166 | [PM]Revisar especificación proyecto |  | 2019-01-17 13:00 → 2019-01-16 12:00 (-1d) | 28h → 19h | 46% → 68% | 6.5d → 7.62d | baseline finish 2019-01-17 13:00 → 2019-01-16 12:00 |
| 167 | [PM]Reestimar proyecto |  | 2019-01-17 13:00 → 2019-01-16 12:00 (-1d) | 28h → 19h | 32% → 47% | 6.5d → 7.62d | baseline start none → 2019-01-14 09:00; baseline finish none → 2019-01-16 12:00 |
| 168 | [PM]Registrar tiempos y % de realización de tareas en Project |  |  |  |  |  | baseline start 2018-12-21 18:12 → 2019-01-14 09:00; baseline finish 2018-12-21 19:00 → 2019-01-14 09:48 |
| 169 | [general] Mejoras y optimizacion del codigo |  | 2019-02-19 16:00 A → 2019-01-21 11:00 A (-29d) | 253h → 82h |  |  | baseline start none → 2019-01-07 09:00; baseline finish none → 2019-01-21 11:00 |
| 170 | [V2]Diseño e implementación b.objetos (7/10) |  | 2019-01-25 12:00 A → 2019-01-14 18:00 A (-11d) | 75h → 7h |  |  | baseline start 2019-01-11 09:00 → 2019-01-14 09:00; baseline finish 2019-01-11 18:00 → 2019-01-14 18:00 |
| 171 | [v2]Diseño e implementacion b.componentes 7 |  | 2019-01-30 13:00 A → 2019-01-15 11:00 A (-15d) | 100h → 10h |  |  | baseline start 2019-01-11 09:00 → 2019-01-14 09:00; baseline finish 2019-01-14 11:00 → 2019-01-15 11:00 |
| 172 | [V1]Sistema de logros y puntuaciones web |  |  |  |  |  | baseline start none → 2019-01-14 09:00; baseline finish none → 2019-01-18 19:00 |
| 173 | [V2]Integración de librería para GUI |  |  |  |  |  | baseline start 2018-12-24 09:00 → 2019-01-14 09:00; baseline finish 2018-12-24 19:00 → 2019-01-14 17:00 |
| 174 | [RV]Modelado de los personajes |  |  |  |  |  | baseline start 2018-12-24 09:00 → 2019-01-14 09:00; baseline finish 2018-12-24 19:00 → 2019-01-23 13:00 |
| 176 | [RV]Texturizado de los personajes |  |  |  |  |  | baseline start 2018-12-24 09:00 → 2019-01-23 15:00; baseline finish 2018-12-24 19:00 → 2019-01-25 19:00 |
| 177 | **[TDS]Realizar sonidos para el juego 7/7** |  |  |  |  |  | baseline start 2019-01-11 09:00 → 2019-01-07 09:00; baseline finish 2019-01-11 11:51 → 2019-01-07 11:51 |
| 178 | Síntesis |  |  |  |  |  | baseline start 2019-01-11 09:00 → 2019-01-07 09:00; baseline finish 2019-01-11 11:51 → 2019-01-07 11:51 |
| 179 | Grabaciones propias |  |  |  |  |  | baseline start 2019-01-11 09:00 → 2019-01-07 09:00; baseline finish 2019-01-11 11:51 → 2019-01-07 11:51 |
| 180 | Sonidos externos |  |  |  |  |  | baseline start 2019-01-11 09:00 → 2019-01-07 09:00; baseline finish 2019-01-11 11:51 → 2019-01-07 11:51 |
| 181 | Música |  |  |  |  |  | baseline start 2019-01-11 09:00 → 2019-01-07 09:00; baseline finish 2019-01-11 11:51 → 2019-01-07 11:51 |
| 182 | Cue Sheet |  |  |  |  |  | baseline start 2019-01-11 09:00 → 2019-01-07 09:00; baseline finish 2019-01-11 10:25 → 2019-01-07 10:25 |
| 183 | Hoja de metadatos |  |  |  |  |  | baseline start 2019-01-11 09:00 → 2019-01-07 09:00; baseline finish 2019-01-11 10:25 → 2019-01-07 10:25 |
| 184 | Integración del motor de audio en el juego con prueba de concepto |  |  |  |  |  | baseline start 2019-01-11 09:00 → 2019-01-07 09:00; baseline finish 2019-01-11 11:51 → 2019-01-07 11:51 |
| 185 | [v2]Uso de sistema de depuración visual de las físicas |  |  |  |  |  | baseline start none → 2019-01-14 09:00; baseline finish none → 2019-01-15 11:00 |
| 186 | [TDS]Realizar sonidos para el juego 8/7 |  |  |  |  |  | baseline start none → 2019-01-17 09:00; baseline finish none → 2019-01-25 12:00 |
| 187 | [v2]Retocar mecanicas de Accion |  |  |  |  |  | baseline start none → 2019-01-07 09:00; baseline finish none → 2019-01-09 13:00 |
| 188 | [v2]Retocar Control del player: movimiento y colisiones sin motor de fisicas |  |  |  |  |  | baseline start none → 2019-01-08 09:00; baseline finish none → 2019-01-08 13:00 |
| 189 | [v2]Retocar mecanicas de puzzle 3/2 |  |  |  |  |  | baseline start none → 2019-01-08 09:00; baseline finish none → 2019-01-08 15:09 |
| 190 | [TAG] Aprendizaje OpenGL |  |  |  |  |  | baseline start none → 2019-01-14 09:00; baseline finish none → 2019-01-18 18:00 |
| 191 | [PM]Comparar la planificación prevista y real en Project hito 2 |  |  |  |  |  | baseline start 2018-12-24 09:00 → 2019-01-22 09:00; baseline finish 2018-12-24 19:00 → 2019-01-22 13:00 |
| 192 | [PM]Confeccionar Informes de iteración e informe resumen de Hito 2 |  |  |  |  |  | baseline start 2018-12-24 09:00 → 2019-01-22 09:00; baseline finish 2018-12-24 19:00 → 2019-01-22 17:00 |
| 193 | Version Beta del juego, que se pueda jugar | 2019-02-19 16:00 → 2019-01-25 19:00 (-25d) | 2019-02-19 16:00 → 2019-01-25 19:00 (-25d) |  |  | 54.38d → 71d | baseline start 2019-01-14 11:00 → 2019-01-25 19:00; baseline finish 2019-01-14 11:00 → 2019-01-25 19:00 |
| 194 | **Hito 3** | 2019-01-24 09:00 A |  |  | 0% → 22% |  |  |
| 195 | **Iteracion 9** | 2019-01-25 09:00 A |  |  | 0% → 44% |  | baseline finish 2019-01-28 11:00 → 2019-02-14 19:00 |
| 196 | [PM]Detallar plan iteraciones del mes de Febrero-Marzo. Creación Subtareas y precedencias en Project | 2019-01-25 09:00 A | 2019-01-28 10:36 A |  | 0% → 100% | 41.8d → none | baseline start none → 2019-01-25 09:00; baseline finish none → 2019-01-28 10:36 |
| 197 | [PM]Detallar plan iteraciones del mes de Febrero-Marzo Asignar recursos a las tareas en Project | 2019-01-25 09:00 A | 2019-02-07 15:48 A |  | 0% → 100% | 33.4d → none | baseline start none → 2019-01-25 09:00; baseline finish none → 2019-02-07 15:48 |
| 198 | [PM]Registrar tiempos y % de realización de tareas en Project | 2019-01-25 09:00 A | 2019-01-25 09:48 A |  | 0% → 100% | 42.9d → none | baseline start none → 2019-01-25 09:00; baseline finish none → 2019-01-25 09:48 |
| 199 | [general] Mejoras y optimizacion del codigo | 2019-01-28 09:00 A | 2019-01-29 11:00 A |  | 0% → 100% | 40.75d → none | baseline start none → 2019-01-28 09:00; baseline finish none → 2019-01-29 11:00 |
| 200 | [V2]Diseño e implementación b.objetos (8/10) | 2019-01-25 09:00 A | 2019-01-25 18:00 A |  | 0% → 100% | 42.12d → none |  |
| 201 | [v2]Diseño e implementacion b.componentes 8 | 2019-01-25 09:00 A | 2019-01-28 11:00 A |  | 0% → 100% | 41.75d → none |  |
| 202 | [V1]Sistema de depuración visual in-game de la IA |  |  |  |  |  | baseline start 2018-12-24 09:00 → 2019-01-25 09:00; baseline finish 2018-12-24 19:00 → 2019-02-04 11:00 |
| 203 | [TDS]Resto de la biblioteca (máx. 1/3), cuesheet y metadatos finales | 2019-01-25 09:00 A | 2019-01-25 13:00 A |  | 0% → 100% | 42.5d → none | resources Débora Galdeano González [10%]; David Ramón Sevilla [10%]; Jose Ramon Barea Cecilia [10%]; María Sánchez Marqués [20%] → David Ramón Sevilla [10%]; baseline start none → 2019-01-25 09:00; baseline finish none → 2019-01-25 13:00 |
| 204 | [TAG]Aprendizaje OpenGL | 2019-01-28 09:00 A |  |  | 0% → 75% |  | baseline start none → 2019-01-28 09:00; baseline finish none → 2019-01-31 17:00 |
| 205 | [PD]Making of juego/proyecto |  |  |  |  |  | baseline start none → 2019-01-25 09:00; baseline finish none → 2019-01-31 19:00 |
| 206 | [V1]Sistema de depuración visual in-game de la IA |  |  |  |  |  | baseline start none → 2019-01-28 09:00; baseline finish none → 2019-02-05 11:00 |
| 207 | [RV]Modelado de los personajes | 2019-01-25 09:00 A |  |  | 0% → 25% |  | baseline start none → 2019-01-25 09:00; baseline finish none → 2019-02-14 19:00 |
| 208 | [v2]Power-ups y elementos adicionales | 2019-01-28 09:00 A |  |  | 0% → 75% |  | baseline start none → 2019-01-28 09:00; baseline finish none → 2019-01-31 13:00 |
| 209 | [V2]Implementación de menús | 2019-01-25 09:00 A |  |  | 0% → 25% |  | resources Jose Vicente Anton Coy [5%]; Débora Galdeano González [5%]; Marines Ánton Castelló [5%]; David Ramón Sevilla [10%]; María Sánchez Marqués [10%] → Jose Vicente Anton Coy [5%]; David Ramón Sevilla [10%]; baseline start 2018-12-24 09:00 → 2019-01-25 09:00; baseline finish 2018-12-24 19:00 → 2019-01-31 12:00 |
| 210 | [PM]Comparar la planificación prevista y real en Project hito 3 | 2019-02-04 09:00 A | 2019-02-04 17:00 A |  | 0% → 100% | 36.25d → none | baseline start 2019-01-25 09:00 → 2019-02-04 09:00; baseline finish 2019-01-25 19:00 → 2019-02-04 17:00 |
| 211 | [PM]Confeccionar Informes de iteración e informe resumen de Hito 3 | 2019-02-04 09:00 A | 2019-02-04 17:00 A |  | 0% → 100% | 36.25d → none | baseline start none → 2019-02-04 09:00; baseline finish none → 2019-02-04 17:00 |
| 213 | [V2]Diseño e implementación b.objetos (9/10) |  |  |  |  |  | resources none → Jose Ramon Barea Cecilia [50%] |

## Version 20 (data date 2019-01-28, saved 2019-02-06)

Note of the change: Update ABP Planificacion.mpp

Last finish stays 2019-05-06.

Changed:

| ID | Task | Other |
| --- | --- | --- |
| 14 | [v1] Documento de diseño de toma de decision: espacio y metodos | baseline start none → 2018-10-19 09:00; baseline finish none → 2018-10-24 19:00 |
| 143 | **Hito 2** | baseline start 2018-12-24 09:00 → 2018-12-21 18:12; baseline finish 2019-01-25 19:00 → 2019-01-17 13:00 |
| 145 | [PM]Detallar plan iteraciones del mes de Enero. Creación Subtareas y precedencias en Project | baseline finish 2018-12-31 17:00 → 2018-12-24 19:00 |
| 147 | [V2]Implementación del HUD | baseline finish 2018-12-26 19:00 → 2018-12-24 19:00 |
| 148 | [v1]Gestión de recursos de IA con Level-of-Detail (LoD) | baseline start 2018-12-28 09:00 → 2018-12-13 09:00; baseline finish 2019-01-03 19:00 → 2018-12-19 19:00 |
| 149 | [v2]Power-ups y elementos adicionales | baseline start 2018-12-31 09:00 → 2018-12-13 09:00; baseline finish 2019-01-03 13:00 → 2018-12-18 13:00 |
| 150 | [V1]Sistema de distribución central de tiempo de proceso (Scheduling) | baseline start 2018-12-31 09:00 → 2018-12-17 09:00; baseline finish 2019-01-04 17:00 → 2018-12-21 17:00 |
| 153 | [v2]Uso de sistema de depuración visual de las físicas | baseline start 2018-12-24 09:00 → 2018-12-11 09:00; baseline finish 2018-12-25 11:00 → 2018-12-12 11:00 |
| 162 | [PM]Registrar tiempos y % de realización de tareas en Project | baseline start 2019-01-04 18:12 → 2018-12-21 18:12; baseline finish 2019-01-06 19:00 → 2018-12-21 19:00 |
| 163 | **Iteracion 8** | baseline start 2019-01-07 09:00 → 2018-12-21 18:12; baseline finish 2019-01-25 19:00 → 2019-01-17 13:00 |
| 164 | [PM]Detallar plan iteraciones del mes de Enero. Asignar recursos a las tareas en Project | baseline start 2019-01-14 09:00 → none; baseline finish 2019-01-15 10:36 → none |
| 165 | [PM]Detallar plan iteraciones del mes de Enero. Creación Subtareas y precedencias en Project | baseline start 2019-01-14 09:00 → none; baseline finish 2019-01-15 10:36 → none |
| 166 | [PM]Revisar especificación proyecto | baseline finish 2019-01-16 12:00 → 2019-01-17 13:00 |
| 167 | [PM]Reestimar proyecto | baseline start 2019-01-14 09:00 → none; baseline finish 2019-01-16 12:00 → none |
| 168 | [PM]Registrar tiempos y % de realización de tareas en Project | baseline start 2019-01-14 09:00 → 2018-12-21 18:12; baseline finish 2019-01-14 09:48 → 2018-12-21 19:00 |
| 169 | [general] Mejoras y optimizacion del codigo | baseline start 2019-01-07 09:00 → none; baseline finish 2019-01-21 11:00 → none |
| 170 | [V2]Diseño e implementación b.objetos (7/10) | baseline start 2019-01-14 09:00 → 2019-01-11 09:00; baseline finish 2019-01-14 18:00 → 2019-01-11 18:00 |
| 171 | [v2]Diseño e implementacion b.componentes 7 | baseline start 2019-01-14 09:00 → 2019-01-11 09:00; baseline finish 2019-01-15 11:00 → 2019-01-14 11:00 |
| 172 | [V1]Sistema de logros y puntuaciones web | baseline start 2019-01-14 09:00 → none; baseline finish 2019-01-18 19:00 → none |
| 173 | [V2]Integración de librería para GUI | baseline start 2019-01-14 09:00 → 2018-12-24 09:00; baseline finish 2019-01-14 17:00 → 2018-12-24 19:00 |
| 174 | [RV]Modelado de los personajes | baseline start 2019-01-14 09:00 → 2018-12-24 09:00; baseline finish 2019-01-23 13:00 → 2018-12-24 19:00 |
| 176 | [RV]Texturizado de los personajes | baseline start 2019-01-23 15:00 → 2018-12-24 09:00; baseline finish 2019-01-25 19:00 → 2018-12-24 19:00 |
| 177 | **[TDS]Realizar sonidos para el juego 7/7** | baseline start 2019-01-07 09:00 → 2019-01-11 09:00; baseline finish 2019-01-07 11:51 → 2019-01-11 11:51 |
| 178 | Síntesis | baseline start 2019-01-07 09:00 → 2019-01-11 09:00; baseline finish 2019-01-07 11:51 → 2019-01-11 11:51 |
| 179 | Grabaciones propias | baseline start 2019-01-07 09:00 → 2019-01-11 09:00; baseline finish 2019-01-07 11:51 → 2019-01-11 11:51 |
| 180 | Sonidos externos | baseline start 2019-01-07 09:00 → 2019-01-11 09:00; baseline finish 2019-01-07 11:51 → 2019-01-11 11:51 |
| 181 | Música | baseline start 2019-01-07 09:00 → 2019-01-11 09:00; baseline finish 2019-01-07 11:51 → 2019-01-11 11:51 |
| 182 | Cue Sheet | baseline start 2019-01-07 09:00 → 2019-01-11 09:00; baseline finish 2019-01-07 10:25 → 2019-01-11 10:25 |
| 183 | Hoja de metadatos | baseline start 2019-01-07 09:00 → 2019-01-11 09:00; baseline finish 2019-01-07 10:25 → 2019-01-11 10:25 |
| 184 | Integración del motor de audio en el juego con prueba de concepto | baseline start 2019-01-07 09:00 → 2019-01-11 09:00; baseline finish 2019-01-07 11:51 → 2019-01-11 11:51 |
| 185 | [v2]Uso de sistema de depuración visual de las físicas | baseline start 2019-01-14 09:00 → none; baseline finish 2019-01-15 11:00 → none |
| 186 | [TDS]Realizar sonidos para el juego 8/7 | baseline start 2019-01-17 09:00 → none; baseline finish 2019-01-25 12:00 → none |
| 187 | [v2]Retocar mecanicas de Accion | baseline start 2019-01-07 09:00 → none; baseline finish 2019-01-09 13:00 → none |
| 188 | [v2]Retocar Control del player: movimiento y colisiones sin motor de fisicas | baseline start 2019-01-08 09:00 → none; baseline finish 2019-01-08 13:00 → none |
| 189 | [v2]Retocar mecanicas de puzzle 3/2 | baseline start 2019-01-08 09:00 → none; baseline finish 2019-01-08 15:09 → none |
| 190 | [TAG] Aprendizaje OpenGL | baseline start 2019-01-14 09:00 → none; baseline finish 2019-01-18 18:00 → none |
| 191 | [PM]Comparar la planificación prevista y real en Project hito 2 | baseline start 2019-01-22 09:00 → 2018-12-24 09:00; baseline finish 2019-01-22 13:00 → 2018-12-24 19:00 |
| 192 | [PM]Confeccionar Informes de iteración e informe resumen de Hito 2 | baseline start 2019-01-22 09:00 → 2018-12-24 09:00; baseline finish 2019-01-22 17:00 → 2018-12-24 19:00 |
| 193 | Version Beta del juego, que se pueda jugar | baseline start 2019-01-25 19:00 → 2019-01-14 11:00; baseline finish 2019-01-25 19:00 → 2019-01-14 11:00 |
| 195 | **Iteracion 9** | baseline finish 2019-02-14 19:00 → 2019-01-28 11:00 |
| 196 | [PM]Detallar plan iteraciones del mes de Febrero-Marzo. Creación Subtareas y precedencias en Project | baseline start 2019-01-25 09:00 → none; baseline finish 2019-01-28 10:36 → none |
| 197 | [PM]Detallar plan iteraciones del mes de Febrero-Marzo Asignar recursos a las tareas en Project | baseline start 2019-01-25 09:00 → none; baseline finish 2019-02-07 15:48 → none |
| 198 | [PM]Registrar tiempos y % de realización de tareas en Project | baseline start 2019-01-25 09:00 → none; baseline finish 2019-01-25 09:48 → none |
| 199 | [general] Mejoras y optimizacion del codigo | baseline start 2019-01-28 09:00 → none; baseline finish 2019-01-29 11:00 → none |
| 202 | [V1]Sistema de depuración visual in-game de la IA | baseline start 2019-01-25 09:00 → 2018-12-24 09:00; baseline finish 2019-02-04 11:00 → 2018-12-24 19:00 |
| 203 | [TDS]Resto de la biblioteca (máx. 1/3), cuesheet y metadatos finales | baseline start 2019-01-25 09:00 → none; baseline finish 2019-01-25 13:00 → none |
| 204 | [TAG]Aprendizaje OpenGL | baseline start 2019-01-28 09:00 → none; baseline finish 2019-01-31 17:00 → none |
| 205 | [PD]Making of juego/proyecto | baseline start 2019-01-25 09:00 → none; baseline finish 2019-01-31 19:00 → none |
| 206 | [V1]Sistema de depuración visual in-game de la IA | baseline start 2019-01-28 09:00 → none; baseline finish 2019-02-05 11:00 → none |
| 207 | [RV]Modelado de los personajes | baseline start 2019-01-25 09:00 → none; baseline finish 2019-02-14 19:00 → none |
| 208 | [v2]Power-ups y elementos adicionales | baseline start 2019-01-28 09:00 → none; baseline finish 2019-01-31 13:00 → none |
| 209 | [V2]Implementación de menús | baseline start 2019-01-25 09:00 → 2018-12-24 09:00; baseline finish 2019-01-31 12:00 → 2018-12-24 19:00 |
| 210 | [PM]Comparar la planificación prevista y real en Project hito 3 | baseline start 2019-02-04 09:00 → 2019-01-25 09:00; baseline finish 2019-02-04 17:00 → 2019-01-25 19:00 |
| 211 | [PM]Confeccionar Informes de iteración e informe resumen de Hito 3 | baseline start 2019-02-04 09:00 → none; baseline finish 2019-02-04 17:00 → none |

## Version 21 (data date 2019-02-07, saved 2019-02-07)

Note of the change: Update ABP Planificacion.mpp

Last finish stays 2019-05-06.

Added:

| ID | Task | Duration | Start | Finish | Constraint | Resources |
| --- | --- | --- | --- | --- | --- | --- |
| 213 | [PM]Detallar plan de iteracion 10. Creación Subtareas y precedencias en Project | 2.4h | 2019-02-07 09:00 | 2019-02-07 11:24 | start no earlier than 2019-02-07 09:00 | Jose Ramon Barea Cecilia [10%] |
| 214 | [PM]Detallar plan de iteracion 10 Asignar recursos a las tareas en Project | 2.4h | 2019-02-07 09:00 | 2019-02-07 11:24 | start no earlier than 2019-02-07 09:00 | Jose Ramon Barea Cecilia [10%] |
| 215 | [PM]Registrar tiempos y % de realización de tareas en Project | 48min | 2019-02-07 09:00 | 2019-02-07 09:48 | start no earlier than 2019-02-07 09:00 | Todos |
| 217 | [RV]Modelado de los personajes (2/4) | 30h | 2019-02-08 09:00 | 2019-02-13 17:00 | start no earlier than 2019-02-08 09:00 | María Sánchez Marqués [60%]; Jose Ramon Barea Cecilia [10%] |
| 218 | [RV]Modelado del entorno y elementos | 10h | 2019-02-08 09:00 | 2019-02-11 11:00 | start no earlier than 2019-02-08 09:00 | Jose Ramon Barea Cecilia [10%] |
| 221 | [V1]Sistema de depuración visual in-game de la IA | 12h | 2019-02-08 09:00 | 2019-02-11 13:00 | start no earlier than 2019-02-08 09:00 | Débora Galdeano González [20%]; Marines Ánton Castelló [20%] |
| 222 | [v1]Sistema de control de movimiento con Steering Behaviours | 7h | 2019-02-11 09:00 | 2019-02-11 18:00 | start no earlier than 2019-02-11 09:00 | Débora Galdeano González [20%]; Marines Ánton Castelló [20%] |
| 223 | [v2]Power-ups y elementos adicionales | 7h | 2019-02-11 09:00 | 2019-02-11 18:00 | start no earlier than 2019-02-11 09:00 | Débora Galdeano González [20%]; Marines Ánton Castelló [20%]; David Ramón Sevilla [20%] |
| 224 | [v1]Gestión de recursos de IA con Level-of-Detail (LoD) | 10h | 2019-02-08 09:00 | 2019-02-11 11:00 | start no earlier than 2019-02-08 09:00 | Débora Galdeano González [20%]; Marines Ánton Castelló [20%]; David Ramón Sevilla [20%] |
| 225 | [v2]Implementación de un sistema multi-cámara | 2h | 2019-02-11 09:00 | 2019-02-11 11:00 | start no earlier than 2019-02-11 09:00 | Débora Galdeano González [10%]; Jose Ramon Barea Cecilia [10%] |
| 226 | [v2]Uso de sistema de depuración visual de las físicas | 5h | 2019-02-12 09:00 | 2019-02-12 16:00 | start no earlier than 2019-02-12 09:00 | Débora Galdeano González [10%]; Jose Ramon Barea Cecilia [10%]; Jose Vicente Anton Coy [10%] |
| 227 | [TAG]Estructura básica del nodo | 7h | 2019-02-08 09:00 | 2019-02-08 18:00 | start no earlier than 2019-02-08 09:00 | Jose Ramon Barea Cecilia [10%]; Jose Vicente Anton Coy [20%]; David Ramón Sevilla [10%] |
| 228 | [TAG ]Recorrido dibujado del arbol | 7h | 2019-02-11 09:00 | 2019-02-11 18:00 | start no earlier than 2019-02-11 09:00 | Jose Ramon Barea Cecilia [10%]; Jose Vicente Anton Coy [20%]; David Ramón Sevilla [10%] |
| 229 | [TAG]Estructura básica de la entidad (Constructor, destructor, funciones… todas virtuales, vacías) | 7h | 2019-02-11 09:00 | 2019-02-11 18:00 | start no earlier than 2019-02-11 09:00 | Jose Ramon Barea Cecilia [10%]; Jose Vicente Anton Coy [20%]; David Ramón Sevilla [10%] |
| 230 | [TAG]Matrices (model, view, projection) y pila estáticas y su manejo | 4h | 2019-02-12 09:00 | 2019-02-12 13:00 | start no earlier than 2019-02-12 09:00 | David Ramón Sevilla [10%]; Jose Ramon Barea Cecilia [10%]; Jose Vicente Anton Coy [20%] |
| 231 | [TAG]Estructura básica de la transformación (Constructor, destructor, matriz transformación…) | 4.5h | 2019-02-13 09:00 | 2019-02-13 15:30 | start no earlier than 2019-02-13 09:00 | David Ramón Sevilla [10%]; Jose Ramon Barea Cecilia [10%]; Jose Vicente Anton Coy [20%] |
| 232 | [TDS]Resto de la biblioteca (máx. 1/3), cuesheet y metadatos finales | 4h | 2019-02-08 09:00 | 2019-02-08 13:00 | start no earlier than 2019-02-08 09:00 | David Ramón Sevilla [20%] |
| 233 | [PD]Making of juego/proyecto (1/3) | 13h | 2019-02-12 09:00 | 2019-02-13 16:00 | start no earlier than 2019-02-12 09:00 | David Ramón Sevilla [15%]; Marines Ánton Castelló [15%]; Jose Vicente Anton Coy [15%] |
| 234 | [PM]Comparar la planificación prevista y real en Project hito 3 | 1.5h | 2019-02-12 09:00 | 2019-02-12 10:30 | start no earlier than 2019-02-12 09:00 | Jose Ramon Barea Cecilia [20%] |
| 235 | [PM]Confeccionar Informes de iteración e informe resumen de Hito 3 | 1.5h | 2019-02-13 09:00 | 2019-02-13 10:30 | start no earlier than 2019-02-13 09:00 | María Sánchez Marqués [20%]; Jose Ramon Barea Cecilia [10%] |

Changed:

| ID | Task | Start | Finish | Duration | Complete | Total float | Other |
| --- | --- | --- | --- | --- | --- | --- | --- |
| 14 | [v1] Documento de diseño de toma de decision: espacio y metodos |  |  |  |  |  | baseline start 2018-10-19 09:00 → none; baseline finish 2018-10-24 19:00 → none |
| 143 | **Hito 2** |  |  |  |  |  | baseline start 2018-12-21 18:12 → 2018-12-24 09:00; baseline finish 2019-01-17 13:00 → 2019-01-25 19:00 |
| 145 | [PM]Detallar plan iteraciones del mes de Enero. Creación Subtareas y precedencias en Project |  |  |  |  |  | baseline finish 2018-12-24 19:00 → 2018-12-31 17:00 |
| 147 | [V2]Implementación del HUD |  |  |  |  |  | baseline finish 2018-12-24 19:00 → 2018-12-26 19:00 |
| 148 | [v1]Gestión de recursos de IA con Level-of-Detail (LoD) |  |  |  |  |  | baseline start 2018-12-13 09:00 → 2018-12-28 09:00; baseline finish 2018-12-19 19:00 → 2019-01-03 19:00 |
| 149 | [v2]Power-ups y elementos adicionales |  |  |  |  |  | baseline start 2018-12-13 09:00 → 2018-12-31 09:00; baseline finish 2018-12-18 13:00 → 2019-01-03 13:00 |
| 150 | [V1]Sistema de distribución central de tiempo de proceso (Scheduling) |  |  |  |  |  | baseline start 2018-12-17 09:00 → 2018-12-31 09:00; baseline finish 2018-12-21 17:00 → 2019-01-04 17:00 |
| 153 | [v2]Uso de sistema de depuración visual de las físicas |  |  |  |  |  | baseline start 2018-12-11 09:00 → 2018-12-24 09:00; baseline finish 2018-12-12 11:00 → 2018-12-25 11:00 |
| 162 | [PM]Registrar tiempos y % de realización de tareas en Project |  |  |  |  |  | baseline start 2018-12-21 18:12 → 2019-01-04 18:12; baseline finish 2018-12-21 19:00 → 2019-01-06 19:00 |
| 163 | **Iteracion 8** |  |  |  |  |  | baseline start 2018-12-21 18:12 → 2019-01-07 09:00; baseline finish 2019-01-17 13:00 → 2019-01-25 19:00 |
| 164 | [PM]Detallar plan iteraciones del mes de Enero. Asignar recursos a las tareas en Project |  |  |  |  |  | baseline start none → 2019-01-14 09:00; baseline finish none → 2019-01-15 10:36 |
| 165 | [PM]Detallar plan iteraciones del mes de Enero. Creación Subtareas y precedencias en Project |  |  |  |  |  | baseline start none → 2019-01-14 09:00; baseline finish none → 2019-01-15 10:36 |
| 166 | [PM]Revisar especificación proyecto |  |  |  |  |  | baseline finish 2019-01-17 13:00 → 2019-01-16 12:00 |
| 167 | [PM]Reestimar proyecto |  |  |  |  |  | baseline start none → 2019-01-14 09:00; baseline finish none → 2019-01-16 12:00 |
| 168 | [PM]Registrar tiempos y % de realización de tareas en Project |  |  |  |  |  | baseline start 2018-12-21 18:12 → 2019-01-14 09:00; baseline finish 2018-12-21 19:00 → 2019-01-14 09:48 |
| 169 | [general] Mejoras y optimizacion del codigo |  |  |  |  |  | baseline start none → 2019-01-07 09:00; baseline finish none → 2019-01-21 11:00 |
| 170 | [V2]Diseño e implementación b.objetos (7/10) |  |  |  |  |  | baseline start 2019-01-11 09:00 → 2019-01-14 09:00; baseline finish 2019-01-11 18:00 → 2019-01-14 18:00 |
| 171 | [v2]Diseño e implementacion b.componentes 7 |  |  |  |  |  | baseline start 2019-01-11 09:00 → 2019-01-14 09:00; baseline finish 2019-01-14 11:00 → 2019-01-15 11:00 |
| 172 | [V1]Sistema de logros y puntuaciones web |  |  |  |  |  | baseline start none → 2019-01-14 09:00; baseline finish none → 2019-01-18 19:00 |
| 173 | [V2]Integración de librería para GUI |  |  |  |  |  | baseline start 2018-12-24 09:00 → 2019-01-14 09:00; baseline finish 2018-12-24 19:00 → 2019-01-14 17:00 |
| 174 | [RV]Modelado de los personajes |  |  |  |  |  | baseline start 2018-12-24 09:00 → 2019-01-14 09:00; baseline finish 2018-12-24 19:00 → 2019-01-23 13:00 |
| 176 | [RV]Texturizado de los personajes |  |  |  |  |  | baseline start 2018-12-24 09:00 → 2019-01-23 15:00; baseline finish 2018-12-24 19:00 → 2019-01-25 19:00 |
| 177 | **[TDS]Realizar sonidos para el juego 7/7** |  |  |  |  |  | baseline start 2019-01-11 09:00 → 2019-01-07 09:00; baseline finish 2019-01-11 11:51 → 2019-01-07 11:51 |
| 178 | Síntesis |  |  |  |  |  | baseline start 2019-01-11 09:00 → 2019-01-07 09:00; baseline finish 2019-01-11 11:51 → 2019-01-07 11:51 |
| 179 | Grabaciones propias |  |  |  |  |  | baseline start 2019-01-11 09:00 → 2019-01-07 09:00; baseline finish 2019-01-11 11:51 → 2019-01-07 11:51 |
| 180 | Sonidos externos |  |  |  |  |  | baseline start 2019-01-11 09:00 → 2019-01-07 09:00; baseline finish 2019-01-11 11:51 → 2019-01-07 11:51 |
| 181 | Música |  |  |  |  |  | baseline start 2019-01-11 09:00 → 2019-01-07 09:00; baseline finish 2019-01-11 11:51 → 2019-01-07 11:51 |
| 182 | Cue Sheet |  |  |  |  |  | baseline start 2019-01-11 09:00 → 2019-01-07 09:00; baseline finish 2019-01-11 10:25 → 2019-01-07 10:25 |
| 183 | Hoja de metadatos |  |  |  |  |  | baseline start 2019-01-11 09:00 → 2019-01-07 09:00; baseline finish 2019-01-11 10:25 → 2019-01-07 10:25 |
| 184 | Integración del motor de audio en el juego con prueba de concepto |  |  |  |  |  | baseline start 2019-01-11 09:00 → 2019-01-07 09:00; baseline finish 2019-01-11 11:51 → 2019-01-07 11:51 |
| 185 | [v2]Uso de sistema de depuración visual de las físicas |  |  |  |  |  | baseline start none → 2019-01-14 09:00; baseline finish none → 2019-01-15 11:00 |
| 186 | [TDS]Realizar sonidos para el juego 8/7 |  |  |  |  |  | baseline start none → 2019-01-17 09:00; baseline finish none → 2019-01-25 12:00 |
| 187 | [v2]Retocar mecanicas de Accion |  |  |  |  |  | baseline start none → 2019-01-07 09:00; baseline finish none → 2019-01-09 13:00 |
| 188 | [v2]Retocar Control del player: movimiento y colisiones sin motor de fisicas |  |  |  |  |  | baseline start none → 2019-01-08 09:00; baseline finish none → 2019-01-08 13:00 |
| 189 | [v2]Retocar mecanicas de puzzle 3/2 |  |  |  |  |  | baseline start none → 2019-01-08 09:00; baseline finish none → 2019-01-08 15:09 |
| 190 | [TAG] Aprendizaje OpenGL |  |  |  |  |  | baseline start none → 2019-01-14 09:00; baseline finish none → 2019-01-18 18:00 |
| 191 | [PM]Comparar la planificación prevista y real en Project hito 2 |  |  |  |  |  | baseline start 2018-12-24 09:00 → 2019-01-22 09:00; baseline finish 2018-12-24 19:00 → 2019-01-22 13:00 |
| 192 | [PM]Confeccionar Informes de iteración e informe resumen de Hito 2 |  |  |  |  |  | baseline start 2018-12-24 09:00 → 2019-01-22 09:00; baseline finish 2018-12-24 19:00 → 2019-01-22 17:00 |
| 193 | Version Beta del juego, que se pueda jugar |  |  |  |  |  | baseline start 2019-01-14 11:00 → 2019-01-25 19:00; baseline finish 2019-01-14 11:00 → 2019-01-25 19:00 |
| 194 | **Hito 3** |  |  |  | 22% → 19% |  |  |
| 195 | **Iteracion 9** |  |  |  |  |  | baseline finish 2019-01-28 11:00 → 2019-02-14 19:00 |
| 196 | [PM]Detallar plan iteraciones del mes de Febrero-Marzo. Creación Subtareas y precedencias en Project |  |  |  |  |  | baseline start none → 2019-01-25 09:00; baseline finish none → 2019-01-28 10:36 |
| 197 | [PM]Detallar plan iteraciones del mes de Febrero-Marzo Asignar recursos a las tareas en Project |  |  |  |  |  | baseline start none → 2019-01-25 09:00; baseline finish none → 2019-02-07 15:48 |
| 198 | [PM]Registrar tiempos y % de realización de tareas en Project |  |  |  |  |  | baseline start none → 2019-01-25 09:00; baseline finish none → 2019-01-25 09:48 |
| 199 | [general] Mejoras y optimizacion del codigo |  |  |  |  |  | baseline start none → 2019-01-28 09:00; baseline finish none → 2019-01-29 11:00 |
| 202 | [V1]Sistema de depuración visual in-game de la IA |  |  |  |  |  | baseline start 2018-12-24 09:00 → 2019-01-25 09:00; baseline finish 2018-12-24 19:00 → 2019-02-04 11:00 |
| 203 | [TDS]Resto de la biblioteca (máx. 1/3), cuesheet y metadatos finales |  |  |  |  |  | baseline start none → 2019-01-25 09:00; baseline finish none → 2019-01-25 13:00 |
| 204 | [TAG]Aprendizaje OpenGL |  |  |  |  |  | baseline start none → 2019-01-28 09:00; baseline finish none → 2019-01-31 17:00 |
| 205 | [PD]Making of juego/proyecto |  |  |  |  |  | baseline start none → 2019-01-25 09:00; baseline finish none → 2019-01-31 19:00 |
| 206 | [V1]Sistema de depuración visual in-game de la IA |  |  |  |  |  | baseline start none → 2019-01-28 09:00; baseline finish none → 2019-02-05 11:00 |
| 207 | [RV]Modelado de los personajes |  |  |  |  |  | baseline start none → 2019-01-25 09:00; baseline finish none → 2019-02-14 19:00 |
| 208 | [v2]Power-ups y elementos adicionales |  |  |  |  |  | baseline start none → 2019-01-28 09:00; baseline finish none → 2019-01-31 13:00 |
| 209 | [V2]Implementación de menús |  |  |  |  |  | baseline start 2018-12-24 09:00 → 2019-01-25 09:00; baseline finish 2018-12-24 19:00 → 2019-01-31 12:00 |
| 210 | [PM]Comparar la planificación prevista y real en Project hito 3 |  |  |  |  |  | baseline start 2019-01-25 09:00 → 2019-02-04 09:00; baseline finish 2019-01-25 19:00 → 2019-02-04 17:00 |
| 211 | [PM]Confeccionar Informes de iteración e informe resumen de Hito 3 |  |  |  |  |  | baseline start none → 2019-02-04 09:00; baseline finish none → 2019-02-04 17:00 |
| 212 | **Iteracion 10** | 2019-02-06 09:00 → 2019-02-07 09:00 (+1d) | 2019-02-07 11:00 → 2019-02-13 17:00 (+6d) | 1.25d? → 4.75d |  | 33.75d → 29.25d | baseline start 2019-02-06 09:00 → 2019-02-07 09:00; baseline finish 2019-02-07 11:00 → 2019-02-13 17:00 |
| 216 | [general] Mejoras estructura del codigo | 2019-02-06 09:00 → 2019-02-08 09:00 (+2d) | 2019-02-06 19:00 → 2019-02-08 11:00 (+2d) | 1d? → 2h |  | 34d → 32.75d | was named <Tarea nueva>; constraint none → start no earlier than 2019-02-08 09:00; resources none → Marines Ánton Castelló [20%]; Débora Galdeano González [20%]; baseline start 2019-02-06 09:00 → 2019-02-08 09:00; baseline finish 2019-02-06 19:00 → 2019-02-08 11:00 |
| 219 | [V2]Diseño e implementación b.objetos (9/10) | 2019-02-06 09:00 → 2019-02-12 09:00 (+6d) | 2019-02-06 18:00 → 2019-02-12 18:00 (+6d) |  |  | 34.12d → 30.12d | constraint none → start no earlier than 2019-02-12 09:00; resources Jose Ramon Barea Cecilia [50%] → Jose Ramon Barea Cecilia [10%]; Marines Ánton Castelló [10%]; Débora Galdeano González [10%]; David Ramón Sevilla [10%]; Jose Vicente Anton Coy [10%]; baseline start 2019-02-06 09:00 → 2019-02-12 09:00; baseline finish 2019-02-06 18:00 → 2019-02-12 18:00 |
| 220 | [v2]Diseño e implementacion b.componentes 9 | 2019-02-06 09:00 → 2019-02-12 09:00 (+6d) | 2019-02-07 11:00 → 2019-02-13 11:00 (+6d) |  |  | 33.75d → 29.75d | constraint start no earlier than 2019-01-21 09:00 → start no earlier than 2019-02-12 09:00; resources none → David Ramón Sevilla [10%]; Débora Galdeano González [10%]; Jose Ramon Barea Cecilia [10%]; Jose Vicente Anton Coy [10%]; Marines Ánton Castelló [10%]; baseline start 2019-02-06 09:00 → 2019-02-12 09:00; baseline finish 2019-02-07 11:00 → 2019-02-13 11:00 |

## Version 22 (data date 2019-02-08, saved 2019-02-07)

Note of the change: Update ABP Planificacion.mpp

Last finish stays 2019-05-06.

Changed:

| ID | Task | Start | Finish | Duration | Total float | Other |
| --- | --- | --- | --- | --- | --- | --- |
| 212 | **Iteracion 10** |  | 2019-02-13 17:00 → 2019-02-19 16:00 (+6d) | 4.75d → 8.62d | 29.25d → 25.38d | baseline finish 2019-02-13 17:00 → 2019-02-19 16:00 |
| 222 | [v1]Sistema de control de movimiento con Steering Behaviours | 2019-02-11 09:00 → 2019-02-13 09:00 (+2d) | 2019-02-11 18:00 → 2019-02-13 18:00 (+2d) |  | 31.12d → 29.12d | constraint start no earlier than 2019-02-11 09:00 → start no earlier than 2019-02-13 09:00; baseline start 2019-02-11 09:00 → 2019-02-13 09:00; baseline finish 2019-02-11 18:00 → 2019-02-13 18:00 |
| 223 | [v2]Power-ups y elementos adicionales | 2019-02-11 09:00 → 2019-02-13 09:00 (+2d) | 2019-02-11 18:00 → 2019-02-13 18:00 (+2d) |  | 31.12d → 29.12d | constraint start no earlier than 2019-02-11 09:00 → start no earlier than 2019-02-13 09:00; baseline start 2019-02-11 09:00 → 2019-02-13 09:00; baseline finish 2019-02-11 18:00 → 2019-02-13 18:00 |
| 225 | [v2]Implementación de un sistema multi-cámara | 2019-02-11 09:00 → 2019-02-15 09:00 (+4d) | 2019-02-11 11:00 → 2019-02-15 11:00 (+4d) |  | 31.75d → 27.75d | constraint start no earlier than 2019-02-11 09:00 → start no earlier than 2019-02-15 09:00; baseline start 2019-02-11 09:00 → 2019-02-15 09:00; baseline finish 2019-02-11 11:00 → 2019-02-15 11:00 |
| 226 | [v2]Uso de sistema de depuración visual de las físicas | 2019-02-12 09:00 → 2019-02-18 09:00 (+6d) | 2019-02-12 16:00 → 2019-02-18 16:00 (+6d) |  | 30.38d → 26.38d | constraint start no earlier than 2019-02-12 09:00 → start no earlier than 2019-02-16 09:00; baseline start 2019-02-12 09:00 → 2019-02-18 09:00; baseline finish 2019-02-12 16:00 → 2019-02-18 16:00 |
| 228 | [TAG ]Recorrido dibujado del arbol | 2019-02-11 09:00 → 2019-02-18 09:00 (+7d) | 2019-02-11 18:00 → 2019-02-18 18:00 (+7d) |  | 31.12d → 26.12d | constraint start no earlier than 2019-02-11 09:00 → start no earlier than 2019-02-16 09:00; baseline start 2019-02-11 09:00 → 2019-02-18 09:00; baseline finish 2019-02-11 18:00 → 2019-02-18 18:00 |
| 229 | [TAG]Estructura básica de la entidad (Constructor, destructor, funciones… todas virtuales, vacías) | 2019-02-11 09:00 → 2019-02-18 09:00 (+7d) | 2019-02-11 18:00 → 2019-02-18 18:00 (+7d) |  | 31.12d → 26.12d | constraint start no earlier than 2019-02-11 09:00 → start no earlier than 2019-02-16 09:00; baseline start 2019-02-11 09:00 → 2019-02-18 09:00; baseline finish 2019-02-11 18:00 → 2019-02-18 18:00 |
| 230 | [TAG]Matrices (model, view, projection) y pila estáticas y su manejo | 2019-02-12 09:00 → 2019-02-18 09:00 (+6d) | 2019-02-12 13:00 → 2019-02-18 13:00 (+6d) |  | 30.5d → 26.5d | constraint start no earlier than 2019-02-12 09:00 → start no earlier than 2019-02-17 09:00; baseline start 2019-02-12 09:00 → 2019-02-18 09:00; baseline finish 2019-02-12 13:00 → 2019-02-18 13:00 |
| 231 | [TAG]Estructura básica de la transformación (Constructor, destructor, matriz transformación…) | 2019-02-13 09:00 → 2019-02-18 09:00 (+5d) | 2019-02-13 15:30 → 2019-02-18 15:30 (+5d) |  | 29.44d → 26.44d | constraint start no earlier than 2019-02-13 09:00 → start no earlier than 2019-02-16 09:00; baseline start 2019-02-13 09:00 → 2019-02-18 09:00; baseline finish 2019-02-13 15:30 → 2019-02-18 15:30 |
| 233 | [PD]Making of juego/proyecto (1/3) | 2019-02-12 09:00 → 2019-02-18 09:00 (+6d) | 2019-02-13 16:00 → 2019-02-19 16:00 (+6d) |  | 29.38d → 25.38d | constraint start no earlier than 2019-02-12 09:00 → start no earlier than 2019-02-18 09:00; baseline start 2019-02-12 09:00 → 2019-02-18 09:00; baseline finish 2019-02-13 16:00 → 2019-02-19 16:00 |
| 234 | [PM]Comparar la planificación prevista y real en Project hito 3 | 2019-02-12 09:00 → 2019-02-19 09:00 (+7d) | 2019-02-12 10:30 → 2019-02-19 10:30 (+7d) |  | 30.81d → 25.81d | constraint start no earlier than 2019-02-12 09:00 → start no earlier than 2019-02-19 09:00; baseline start 2019-02-12 09:00 → 2019-02-19 09:00; baseline finish 2019-02-12 10:30 → 2019-02-19 10:30 |
| 235 | [PM]Confeccionar Informes de iteración e informe resumen de Hito 3 | 2019-02-13 09:00 → 2019-02-19 09:00 (+6d) | 2019-02-13 10:30 → 2019-02-19 10:30 (+6d) |  | 29.81d → 25.81d | constraint start no earlier than 2019-02-13 09:00 → start no earlier than 2019-02-19 09:00; baseline start 2019-02-13 09:00 → 2019-02-19 09:00; baseline finish 2019-02-13 10:30 → 2019-02-19 10:30 |

## Version 23 (data date 2019-02-21, saved 2019-02-21)

Note of the change: Update ABP Planificacion.mpp

Last finish stays 2019-05-06. Complete tasks 140 → 158.

Added:

| ID | Task | Duration | Start | Finish | Predecessors | Constraint | Resources |
| --- | --- | --- | --- | --- | --- | --- | --- |
| 236 | [PM]Detallar plan de iteracion 11. Creación Subtareas y precedencias en Project | 2.4h | 2019-02-21 09:00 | 2019-02-21 11:24 |  | start no earlier than 2019-02-21 09:00 | Jose Ramon Barea Cecilia [10%] |
| 237 | [PM]Detallar plan de iteracion 11 Asignar recursos a las tareas en Project | 3.4h | 2019-02-21 09:00 | 2019-02-21 12:24 |  | start no earlier than 2019-02-21 09:00 | Jose Ramon Barea Cecilia [10%] |
| 238 | [PM]Registrar tiempos y % de realización de tareas en Project | 48min | 2019-02-21 09:00 | 2019-02-21 09:48 |  | start no earlier than 2019-02-21 09:00 | Todos [4%] |
| 241 | [v1v2] Estructura del codigo optimización | 20h | 2019-02-25 09:00 | 2019-02-27 13:00 |  | start no earlier than 2019-02-25 09:00 | Marines Ánton Castelló [20%] |
| 242 | [v1]Arreglar Comunicación entre NPCs Blackboard | 12h | 2019-02-25 09:00 | 2019-02-26 13:00 |  | start no earlier than 2019-02-25 09:00 | Marines Ánton Castelló [20%] |
| 243 | [v1]Behabiour trees arreglos | 18h | 2019-03-04 09:00 | 2019-03-06 11:00 |  | start no earlier than 2019-03-04 09:00 | Débora Galdeano González [20%] |
| 245 | [v1]Waypoints para pathfinding continuo | 20h | 2019-03-04 09:00 | 2019-03-06 13:00 |  | start no earlier than 2019-03-04 09:00 | Débora Galdeano González [10%] |
| 246 | [v1]Comportamiento Grupal emergente Flocking | 25h | 2019-02-26 15:00 | 2019-03-01 16:00 | 242 | start no earlier than 2019-02-26 09:00 | Marines Ánton Castelló [20%] |
| 247 | [v2]Añadir power-ups y elementos adicionales | 12h | 2019-03-04 09:00 | 2019-03-05 13:00 |  | start no earlier than 2019-03-04 09:00 | Débora Galdeano González [20%] |
| 248 | [v2]Diseño y creacion de nivel | 12h | 2019-02-21 09:00 | 2019-02-22 13:00 |  | start no earlier than 2019-02-21 09:00 | Jose Ramon Barea Cecilia [12%] |
| 249 | [v2]Implementacion de un sistema multicamaras | 18h | 2019-02-25 09:00 | 2019-02-27 11:00 | 248 | start no earlier than 2019-02-25 09:00 | Jose Ramon Barea Cecilia [12%] |
| 250 | [tds]Resto de la biblioteca (máx. 1/3), cuesheet y metadatos finales | 6h | 2019-03-01 09:00 | 2019-03-01 17:00 |  | start no earlier than 2019-03-01 09:00 | Jose Ramon Barea Cecilia [10%]; María Sánchez Marqués [10%] |
| 251 | [rv]Modelado de los personajes | 35h | 2019-02-20 09:00 | 2019-02-26 12:00 |  |  | María Sánchez Marqués [20%] |
| 252 | [rv]Texturizado de los personajes | 10h | 2019-02-20 09:00 | 2019-02-21 11:00 |  |  | María Sánchez Marqués [20%]; Débora Galdeano González [10%] |
| 253 | [tag]Operaciones de transformación: trasladar, rotar... | 7h | 2019-02-20 09:00 | 2019-02-20 18:00 |  |  | Jose Vicente Anton Coy [20%] |
| 254 | [tag]Dibujado: begindraw, enddraw... | 9h | 2019-02-26 09:00 | 2019-02-27 10:00 |  | start no earlier than 2019-02-26 09:00 | Jose Ramon Barea Cecilia [10%]; Jose Vicente Anton Coy [20%] |
| 255 | [tag]Estructura básica de la cámara | 6h | 2019-02-25 09:00 | 2019-02-25 17:00 |  | start no earlier than 2019-02-25 09:00 | David Ramón Sevilla [20%] |
| 256 | [tag]Estructura básica de la malla | 6h | 2019-02-25 09:00 | 2019-02-25 17:00 |  | start no earlier than 2019-02-25 09:00 | David Ramón Sevilla [16%] |
| 257 | [tag]Datos de mallas, texturas... | 7h | 2019-02-28 09:00 | 2019-02-28 18:00 |  | start no earlier than 2019-02-28 09:00 | David Ramón Sevilla [16%] |
| 258 | [tag]Dibujado de mallas | 8h | 2019-02-27 09:00 | 2019-02-27 19:00 |  | start no earlier than 2019-02-27 09:00 | David Ramón Sevilla [16%] |
| 259 | [tag]Estructura básica de la animación... | 7h | 2019-02-22 09:00 | 2019-02-22 18:00 |  | start no earlier than 2019-02-22 09:00 | David Ramón Sevilla [16%] |
| 260 | [tag]Estructura básica del gestor de recursos... | 7h | 2019-02-22 09:00 | 2019-02-22 18:00 |  | start no earlier than 2019-02-22 09:00 | Jose Vicente Anton Coy [16%] |
| 261 | [tag]Lectura de disco con assimp | 9h | 2019-02-27 09:00 | 2019-02-28 10:00 |  | start no earlier than 2019-02-27 09:00 | Jose Ramon Barea Cecilia [4%]; Jose Vicente Anton Coy [16%] |
| 262 | [PM]Comparar la planificación prevista y real en Project hito 3 | 1.5h | 2019-03-05 09:00 | 2019-03-05 10:30 |  | start no earlier than 2019-03-05 09:00 | Jose Ramon Barea Cecilia [10%] |
| 263 | [PM]Confeccionar Informe de iteración 11 | 4h | 2019-03-06 09:00 | 2019-03-06 13:00 | 262 | start no earlier than 2019-03-06 09:00 | María Sánchez Marqués [20%]; Jose Ramon Barea Cecilia [5%] |

Removed: 233 [PD]Making of juego/proyecto (1/3)

Changed:

| ID | Task | Start | Finish | Duration | Complete | Total float | Other |
| --- | --- | --- | --- | --- | --- | --- | --- |
| 194 | **Hito 3** |  |  |  | 19% → 25% |  |  |
| 212 | **Iteracion 10** | 2019-02-07 09:00 A | 2019-02-19 16:00 → 2019-02-19 10:30 | 8.62d → 8.19d | 0% → 91% | 25.38d → 25.81d | baseline finish 2019-02-19 16:00 → 2019-02-19 10:30 |
| 213 | [PM]Detallar plan de iteracion 10. Creación Subtareas y precedencias en Project | 2019-02-07 09:00 A | 2019-02-07 11:24 A |  | 0% → 100% | 33.7d → none |  |
| 214 | [PM]Detallar plan de iteracion 10 Asignar recursos a las tareas en Project + Sesion Scrum | 2019-02-07 09:00 A | 2019-02-07 11:24 → 2019-02-07 12:24 A | 2.4h → 3.4h | 0% → 100% | 33.7d → none | was named [PM]Detallar plan de iteracion 10 Asignar recursos a las tareas en Project; resources Jose Ramon Barea Cecilia [10%] → Jose Ramon Barea Cecilia [10%]; David Ramón Sevilla [10%]; Débora Galdeano González [10%]; Jose Vicente Anton Coy [10%]; María Sánchez Marqués [10%]; Marines Ánton Castelló [10%]; baseline finish 2019-02-07 11:24 → 2019-02-07 12:24 |
| 215 | [PM]Registrar tiempos y % de realización de tareas en Project | 2019-02-07 09:00 A | 2019-02-07 09:48 A |  | 0% → 100% | 33.9d → none |  |
| 216 | [general] Mejoras estructura del codigo | 2019-02-08 09:00 A | 2019-02-08 11:00 A |  | 0% → 100% | 32.75d → none |  |
| 217 | [RV]Modelado de los personajes (2/4) | 2019-02-08 09:00 A | 2019-02-13 17:00 A |  | 0% → 100% | 29.25d → none | resources María Sánchez Marqués [60%]; Jose Ramon Barea Cecilia [10%] → María Sánchez Marqués; Débora Galdeano González [20%] |
| 218 | [RV]Modelado del entorno y elementos | 2019-02-08 09:00 A | 2019-02-11 11:00 A |  | 0% → 100% | 31.75d → none |  |
| 219 | [V2]Diseño e implementación b.objetos (9/10) | 2019-02-12 09:00 A | 2019-02-12 18:00 A |  | 0% → 100% | 30.12d → none | resources Jose Ramon Barea Cecilia [10%]; Marines Ánton Castelló [10%]; Débora Galdeano González [10%]; David Ramón Sevilla [10%]; Jose Vicente Anton Coy [10%] → Marines Ánton Castelló [10%] |
| 220 | [v2]Diseño e implementacion b.componentes 9 | 2019-02-12 09:00 A | 2019-02-13 11:00 A |  | 0% → 100% | 29.75d → none | resources David Ramón Sevilla [10%]; Débora Galdeano González [10%]; Jose Ramon Barea Cecilia [10%]; Jose Vicente Anton Coy [10%]; Marines Ánton Castelló [10%] → Débora Galdeano González [10%]; Jose Ramon Barea Cecilia [10%]; Marines Ánton Castelló [10%] |
| 221 | [V1]Sistema de depuración visual in-game de la IA | 2019-02-08 09:00 A | 2019-02-11 13:00 A |  | 0% → 100% | 31.5d → none | resources Débora Galdeano González [20%]; Marines Ánton Castelló [20%] → Débora Galdeano González |
| 222 | [v1]Sistema de control de movimiento con Steering Behaviours | 2019-02-13 09:00 A | 2019-02-13 18:00 A |  | 0% → 100% | 29.12d → none |  |
| 223 | [v2]Power-ups y elementos adicionales | 2019-02-13 09:00 A |  |  | 0% → 50% |  | resources Débora Galdeano González [20%]; Marines Ánton Castelló [20%]; David Ramón Sevilla [20%] → David Ramón Sevilla |
| 224 | [v1]Gestión de recursos de IA con Level-of-Detail (LoD) | 2019-02-08 09:00 A |  |  | 0% → 70% |  | resources Débora Galdeano González [20%]; Marines Ánton Castelló [20%]; David Ramón Sevilla [20%] → Débora Galdeano González |
| 227 | [TAG]Estructura básica del nodo | 2019-02-08 09:00 A | 2019-02-08 18:00 A |  | 0% → 100% | 32.12d → none | resources Jose Ramon Barea Cecilia [10%]; Jose Vicente Anton Coy [20%]; David Ramón Sevilla [10%] → Jose Vicente Anton Coy |
| 228 | [TAG ]Recorrido dibujado del arbol | 2019-02-18 09:00 A | 2019-02-18 18:00 A |  | 0% → 100% | 26.12d → none | resources Jose Ramon Barea Cecilia [10%]; Jose Vicente Anton Coy [20%]; David Ramón Sevilla [10%] → Jose Vicente Anton Coy |
| 229 | [TAG]Estructura básica de la entidad (Constructor, destructor, funciones… todas virtuales, vacías) | 2019-02-18 09:00 A | 2019-02-18 18:00 A |  | 0% → 100% | 26.12d → none | resources Jose Ramon Barea Cecilia [10%]; Jose Vicente Anton Coy [20%]; David Ramón Sevilla [10%] → David Ramón Sevilla [10%] |
| 230 | [TAG]Matrices (model, view, projection) y pila estáticas y su manejo | 2019-02-18 09:00 A | 2019-02-18 13:00 A |  | 0% → 100% | 26.5d → none | resources David Ramón Sevilla [10%]; Jose Ramon Barea Cecilia [10%]; Jose Vicente Anton Coy [20%] → David Ramón Sevilla [10%] |
| 231 | [TAG]Estructura básica de la transformación (Constructor, destructor, matriz transformación…) | 2019-02-18 09:00 A | 2019-02-18 15:30 A |  | 0% → 100% | 26.44d → none | resources David Ramón Sevilla [10%]; Jose Ramon Barea Cecilia [10%]; Jose Vicente Anton Coy [20%] → David Ramón Sevilla [10%] |
| 232 | [TDS]Resto de la biblioteca (máx. 1/3), cuesheet y metadatos finales | 2019-02-08 09:00 A | 2019-02-08 13:00 A |  | 0% → 100% | 32.5d → none |  |
| 233 | [PM]Comparar la planificación prevista y real en Project hito 3 | 2019-02-19 09:00 A | 2019-02-19 10:30 A |  | 0% → 100% | 25.81d → none |  |
| 234 | [PM]Confeccionar Informes de iteración e informe resumen de Hito 3 | 2019-02-19 09:00 A | 2019-02-19 10:30 A |  | 0% → 100% | 25.81d → none |  |
| 235 | **Iteracion 11** |  | 2019-02-21 11:00 → 2019-03-06 13:00 (+13d) | 1.25d? → 10.5d |  | 23.75d → 14.5d | baseline finish 2019-02-21 11:00 → 2019-03-06 13:00 |
| 239 | [v2]Diseño e implementación b.objetos (final) | 2019-02-20 09:00 → 2019-02-21 09:00 (+1d) | 2019-02-20 18:00 → 2019-02-21 18:00 (+1d) |  |  | 24.12d → 23.12d | was named [V2]Diseño e implementación b.objetos (final); constraint none → start no earlier than 2019-02-21 09:00; resources none → Jose Ramon Barea Cecilia [4%]; Débora Galdeano González [4%]; Marines Ánton Castelló [4%]; Jose Vicente Anton Coy [4%]; baseline start 2019-02-20 09:00 → 2019-02-21 09:00; baseline finish 2019-02-20 18:00 → 2019-02-21 18:00 |
| 240 | [v2]Diseño e implementacion b.componentes (final) | 2019-02-20 09:00 → 2019-02-21 09:00 (+1d) | 2019-02-21 11:00 → 2019-02-22 11:00 (+1d) |  |  | 23.75d → 22.75d | constraint start no earlier than 2019-02-04 09:00 → start no earlier than 2019-02-21 09:00; resources none → Jose Ramon Barea Cecilia [4%]; Débora Galdeano González [4%]; Marines Ánton Castelló [4%]; Jose Vicente Anton Coy [4%]; baseline start 2019-02-20 09:00 → 2019-02-21 09:00; baseline finish 2019-02-21 11:00 → 2019-02-22 11:00 |
| 244 | [v1]Movimiento con steering behaviours | 2019-02-20 09:00 → 2019-02-27 09:00 (+7d) | 2019-02-20 19:00 → 2019-02-28 19:00 (+8d) | 1d? → 16h |  | 24d → 18d | was named <Tarea nueva>; constraint none → start no earlier than 2019-02-27 09:00; resources none → Débora Galdeano González [20%]; baseline start 2019-02-20 09:00 → 2019-02-27 09:00; baseline finish 2019-02-20 19:00 → 2019-02-28 19:00 |

## Version 24 (data date 2019-02-21, saved 2019-03-05)

Note of the change: Update ABP Planificacion.mpp

Last finish stays 2019-05-06. Complete tasks 158 → 180.

Changed:

| ID | Task | Start | Finish | Duration | Complete | Total float | Predecessors | Other |
| --- | --- | --- | --- | --- | --- | --- | --- | --- |
| 194 | **Hito 3** |  | 2019-03-06 19:00 → 2019-03-07 15:30 (+1d) | 30d? → 31.56d? | 25% → 44% | 14d → 13.44d |  |  |
| 235 | **Iteracion 11** | 2019-02-20 09:00 A | 2019-03-06 13:00 → 2019-03-07 15:30 (+1d) | 10.5d → 12.56d | 0% → 92% | 14.5d → 13.44d |  |  |
| 236 | [PM]Detallar plan de iteracion 11. Creación Subtareas y precedencias en Project | 2019-02-21 09:00 A | 2019-02-21 11:24 → 2019-02-21 11:36 A | 2.4h → 2.6h | 0% → 100% | 23.7d → none |  |  |
| 237 | [PM]Detallar plan de iteracion 11 Asignar recursos a las tareas en Project | 2019-02-21 09:00 A | 2019-02-21 12:24 A |  | 0% → 100% | 23.57d → none |  |  |
| 238 | [PM]Registrar tiempos y % de realización de tareas en Project | 2019-02-21 09:00 A | 2019-02-21 09:48 A |  | 0% → 100% | 23.9d → none |  |  |
| 239 | [v2]Diseño e implementación b.objetos (final) | 2019-02-21 09:00 A | 2019-02-21 18:00 → 2019-02-21 12:36 A | 7h → 3.6h | 0% → 100% | 23.12d → none |  | resources Jose Ramon Barea Cecilia [4%]; Débora Galdeano González [4%]; Marines Ánton Castelló [4%]; Jose Vicente Anton Coy [4%] → Marines Ánton Castelló |
| 240 | [v2]Diseño e implementacion b.componentes (final) | 2019-02-21 09:00 A | 2019-02-22 11:00 → 2019-02-21 17:00 A (-1d) | 10h → 6h | 0% → 100% | 22.75d → none |  | resources Jose Ramon Barea Cecilia [4%]; Débora Galdeano González [4%]; Marines Ánton Castelló [4%]; Jose Vicente Anton Coy [4%] → Marines Ánton Castelló [4%] |
| 241 | [v1v2] Estructura del codigo optimización | 2019-02-25 09:00 A | 2019-02-27 13:00 A |  | 0% → 100% | 19.5d → none |  |  |
| 242 | [v1]Arreglos de ia y clases de personajes | 2019-02-26 15:00 A | 2019-03-01 16:00 → 2019-03-01 15:30 A | 25h → 24.5h | 0% → 100% | 17.38d → none | 243 → none | was named [v1]Comportamiento Grupal emergente Flocking |
| 243 | [v1]Arreglar Comunicación entre NPCs Blackboard |  | 2019-02-26 13:00 → 2019-02-25 09:00 (-1d) | 12h → 0.01h |  | 17.38d → 22d |  |  |
| 244 | [v1]Movimiento con steering behaviours | 2019-02-27 09:00 A | 2019-02-28 19:00 → 2019-03-04 10:00 (+4d) | 16h → 25h | 0% → 64% | 18d → 16.88d |  |  |
| 245 | [v1]Waypoints para pathfinding continuo | 2019-03-04 09:00 A | 2019-03-06 13:00 → 2019-03-05 09:30 A (-1d) | 20h → 8.5h | 0% → 100% | 14.5d → none |  |  |
| 246 | [v2]Diseño y creación de nivel | 2019-03-04 09:00 A | 2019-03-06 11:00 → 2019-03-07 15:30 A (+1d) | 18h → 28.5h | 0% → 100% | 14.75d → none |  | was named [v1]Behabiour trees arreglos; resources Débora Galdeano González [20%] → Jose Ramon Barea Cecilia [25%]; María Sánchez Marqués [5%] |
| 247 | [v2]Errores de codigo relacionados con nivel | 2019-02-21 09:00 A | 2019-02-22 13:00 → 2019-02-22 11:18 A | 12h → 10.3h | 0% → 100% | 20.25d → none |  | was named [v2]Diseño y creacion de nivel; resources Jose Ramon Barea Cecilia [12%] → Jose Ramon Barea Cecilia [5%]; María Sánchez Marqués [20%] |
| 248 | [v2]Implementacion de un sistema multicamaras |  | 2019-02-27 11:00 → 2019-02-25 09:00 (-2d) | 18h → 0.01h |  | 19.75d → 22d |  |  |
| 249 | [tds]Resto de la biblioteca (máx. 1/3), cuesheet y metadatos finales |  | 2019-03-01 17:00 → 2019-03-01 09:00 | 6h → 0.01h |  | 17.25d → 18d |  |  |
| 250 | [rv]Modelado de los personajes | 2019-02-20 09:00 A | 2019-02-26 12:00 → 2019-02-24 12:00 A (-2d) | 35h → 27h | 0% → 100% | 20.62d → none |  |  |
| 251 | [rv]Texturizado de los personajes + uvmaping | 2019-02-20 09:00 A | 2019-02-21 11:00 → 2019-02-22 11:00 (+1d) | 10h → 18h | 0% → 56% |  |  | was named [rv]Texturizado de los personajes; resources María Sánchez Marqués [20%]; Débora Galdeano González [10%] → María Sánchez Marqués [20%]; Débora Galdeano González [20%] |
| 252 | [rv]Rigging Personajes | 2019-02-26 09:00 A | 2019-02-27 10:00 → 2019-02-26 15:15 (-1d) | 9h → 4.25h | 0% → 25% | 19.88d → 20.47d |  | was named [tag]Dibujado: begindraw, enddraw...; resources Jose Ramon Barea Cecilia [10%]; Jose Vicente Anton Coy [20%] → Jose Vicente Anton Coy [20%] |
| 253 | [tag]Operaciones de transformación: trasladar, rotar... | 2019-02-20 09:00 A | 2019-02-20 18:00 → 2019-02-20 16:00 A | 7h → 5h | 0% → 100% | 24.12d → none |  |  |
| 254 | [tag]Iluminacion luz puntual y luz dirigida | 2019-02-25 09:00 A | 2019-02-25 17:00 → 2019-02-26 16:00 A (+1d) | 6h → 13h | 0% → 100% | 21.25d → none |  | was named [tag]Estructura básica de la cámara; baseline finish 2019-02-25 17:00 → 2019-02-26 18:00 |
| 255 | [tag]Reflexion de phong | 2019-03-04 09:00 A | 2019-03-05 13:00 → 2019-03-04 16:00 A (-1d) | 12h → 5h | 0% → 100% | 15.5d → none |  | was named [v2]Añadir power-ups y elementos adicionales; resources Débora Galdeano González [20%] → David Ramón Sevilla [20%] |
| 256 | [tag]Estructura básica de la malla | 2019-02-25 09:00 A | 2019-02-25 17:00 → 2019-02-25 16:54 A | 6h → 5.9h | 0% → 100% | 21.25d → none |  |  |
| 257 | [tag]Datos de mallas, texturas... | 2019-02-28 09:00 A | 2019-02-28 18:00 → 2019-02-28 18:30 A | 7h → 7.5h | 0% → 100% | 18.12d → none |  |  |
| 258 | [tag]Dibujado de mallas | 2019-02-27 09:00 A | 2019-02-27 19:00 → 2019-02-27 16:54 A | 8h → 5.9h | 0% → 100% | 19d → none |  |  |
| 259 | [tag]Estructura básica de la animación... | 2019-02-22 09:00 A | 2019-02-22 18:00 → 2019-02-22 13:00 A | 7h → 4h | 0% → 100% | 22.12d → none |  |  |
| 260 | [tag]Estructura básica del gestor de recursos... | 2019-02-22 09:00 A | 2019-02-22 18:00 A |  | 0% → 100% | 22.12d → none |  |  |
| 261 | [tag]Lectura de disco con assimp | 2019-02-27 09:00 A | 2019-02-28 10:00 → 2019-02-27 13:00 A (-1d) | 9h → 4h | 0% → 100% | 18.88d → none |  | resources Jose Ramon Barea Cecilia [4%]; Jose Vicente Anton Coy [16%] → David Ramón Sevilla [16%] |
| 262 | [PM]Comparar la planificación prevista y real en Project hito 3 | 2019-03-05 09:00 A | 2019-03-05 10:30 A |  | 0% → 100% | 15.31d → none |  |  |
| 263 | [PM]Confeccionar Informe de iteración 11 | 2019-03-06 09:00 A | 2019-03-06 13:00 → 2019-03-06 12:30 A | 4h → 3.5h | 0% → 100% | 14.5d → none |  |  |
| 319 | Versión Producción - Lista para pulir | 2019-03-06 19:00 → 2019-03-07 15:30 (+1d) | 2019-03-06 19:00 → 2019-03-07 15:30 (+1d) |  |  | 43d → 42.44d |  |  |

## Version 25 (data date 2019-03-05, saved 2019-03-07)

Note of the change: actualizado project e informe de iteracion

Last finish stays 2019-05-06.

Added:

| ID | Task | Duration | Start | Finish | Predecessors | Constraint | Resources |
| --- | --- | --- | --- | --- | --- | --- | --- |
| 265 | [PM]Detallar plan de iteracion 12. Creación Subtareas y precedencias en Project | 2.4h | 2019-03-06 09:00 | 2019-03-06 11:24 |  |  | Jose Ramon Barea Cecilia [40%] |
| 266 | [PM]Detallar plan de iteracion 12 Asignar recursos a las tareas en Project | 3.4h | 2019-03-06 09:00 | 2019-03-06 12:24 |  |  | Jose Ramon Barea Cecilia [40%] |
| 268 | [v2]Diseño e implementación b.objetos (final) | 6h | 2019-03-07 09:00 | 2019-03-07 17:00 |  | start no earlier than 2019-03-07 09:00 | Todos [4%] |
| 269 | [v2]Diseño e implementacion b.componentes (final) | 8h | 2019-03-07 09:00 | 2019-03-07 19:00 |  | start no earlier than 2019-03-07 09:00 | Todos [4%] |
| 270 | [v1]Mejoras y arreglos de la IA | 30h | 2019-03-08 09:00 | 2019-03-13 17:00 |  | start no earlier than 2019-03-08 09:00 | Débora Galdeano González [25%]; Marines Ánton Castelló [25%] |
| 271 | [v1]Sistema de control de movimiento con Steering Behaviours | 20h | 2019-03-14 09:00 | 2019-03-18 13:00 |  | start no earlier than 2019-03-14 09:00 | Débora Galdeano González [25%]; Marines Ánton Castelló [25%] |
| 272 | [v1]Comportamientos grupales o comunicación basica entre NPCs | 20h | 2019-03-19 09:00 | 2019-03-21 13:00 |  | start no earlier than 2019-03-19 09:00 | Débora Galdeano González [25%]; Marines Ánton Castelló [25%] |
| 273 | [v2]Level-Of-Detail en objetos y terrrenos 3D | 12h | 2019-03-07 09:00 | 2019-03-08 13:00 |  | start no earlier than 2019-03-07 09:00 | María Sánchez Marqués [10%]; Jose Vicente Anton Coy [10%] |
| 274 | [v2]Tarea para clipping u oclusiones | 16h | 2019-03-07 09:00 | 2019-03-08 19:00 |  | start no earlier than 2019-03-07 09:00 | Jose Vicente Anton Coy [10%]; David Ramón Sevilla [10%] |
| 275 | [v2]Tarea secundaria para menus, particulas o nubes | 12h | 2019-03-11 09:00 | 2019-03-12 13:00 |  | start no earlier than 2019-03-11 09:00 | Jose Vicente Anton Coy [10%]; David Ramón Sevilla [10%] |
| 276 | [pd]Making of juego | 12h | 2019-03-11 09:00 | 2019-03-12 13:00 |  | start no earlier than 2019-03-11 09:00 | Jose Ramon Barea Cecilia [20%] |
| 277 | [pd]Trailer juego | 12h | 2019-03-13 09:00 | 2019-03-14 13:00 | 276 | start no earlier than 2019-03-13 09:00 | Jose Ramon Barea Cecilia [20%] |
| 278 | [rv]Texturizado de los personajes | 10h | 2019-03-22 09:00 | 2019-03-25 11:00 |  | start no earlier than 2019-03-22 09:00 | Débora Galdeano González [10%]; Marines Ánton Castelló [10%]; María Sánchez Marqués [4%] |
| 279 | [rv]Rigging de los personajes | 24h | 2019-03-12 09:00 | 2019-03-14 19:00 |  | start no earlier than 2019-03-12 09:00 | Jose Vicente Anton Coy [20%] |
| 280 | [tds]Resto de la biblioteca (máx. 1/3), cuesheet y metadatos finales | 20h | 2019-03-18 09:00 | 2019-03-20 13:00 |  | start no earlier than 2019-03-18 09:00 | David Ramón Sevilla [10%]; Jose Ramon Barea Cecilia [10%]; María Sánchez Marqués [10%] |
| 281 | [tag]Estructura básica de la interfaz | 9h | 2019-03-06 09:00 | 2019-03-07 10:00 |  |  | Jose Vicente Anton Coy |
| 282 | [tag]Tarea shader básico (phong) y tarea shader Cartoon | 18h | 2019-03-06 09:00 | 2019-03-08 11:00 |  |  | David Ramón Sevilla [20%] |
| 283 | [tag]Integración con la aplicación | 26h | 2019-03-11 09:00 | 2019-03-14 11:00 |  | start no earlier than 2019-03-11 09:00 | David Ramón Sevilla [20%]; Jose Vicente Anton Coy [20%] |
| 284 | [tag]Realización de una fachada entre el motor y el videojuego | 9h | 2019-03-14 09:00 | 2019-03-15 10:00 |  | start no earlier than 2019-03-14 09:00 | David Ramón Sevilla [20%] |
| 285 | [tag]Bounding boxes | 10h | 2019-03-18 09:00 | 2019-03-19 11:00 |  | start no earlier than 2019-03-18 09:00 | David Ramón Sevilla [20%] |
| 286 | [tag]Portales | 23h | 2019-03-20 09:00 | 2019-03-22 18:00 |  | start no earlier than 2019-03-20 09:00 | David Ramón Sevilla [20%] |
| 287 | [PM]Preparación presentación del hito 3 | 24h | 2019-03-18 09:00 | 2019-03-20 19:00 |  | start no earlier than 2019-03-18 09:00 | Jose Ramon Barea Cecilia [40%]; María Sánchez Marqués [40%] |
| 288 | [PM]Comparar la planificación prevista y real en Iteracion 12 | 1.5h | 2019-03-25 09:00 | 2019-03-25 10:30 |  | start no earlier than 2019-03-25 09:00 | Jose Ramon Barea Cecilia [20%] |
| 289 | [PM]Confeccionar Informe de iteración 12 | 4h | 2019-03-25 10:30 | 2019-03-25 16:30 | 288 | start no earlier than 2019-03-24 09:00 | María Sánchez Marqués [20%] |

Removed: 265 <Tarea nueva>; 266 [PM]Detallar plan iteraciones del mes de Febrero-Marzo. Creación Subtareas y precedencias en Project; 267 [PM]Detallar plan iteraciones del mes de Febrero-Marzo Asignar recursos a las tareas en Project; 269 [PM]Comparar la planificación prevista y real en Project hito 3; 270 [PM]Confeccionar Informes de iteración e informe resumen de Hito 3; 271 [PM]Elaborar la presentación del Hito 3; 272 [PM]Exponer la presentación del Hito 3; 273 [TAG]Estructura básica del nodo (array de hijos, puntero a padre, puntero a entidad, funcionalidad básica -constructor, destructor, gets, sets, manejo de hijos….); 274 [TAG]Recorrido-dibujado del árbol; 275 [TAG]Estructura básica de la entidad (Constructor, destructor, funciones… todas virtuales, vacías); 276 [TAG]Matrices (model, view, projection) y pila estáticas y su manejo; 277 [TAG]Estructura básica de la transformación (Constructor, destructor, matriz transformación…); 278 [TAG]Operaciones de transformación (trasladar, rotar, escalar, identidad, trasponer, invertir, todas con GLM o GLMatrix); 279 [TAG]Dibujado (begindraw, enddraw, manejo pila y matriz model); 280 [TAG]Estructura básica de la cámara (Constructor, destructor, matriz proyección); 281 [TAG]Rellenar matriz perspectiva (con GLM o GLMatrix); 282 [TAG]Estructura básica de la luz (Constructor, destructor); 283 [TAG]Datos y funciones luz puntual; 284 [TAG]Estructura básica de la malla (Constructor, destructor); 285 [TAG]Datos de mallas, texturas, materiales… (llamadas al gestor de recursos); 286 [TAG]Dibujado de mallas (begindraw, enddraw, matriz model…); 287 [TAG]Estructura básica del gestor de recursos (constructor, destructor, vectores de recursos); 288 [TAG]Obtener recurso (gestión adecuada de memoria); 289 [TAG]Estructura básica del recurso (constructor, destructor. Es virtual, vacío); 290 [TAG]Estructura básica de la malla (constructor, destructor); 291 [TAG]Lectura de disco (con assimp); 292 [TAG]Creación de buffers de vértices, normales, índices… y relleno; 293 [TAG]Dibujado de las mallas (draw, con paso de los buffers a OpenGL o WebGL); 294 [TAG]Estructura básica del material (constructor, destructor); 295 [TAG]Leer material de disco (con librería o con parser propio) y rellenar valores; 296 [TAG]Dibujado de los materiales (preparar los materiales y cargarlos en OpenGL o WebGL); 297 [TAG]Estructura básica del shader (constructor, destructor); 298 [TAG]Lectura de shaders de disco (con parser propio) y guardarlo; 299 [TAG]Estructura básica de la interfaz (constructor, destructor, inicialización motor y openGL); 300 [TAG]Funciones para crear cámaras y gestionarlas (manejo de las cámaras, registro, cálculo de la matriz view); 301 [TAG]Funciones para crear luces y gestionarlas (manejo de las luces registro, cálculo de la matriz light); 302 [TAG]Funciones para crear transformaciones (creación de varios nodos con las transformaciones, manejo de las transformaciones); 303 [TAG]Funciones para crear mallas y animaciones; 304 [TAG]Funciones para crear shaders y gestionarlos; 305 [TAG]Shader básico (Sombreado de Phong, reflexión de Phong) con materiales; 306 [TAG]Integración con la aplicación; 307 [TAG]Realización de una fachada entre el motor y la aplicación o videojuego; 308 [TAG]Librería matemática (GLM o GLMatrix); 309 [TAG][Solo CED] Librería de lectura de mallas (assimp…); 310 [TAG][Solo CED] Librería de ventanas, entrada/salida... (GLFW…); 311 [V1]Flocking: comportamiento grupal emergente; 312 [V1]Editor in-game de parámetros y comportamientos de la IA; 313 [V1]Sistema de logros y puntuaciones web; 314 [V2]Implementación de cesped y vegetación; 315 [V2]Implementación de nubes; 316 [V2]Implementación de sistemas de partículas; 317 [TDS]Resto de la biblioteca (máx. 1/3), cuesheet y metadatos finales; 318 <Tarea nueva>; 327 [PM]Detallar plan iteraciones del mes de Abril-Mayo. Creación Subtareas y precedencias en Project; 328 [PM]Detallar plan iteraciones del mes de Abril-Mayo. Asignar recursos a las tareas en Project; 329 [PM]Registrar tiempos y % de realización de tareas en Project; 330 [PM]Comparar la planificación prevista y real en Project hito 4; 331 [PM]Confeccionar Informes de iteración e informe resumen de Hito 4; 332 [PM]Elaborar la presentación del Hito 4; 333 [PM]Exponer la presentación del Hito 4; 334 [TAG]Estructura básica de la animación (Constructor, destructor); 335 [TAG]Datos de animaciones, mallas, texturas, materiales (multiples, con llamadas al gestor de recursos); 336 [TAG]Dibujado de texturas (preparar las texturas y cargarlas en OpenGL o WebGL); 337 [TAG]Shader básico (Sombreado de Phong, reflexión de Phong) con materiales y texturas; 338 [TAG]Shader Cartoon; 339 [TAG]Bounding boxes (incluye retocar nodos, entidades y recursos malla); 340 [TAG]Backface culling; 341 [TAG]Frustum culling; 342 [TAG]Sombras proyectadas; 343 [TAG]Sistema de partículas (sólo la incorporación en el motor); 344 [PD]Créditos; 345 [PD]Vídeo final juego / explicación parte del proyecto; 346 [TDS]Integración de sonido y música en el juego; 347 [TDS]Post producción (mezcla y masterización in-game); 348 [TDS]Sonido generado proceduralmente in-game; 349 [RV]Rigging de los personajes; 350 [RV]Captura de movimiento; 351 [RV]Animación de los personajes; 352 [RV]Texturizado del entorno y elementos

Changed:

| ID | Task | Start | Finish | Duration | Complete | Total float | Other |
| --- | --- | --- | --- | --- | --- | --- | --- |
| 194 | **Hito 3** | 2019-01-24 09:00 A → 2019-01-25 09:00 A (+1d) | 2019-03-07 15:30 → 2019-03-25 16:30 (+18d) | 31.56d? → 42.69d | 44% → 47% | 13.44d → 1.31d | baseline start 2019-01-24 09:00 → 2019-01-25 09:00; baseline finish 2019-03-06 19:00 → 2019-03-25 16:30 |
| 235 | **Iteracion 11** |  |  |  |  |  | baseline finish 2019-03-06 13:00 → 2019-03-07 15:30 |
| 236 | [PM]Detallar plan de iteracion 11. Creación Subtareas y precedencias en Project |  |  |  |  |  | baseline finish 2019-02-21 11:24 → 2019-02-21 11:36 |
| 239 | [v2]Diseño e implementación b.objetos (final) |  |  |  |  |  | baseline finish 2019-02-21 18:00 → 2019-02-21 12:36 |
| 240 | [v2]Diseño e implementacion b.componentes (final) |  |  |  |  |  | baseline finish 2019-02-22 11:00 → 2019-02-21 17:00 |
| 242 | [v1]Arreglos de ia y clases de personajes |  |  |  |  |  | baseline finish 2019-03-01 16:00 → 2019-03-01 15:30 |
| 243 | [v1]Arreglar Comunicación entre NPCs Blackboard |  |  |  |  |  | baseline finish 2019-02-26 13:00 → 2019-02-25 09:00 |
| 244 | [v1]Movimiento con steering behaviours |  |  |  |  |  | baseline finish 2019-02-28 19:00 → 2019-03-04 10:00 |
| 245 | [v1]Waypoints para pathfinding continuo |  |  |  |  |  | baseline finish 2019-03-06 13:00 → 2019-03-05 09:30 |
| 246 | [v2]Diseño y creación de nivel |  |  |  |  |  | baseline finish 2019-03-06 11:00 → 2019-03-07 15:30 |
| 247 | [v2]Errores de codigo relacionados con nivel |  |  |  |  |  | baseline finish 2019-02-22 13:00 → 2019-02-22 11:18 |
| 248 | [v2]Implementacion de un sistema multicamaras |  |  |  |  |  | baseline finish 2019-02-27 11:00 → 2019-02-25 09:00 |
| 249 | [tds]Resto de la biblioteca (máx. 1/3), cuesheet y metadatos finales |  |  |  |  |  | baseline finish 2019-03-01 17:00 → 2019-03-01 09:00 |
| 250 | [rv]Modelado de los personajes |  |  |  |  |  | baseline finish 2019-02-26 12:00 → 2019-02-24 12:00 |
| 251 | [rv]Texturizado de los personajes + uvmaping |  |  |  |  |  | baseline finish 2019-02-21 11:00 → 2019-02-22 11:00 |
| 252 | [rv]Rigging Personajes |  |  |  |  |  | baseline finish 2019-02-27 10:00 → 2019-02-26 15:15 |
| 253 | [tag]Operaciones de transformación: trasladar, rotar... |  |  |  |  |  | baseline finish 2019-02-20 18:00 → 2019-02-20 16:00 |
| 254 | [tag]Iluminacion luz puntual y luz dirigida |  |  |  |  |  | baseline finish 2019-02-26 18:00 → 2019-02-26 16:00 |
| 255 | [tag]Reflexion de phong |  |  |  |  |  | baseline finish 2019-03-05 13:00 → 2019-03-04 16:00 |
| 256 | [tag]Estructura básica de la malla |  |  |  |  |  | baseline finish 2019-02-25 17:00 → 2019-02-25 16:54 |
| 257 | [tag]Datos de mallas, texturas... |  |  |  |  |  | baseline finish 2019-02-28 18:00 → 2019-02-28 18:30 |
| 258 | [tag]Dibujado de mallas |  |  |  |  |  | baseline finish 2019-02-27 19:00 → 2019-02-27 16:54 |
| 259 | [tag]Estructura básica de la animación... |  |  |  |  |  | baseline finish 2019-02-22 18:00 → 2019-02-22 13:00 |
| 261 | [tag]Lectura de disco con assimp |  |  |  |  |  | baseline finish 2019-02-28 10:00 → 2019-02-27 13:00 |
| 263 | [PM]Confeccionar Informe de iteración 11 |  |  |  |  |  | baseline finish 2019-03-06 13:00 → 2019-03-06 12:30 |
| 264 | **Iteracion 12** |  | 2019-03-06 19:00 → 2019-03-25 16:30 (+19d) | 1d? → 13.69d |  | 14d → 1.31d | baseline finish 2019-03-06 19:00 → 2019-03-25 16:30 |
| 267 | [PM]Registrar tiempos y % de realización de tareas en Project | 2019-01-24 09:00 → 2019-03-06 09:00 (+41d) | 2019-01-24 19:00 → 2019-03-06 09:48 (+41d) | 1d? → 48min |  | 43d → 14.9d | constraint start no earlier than 2019-01-24 09:00 → none; resources none → Todos [4%]; baseline start 2019-01-24 09:00 → 2019-03-06 09:00; baseline finish 2019-01-24 19:00 → 2019-03-06 09:48 |
| 290 | Versión Producción - Lista para pulir | 2019-03-07 15:30 → 2019-03-25 16:30 (+18d) | 2019-03-07 15:30 → 2019-03-25 16:30 (+18d) |  |  | 42.44d → 30.31d | baseline start 2019-03-06 19:00 → 2019-03-25 16:30; baseline finish 2019-03-06 19:00 → 2019-03-25 16:30 |

## Version 26 (data date 2019-03-24, saved 2019-03-24)

Note of the change: Update ABP Planificacion.mpp

Last finish stays 2019-05-06. Complete tasks 180 → 199.

Changed:

| ID | Task | Start | Finish | Duration | Complete | Total float | Other |
| --- | --- | --- | --- | --- | --- | --- | --- |
| 194 | **Hito 3** |  | 2019-03-25 16:30 → 2019-03-28 12:00 (+3d) | 42.69d → 45.38d | 47% → 75% | 1.31d → 27.62d | constraint finish no later than 2019-03-26 19:00 → none |
| 264 | **Iteracion 12** | 2019-03-06 09:00 A | 2019-03-25 16:30 → 2019-03-28 12:00 (+3d) | 13.69d → 16.38d | 0% → 94% | 1.31d → 27.62d |  |
| 265 | [PM]Detallar plan de iteracion 12. Creación Subtareas y precedencias en Project | 2019-03-06 09:00 A | 2019-03-06 11:24 → 2019-03-06 11:00 A | 2.4h → 2h | 0% → 100% | 14.7d → none |  |
| 266 | [PM]Detallar plan de iteracion 12 Asignar recursos a las tareas en Project | 2019-03-06 09:00 A | 2019-03-06 12:24 → 2019-03-06 10:00 A | 3.4h → 1h | 0% → 100% | 14.57d → none |  |
| 267 | [PM]Registrar tiempos y % de realización de tareas en Project | 2019-03-06 09:00 A | 2019-03-06 09:48 A |  | 0% → 100% | 14.9d → none |  |
| 268 | [v2]Diseño e implementación b.objetos (final) | 2019-03-07 09:00 A | 2019-03-07 17:00 → 2019-03-08 12:00 A (+1d) | 6h → 11h | 0% → 100% | 13.25d → none |  |
| 269 | [v2]Diseño e implementacion b.componentes (final) | 2019-03-07 09:00 A | 2019-03-07 19:00 → 2019-03-08 12:00 A (+1d) | 8h → 11h | 0% → 100% | 13d → none |  |
| 270 | [v1]Mejoras y arreglos de la IA | 2019-03-08 09:00 A | 2019-03-13 17:00 → 2019-03-15 13:00 A (+2d) | 30h → 44h | 0% → 100% | 9.25d → none |  |
| 271 | [v1]Sistema de control de movimiento con Steering Behaviours | 2019-03-14 09:00 A | 2019-03-18 13:00 → 2019-03-19 18:00 A (+1d) | 20h → 31h | 0% → 100% | 6.5d → none |  |
| 272 | [v1]Comportamientos grupales o comunicación basica entre NPCs | 2019-03-19 09:00 A | 2019-03-21 13:00 → 2019-03-21 12:30 | 20h → 19.5h | 0% → 75% | 3.5d → 32.56d |  |
| 273 | [v2]Level-Of-Detail en objetos y terrrenos 3D |  | 2019-03-08 13:00 → 2019-03-07 09:06 (-1d) | 12h → 0.1h |  | 12.5d → 42.99d |  |
| 274 | [v2]Tarea para clipping, motor grafico | 2019-03-07 09:00 A | 2019-03-08 19:00 → 2019-03-13 16:00 (+5d) | 16h → 37h | 0% → 75% | 12d → 38.38d | was named [v2]Tarea para clipping u oclusiones |
| 275 | [v2]Tarea secundaria de la asignatura | 2019-03-11 09:00 A | 2019-03-12 13:00 → 2019-03-13 13:00 A (+1d) | 12h → 20h | 0% → 100% | 10.5d → none | was named [v2]Tarea secundaria para menus, particulas o nubes; resources Jose Vicente Anton Coy [10%]; David Ramón Sevilla [10%] → María Sánchez Marqués [40%]; Jose Vicente Anton Coy [20%] |
| 276 | [pd]Making of juego | 2019-03-11 09:00 A | 2019-03-12 13:00 → 2019-03-13 18:00 A (+1d) | 12h → 23h | 0% → 100% | 9d → none |  |
| 277 | [pd]Trailer juego | 2019-03-13 09:00 → 2019-03-13 18:00 A | 2019-03-14 13:00 → 2019-03-20 10:00 A (+6d) | 12h → 34h | 0% → 100% | 8.5d → none |  |
| 278 | [rv]Texturizado de los personajes | 2019-03-22 09:00 A | 2019-03-25 11:00 → 2019-03-28 12:00 A (+3d) | 10h → 35h | 0% → 100% | 1.75d → none |  |
| 279 | [rv]Rigging de los personajes |  | 2019-03-14 19:00 → 2019-03-12 09:06 (-2d) | 24h → 0.1h |  | 8d → 39.99d |  |
| 280 | [tds]Resto de la biblioteca (máx. 1/3), cuesheet y metadatos finales | 2019-03-18 09:00 A | 2019-03-20 13:00 → 2019-03-19 15:30 A (-1d) | 20h → 12.5h | 0% → 100% | 4.5d → none |  |
| 281 | [tag]Estructura básica de la interfaz | 2019-03-06 09:00 A | 2019-03-07 10:00 → 2019-03-06 17:00 A (-1d) | 9h → 6h | 0% → 100% | 13.88d → none |  |
| 282 | [tag]Tarea shader básico (phong) y hud | 2019-03-06 09:00 A | 2019-03-08 11:00 → 2019-03-11 13:00 A (+3d) | 18h → 28h | 0% → 100% | 12.75d → none | was named [tag]Tarea shader básico (phong) y tarea shader Cartoon |
| 283 | [tag]Integración con la aplicación | 2019-03-11 09:00 A | 2019-03-14 11:00 → 2019-03-18 10:00 (+4d) | 26h → 41h | 0% → 75% | 8.75d → 35.88d |  |
| 284 | [tag]Realización de una fachada entre el motor y el videojuego | 2019-03-14 09:00 A | 2019-03-15 10:00 → 2019-03-14 12:24 A (-1d) | 9h → 3.4h | 0% → 100% | 7.88d → none |  |
| 285 | [tag]Bounding boxes y animaciones | 2019-03-18 09:00 A | 2019-03-19 11:00 → 2019-03-20 17:00 A (+1d) | 10h → 22h | 0% → 100% | 5.75d → none | was named [tag]Bounding boxes |
| 286 | [tag]Portales |  | 2019-03-22 18:00 → 2019-03-20 09:06 (-2d) | 23h → 0.1h |  | 2.12d → 33.99d |  |
| 287 | [PM]Preparación presentación del hito 3 | 2019-03-18 09:00 A | 2019-03-20 19:00 → 2019-03-22 12:00 A (+2d) | 24h → 35h | 0% → 100% | 4d → none |  |
| 288 | [PM]Comparar la planificación prevista y real en Iteracion 12 | 2019-03-25 09:00 A | 2019-03-25 10:30 → 2019-03-25 11:12 A | 1.5h → 2.2h | 0% → 100% | 1.31d → none |  |
| 289 | [PM]Confeccionar Informe de iteración 12 | 2019-03-25 10:30 → 2019-03-25 11:12 A | 2019-03-25 16:30 → 2019-03-25 16:12 A | 4h → 3h | 0% → 100% | 1.31d → none |  |
| 290 | Versión Producción - Lista para pulir | 2019-03-25 16:30 → 2019-03-28 12:00 (+3d) | 2019-03-25 16:30 → 2019-03-28 12:00 (+3d) |  |  | 30.31d → 27.62d |  |

## Version 27 (data date 2019-03-24, saved 2019-03-25)

Note of the change: Actualizaciones de proyectos multimedia

Last finish stays 2019-05-06.

Added:

| ID | Task | Duration | Start | Finish | Predecessors | Constraint | Resources |
| --- | --- | --- | --- | --- | --- | --- | --- |
| 293 | [PM]Detallar plan de iteracion 13. Creación Subtareas y precedencias en Project | 2.4h | 2019-03-27 09:00 | 2019-03-27 11:24 |  |  | Débora Galdeano González [40%] |
| 294 | [PM]Detallar plan de iteracion 13 Asignar recursos a las tareas en Project | 3.4h | 2019-03-27 09:00 | 2019-03-27 12:24 |  |  | Débora Galdeano González [40%] |
| 295 | [PM]Registrar tiempos y % de realización de tareas en Project | 0.8h | 2019-03-27 09:00 | 2019-03-27 09:48 |  |  | Todos [4%] |
| 296 | [v2]Diseño e implementación b.objetos (final) | 4h | 2019-03-27 09:00 | 2019-03-27 13:00 |  |  | Todos [10%] |
| 297 | [v2]Diseño e implementacion b.componentes (final) | 16h | 2019-03-27 09:00 | 2019-03-28 19:00 |  |  | Todos [10%] |
| 298 | [v1]Comportamientos grupales o comunicación basica entre NPCs | 20h | 2019-04-15 09:00 | 2019-04-17 13:00 |  | start no earlier than 2019-04-15 09:00 | Débora Galdeano González [40%]; Marines Ánton Castelló [40%] |
| 299 | [v1]Level-Of-Detail para la IA | 20h | 2019-04-08 09:00 | 2019-04-10 13:00 |  | start no earlier than 2019-04-08 09:00 | Débora Galdeano González [40%] |
| 300 | [v1]Integracion de comportamientos en el juego | 30h | 2019-04-01 09:00 | 2019-04-04 17:00 |  | start no earlier than 2019-04-01 09:00 | Débora Galdeano González [40%]; Marines Ánton Castelló [40%] |
| 301 | [v2]Agregar nivel 2 | 14h | 2019-04-08 09:00 | 2019-04-09 17:00 |  | start no earlier than 2019-04-08 09:00 | Jose Ramon Barea Cecilia [40%] |
| 302 | [v2]menu de selección de personaje y otros menus | 10h | 2019-04-01 09:00 | 2019-04-02 11:00 |  | start no earlier than 2019-04-01 09:00 | Marines Ánton Castelló [40%] |
| 303 | [v2]Tarea secundaria para integracion funcionalidades opengl en el juego | 16h | 2019-04-10 15:00 | 2019-04-12 13:00 | 299 | start no earlier than 2019-04-10 09:00 | David Ramón Sevilla [40%]; Jose Vicente Anton Coy [40%] |
| 304 | [v2]Tarea secundaria para arreglos y mejoras | 20h | 2019-04-15 09:00 | 2019-04-17 13:00 |  | start no earlier than 2019-04-15 09:00 | Débora Galdeano González [40%] |
| 305 | [tds]Arreglos en tablas cuesheet y metadatos | 4h | 2019-04-01 09:00 | 2019-04-01 13:00 |  | start no earlier than 2019-04-01 09:00 | Jose Ramon Barea Cecilia [40%] |
| 306 | [tds]Integracion de sonidos en el videojuego | 12h | 2019-04-08 09:00 | 2019-04-09 13:00 |  | start no earlier than 2019-04-08 09:00 | David Ramón Sevilla [40%] |
| 307 | [rv]Texturizar Objetos | 10h | 2019-04-01 09:00 | 2019-04-02 11:00 |  | start no earlier than 2019-04-01 09:00 | Débora Galdeano González [10%] |
| 308 | [rv]Texturizar personajes | 18h | 2019-04-03 09:00 | 2019-04-05 11:00 |  | start no earlier than 2019-04-03 09:00 | Marines Ánton Castelló [10%] |
| 309 | [rv]Modelar nivel 2 | 14h | 2019-04-03 09:00 | 2019-04-04 17:00 |  | start no earlier than 2019-04-03 09:00 | Jose Ramon Barea Cecilia [40%] |
| 310 | [rv]modelar objetos y armas | 3h | 2019-04-04 09:00 | 2019-04-04 12:00 |  | start no earlier than 2019-04-04 09:00 | María Sánchez Marqués [40%] |
| 311 | [rv]modelar rey pollo | 14h | 2019-04-01 09:00 | 2019-04-02 17:00 |  | start no earlier than 2019-04-01 09:00 | María Sánchez Marqués [20%] |
| 312 | [rv]rigging de personajes | 3h | 2019-04-03 09:00 | 2019-04-03 12:00 |  | start no earlier than 2019-04-03 09:00 | Jose Vicente Anton Coy [10%] |
| 313 | [rv]captura de movimiento | 10h | 2019-04-08 09:00 | 2019-04-09 11:00 |  | start no earlier than 2019-04-08 09:00 | Todos [20%] |
| 314 | [pd]Video escena final del juego | 20h | 2019-04-10 09:00 | 2019-04-12 13:00 |  | start no earlier than 2019-04-10 09:00 | María Sánchez Marqués [20%] |
| 315 | [tag]Optimizacion del codigo del motor | 14h | 2019-04-01 09:00 | 2019-04-02 17:00 |  | start no earlier than 2019-04-01 09:00 | Jose Vicente Anton Coy [40%] |
| 316 | [tag]bounding boxes y animaciones | 20h | 2019-04-08 09:00 | 2019-04-10 13:00 |  | start no earlier than 2019-04-08 09:00 | David Ramón Sevilla [20%] |
| 317 | [tag]Otros shaders | 12h | 2019-04-02 09:00 | 2019-04-03 13:00 |  | start no earlier than 2019-04-02 09:00 | David Ramón Sevilla [40%] |
| 318 | [tag]Portales | 9h | 2019-04-08 09:00 | 2019-04-09 10:00 |  | start no earlier than 2019-04-08 09:00 | Jose Vicente Anton Coy [10%]; David Ramón Sevilla [10%] |
| 319 | [tag]Shadow Mapping | 14h | 2019-04-01 09:00 | 2019-04-02 17:00 |  | start no earlier than 2019-04-01 09:00 | David Ramón Sevilla [20%] |
| 320 | [tag]Tarea secundaria para entregable arbitrario | 15h | 2019-04-10 09:00 | 2019-04-11 18:00 |  | start no earlier than 2019-04-10 09:00 | Jose Vicente Anton Coy [10%]; David Ramón Sevilla [10%] |
| 321 | [PM]Comparar la planificación prevista y real en Iteracion 13 | 3h | 2019-04-17 09:00 | 2019-04-17 12:00 |  | start no earlier than 2019-04-17 09:00 | Débora Galdeano González [10%] |
| 322 | [PM]Confeccionar Informe de iteración 13 | 4h | 2019-04-17 09:00 | 2019-04-17 13:00 |  | start no earlier than 2019-04-17 09:00 | Marines Ánton Castelló [10%]; Débora Galdeano González [10%] |

Removed: 293 <Tarea nueva>

Changed:

| ID | Task | Finish | Duration | Total float | Other |
| --- | --- | --- | --- | --- | --- |
| 194 | **Hito 3** |  |  |  | baseline finish 2019-03-25 16:30 → 2019-03-28 12:00 |
| 264 | **Iteracion 12** |  |  |  | baseline finish 2019-03-25 16:30 → 2019-03-28 12:00 |
| 265 | [PM]Detallar plan de iteracion 12. Creación Subtareas y precedencias en Project |  |  |  | baseline finish 2019-03-06 11:24 → 2019-03-06 11:00 |
| 266 | [PM]Detallar plan de iteracion 12 Asignar recursos a las tareas en Project |  |  |  | baseline finish 2019-03-06 12:24 → 2019-03-06 10:00 |
| 268 | [v2]Diseño e implementación b.objetos (final) |  |  |  | baseline finish 2019-03-07 17:00 → 2019-03-08 12:00 |
| 269 | [v2]Diseño e implementacion b.componentes (final) |  |  |  | baseline finish 2019-03-07 19:00 → 2019-03-08 12:00 |
| 270 | [v1]Mejoras y arreglos de la IA |  |  |  | baseline finish 2019-03-13 17:00 → 2019-03-15 13:00 |
| 271 | [v1]Sistema de control de movimiento con Steering Behaviours |  |  |  | baseline finish 2019-03-18 13:00 → 2019-03-19 18:00 |
| 272 | [v1]Comportamientos grupales o comunicación basica entre NPCs |  |  |  | baseline finish 2019-03-21 13:00 → 2019-03-21 12:30 |
| 273 | [v2]Level-Of-Detail en objetos y terrrenos 3D |  |  |  | baseline finish 2019-03-08 13:00 → 2019-03-07 09:06 |
| 274 | [v2]Tarea para clipping, motor grafico |  |  |  | baseline finish 2019-03-08 19:00 → 2019-03-13 16:00 |
| 275 | [v2]Tarea secundaria de la asignatura |  |  |  | baseline finish 2019-03-12 13:00 → 2019-03-13 13:00 |
| 276 | [pd]Making of juego |  |  |  | baseline finish 2019-03-12 13:00 → 2019-03-13 18:00 |
| 277 | [pd]Trailer juego |  |  |  | baseline start 2019-03-13 09:00 → 2019-03-13 18:00; baseline finish 2019-03-14 13:00 → 2019-03-20 10:00 |
| 278 | [rv]Texturizado de los personajes |  |  |  | baseline finish 2019-03-25 11:00 → 2019-03-28 12:00 |
| 279 | [rv]Rigging de los personajes |  |  |  | baseline finish 2019-03-14 19:00 → 2019-03-12 09:06 |
| 280 | [tds]Resto de la biblioteca (máx. 1/3), cuesheet y metadatos finales |  |  |  | baseline finish 2019-03-20 13:00 → 2019-03-19 15:30 |
| 281 | [tag]Estructura básica de la interfaz |  |  |  | baseline finish 2019-03-07 10:00 → 2019-03-06 17:00 |
| 282 | [tag]Tarea shader básico (phong) y hud |  |  |  | baseline finish 2019-03-08 11:00 → 2019-03-11 13:00 |
| 283 | [tag]Integración con la aplicación |  |  |  | baseline finish 2019-03-14 11:00 → 2019-03-18 10:00 |
| 284 | [tag]Realización de una fachada entre el motor y el videojuego |  |  |  | baseline finish 2019-03-15 10:00 → 2019-03-14 12:24 |
| 285 | [tag]Bounding boxes y animaciones |  |  |  | baseline finish 2019-03-19 11:00 → 2019-03-20 17:00 |
| 286 | [tag]Portales |  |  |  | baseline finish 2019-03-22 18:00 → 2019-03-20 09:06 |
| 287 | [PM]Preparación presentación del hito 3 |  |  |  | baseline finish 2019-03-20 19:00 → 2019-03-22 12:00 |
| 288 | [PM]Comparar la planificación prevista y real en Iteracion 12 |  |  |  | baseline finish 2019-03-25 10:30 → 2019-03-25 11:12 |
| 289 | [PM]Confeccionar Informe de iteración 12 |  |  |  | baseline start 2019-03-25 10:30 → 2019-03-25 11:12; baseline finish 2019-03-25 16:30 → 2019-03-25 16:12 |
| 290 | Versión Producción - Lista para pulir |  |  |  | baseline start 2019-03-25 16:30 → 2019-03-28 12:00; baseline finish 2019-03-25 16:30 → 2019-03-28 12:00 |
| 292 | **Iteracion 13** | 2019-03-27 19:00 → 2019-04-17 13:00 (+21d) | 1d? → 15.5d | 28d → 13.5d | baseline finish 2019-03-27 19:00 → 2019-04-17 13:00 |

## Version 28 (data date 2019-05-24, saved 2019-05-24)

Note of the change: seguimiento iteracion 14 y documentos toggl

Last finish 2019-05-06 → 2019-05-23 (+17d). Complete tasks 199 → 216.

Added:

| ID | Task | Duration | Start | Finish | Constraint | Resources |
| --- | --- | --- | --- | --- | --- | --- |
| 305 | [v2]Implementación de un sistema multicámaras | 0.75h | 2019-03-27 09:00 A | 2019-03-27 09:45 A |  | Marines Ánton Castelló [10%] |
| 323 | [General] Scrum | 18h | 2019-03-27 09:00 A | 2019-03-29 11:00 A |  | Todos [10%] |
| 326 | [PM]Detallar plan de iteración Abril-Mayo. Creación Subtareas y precedencias en Project | 4h | 2019-05-06 09:00 | 2019-05-06 13:00 |  | Débora Galdeano González [40%] |
| 327 | [PM]Detallar plan de iteración Abril-Mayo. Asignar recursos a las tareas en Project | 3h | 2019-05-06 09:00 | 2019-05-06 12:00 |  | Débora Galdeano González [40%] |
| 328 | [PM]Registrar tiempos y % de realización de tareas en Project | 0.8h | 2019-05-06 09:00 | 2019-05-06 09:48 |  | Todos [4%] |
| 329 | [v2]Diseño e implementación b.objetos (final) | 10h | 2019-05-06 09:00 | 2019-05-07 11:00 |  | Todos [10%] |
| 330 | [v2]Diseño e implementacion b.componentes (final) | 21h | 2019-05-06 09:00 | 2019-05-08 16:00 |  | Todos [10%] |
| 331 | [v1v2]Reiniciar partida, arboles, LOD | 16.5h | 2019-05-08 09:00 | 2019-05-10 09:30 | start no earlier than 2019-05-08 09:00 | Débora Galdeano González [40%]; Marines Ánton Castelló [40%] |
| 332 | [v1]Integracion de comportamientos en el juego | 53.5h | 2019-05-08 09:00 | 2019-05-16 16:30 | start no earlier than 2019-05-08 09:00 | Débora Galdeano González [40%]; Marines Ánton Castelló [40%] |
| 333 | [v2]Agregar nivel 2 | 11h | 2019-05-08 09:00 | 2019-05-09 12:00 | start no earlier than 2019-05-08 09:00 | María Sánchez Marqués [40%] |
| 334 | [v2]Tarea secundaria para integracion funcionalidades opengl en el juego | 16h | 2019-05-08 09:00 | 2019-05-09 19:00 | start no earlier than 2019-05-08 09:00 | David Ramón Sevilla [40%]; Jose Vicente Anton Coy [40%] |
| 335 | [v2]Tarea secundaria para arreglos y mejoras | 68.5h | 2019-05-13 09:00 | 2019-05-23 15:30 | start no earlier than 2019-05-13 09:00 | Todos [10%] |
| 336 | [tds]Arreglos en tablas cuesheet y metadatos | 1h | 2019-05-10 09:00 | 2019-05-10 10:00 | start no earlier than 2019-05-10 09:00 | Jose Ramon Barea Cecilia [10%] |
| 337 | [tds]Integracion de sonidos en el videojuego | 76.5h | 2019-05-10 09:00 | 2019-05-23 15:30 | start no earlier than 2019-05-10 09:00 | David Ramón Sevilla [10%]; Jose Ramon Barea Cecilia [10%]; María Sánchez Marqués [10%] |
| 338 | [rv]Texturizar Objetos | 55.5h | 2019-05-14 09:00 | 2019-05-22 18:30 | start no earlier than 2019-05-14 09:00 | Marines Ánton Castelló [10%]; Débora Galdeano González [10%]; David Ramón Sevilla [10%] |
| 339 | [rv]Texturizar personajes | 30.75h | 2019-05-14 09:00 | 2019-05-17 17:45 | start no earlier than 2019-05-14 09:00 | Marines Ánton Castelló [10%]; Débora Galdeano González [10%]; David Ramón Sevilla [10%] |
| 340 | [rv]modelar objetos y armas | 27.85h | 2019-05-13 09:00 | 2019-05-16 12:51 | start no earlier than 2019-05-13 09:00 | María Sánchez Marqués [40%]; David Ramón Sevilla [10%] |
| 341 | [rv]rigging de personajes | 39h | 2019-05-16 09:00 | 2019-05-22 18:00 | start no earlier than 2019-05-16 09:00 | Jose Vicente Anton Coy [10%] |
| 342 | [rv]captura de movimiento | 6.15h | 2019-05-20 09:00 | 2019-05-20 17:09 | start no earlier than 2019-05-20 09:00 | Todos [10%] |
| 343 | [rv]arreglos y mejoras | 14h | 2019-05-21 09:00 | 2019-05-22 17:00 | start no earlier than 2019-05-21 09:00 | Todos [10%] |
| 344 | [pd]creditos | 0.01h | 2019-05-16 09:00 | 2019-05-16 09:00 | start no earlier than 2019-05-16 09:00 | Jose Ramon Barea Cecilia [10%] |
| 345 | [pd]Video escena final del juego | 34.8h | 2019-05-17 09:00 | 2019-05-23 11:48 | start no earlier than 2019-05-17 09:00 | Jose Ramon Barea Cecilia [10%] |
| 346 | [tag]Optimizacion del codigo del motor | 3h | 2019-05-20 09:00 | 2019-05-20 12:00 | start no earlier than 2019-05-20 09:00 | Jose Vicente Anton Coy [40%] |
| 347 | [tag]Portales | 0.01h | 2019-05-20 09:00 | 2019-05-20 09:00 | start no earlier than 2019-05-20 09:00 | Jose Vicente Anton Coy [10%]; David Ramón Sevilla [10%] |
| 348 | [tag]Shadow Mapping | 26.5h | 2019-05-15 09:00 | 2019-05-20 11:30 | start no earlier than 2019-05-15 09:00 | David Ramón Sevilla [20%] |
| 349 | [tag]Tarea secundaria para entregable arbitrario | 51h | 2019-05-14 09:00 | 2019-05-22 12:00 | start no earlier than 2019-05-14 09:00 | Jose Vicente Anton Coy [10%]; David Ramón Sevilla [10%] |
| 350 | [General] Scrum | 14h | 2019-05-06 09:00 | 2019-05-07 17:00 |  | Todos [10%] |
| 351 | [PM]Comparar la planificación prevista y real en Hito 4 | 2h | 2019-05-21 09:00 | 2019-05-21 11:00 | start no earlier than 2019-05-21 09:00 | Débora Galdeano González [10%] |
| 352 | [PM]Confeccionar Informes de iteración e informe resumen de Hito 4 | 1h | 2019-05-21 09:00 | 2019-05-21 10:00 | start no earlier than 2019-05-21 09:00 | Marines Ánton Castelló [10%]; Débora Galdeano González [10%] |
| 353 | Elaborar la presentación del Hito 4 | 4h | 2019-05-06 09:00 | 2019-05-06 13:00 |  | Marines Ánton Castelló [10%]; Débora Galdeano González [10%] |

Removed: 316 [tag]bounding boxes y animaciones; 324 <Tarea nueva>; 326 <Tarea nueva>

Changed:

| ID | Task | Start | Finish | Duration | Complete | Total float | Other |
| --- | --- | --- | --- | --- | --- | --- | --- |
| 291 | **hito 4** | 2019-03-27 09:00 A | 2019-05-06 19:00 → 2019-05-23 15:30 (+17d) | 29d? → 41.56d | 0% → 40% |  | baseline finish 2019-05-06 19:00 → 2019-05-22 13:00 |
| 292 | **Iteracion 13** | 2019-03-27 09:00 A | 2019-04-17 13:00 → 2019-04-22 09:01 (+5d) | 15.5d → 18d | 0% → 94% | 13.5d → 23.56d | baseline finish 2019-04-17 13:00 → 2019-04-22 09:01 |
| 293 | [PM]Detallar plan de iteracion 13. Creación Subtareas y precedencias en Project | 2019-03-27 09:00 A | 2019-03-27 11:24 A |  | 0% → 100% | 28.7d → none |  |
| 294 | [PM]Detallar plan de iteracion 13 Asignar recursos a las tareas en Project | 2019-03-27 09:00 A | 2019-03-27 12:24 A |  | 0% → 100% | 28.57d → none |  |
| 295 | [PM]Registrar tiempos y % de realización de tareas en Project | 2019-03-27 09:00 A | 2019-03-27 09:48 A |  | 0% → 100% | 28.9d → none |  |
| 296 | [v2]Diseño e implementación b.objetos (final) | 2019-03-27 09:00 A | 2019-03-27 13:00 → 2019-04-03 15:22 A (+7d) | 4h → 44.38h | 0% → 100% | 28.5d → none | baseline finish 2019-03-27 13:00 → 2019-04-03 15:22 |
| 297 | [v2]Diseño e implementacion b.componentes (final) | 2019-03-27 09:00 A | 2019-03-28 19:00 → 2019-04-01 10:15 A (+4d) | 16h → 25.25h | 0% → 100% | 27d → none | baseline finish 2019-03-28 19:00 → 2019-04-01 10:15 |
| 298 | [v1]Comportamientos grupales o comunicación basica entre NPCs |  | 2019-04-17 13:00 → 2019-04-15 09:00 (-2d) | 20h → 0.01h |  | 13.5d → 28.56d | baseline finish 2019-04-17 13:00 → 2019-04-15 09:00 |
| 299 | [v1]Level-Of-Detail para la IA | 2019-04-08 09:00 A | 2019-04-10 13:00 → 2019-04-08 10:48 A (-2d) | 20h → 1.8h | 0% → 100% | 16.5d → none | baseline finish 2019-04-10 13:00 → 2019-04-08 10:48 |
| 300 | [v1]Integracion de comportamientos en el juego | 2019-04-01 09:00 A | 2019-04-04 17:00 → 2019-04-05 15:09 (+1d) | 30h → 36.15h | 0% → 80% | 22.25d → 34.04d | baseline finish 2019-04-04 17:00 → 2019-04-05 15:09 |
| 301 | [v2]Agregar nivel 2 | 2019-04-08 09:00 A | 2019-04-09 17:00 → 2019-04-09 15:20 | 14h → 12.34h | 0% → 90% | 19.25d → 32.02d | baseline finish 2019-04-09 17:00 → 2019-04-09 15:20 |
| 302 | [v2]menu de selección de personaje y otros menus | 2019-04-01 09:00 A | 2019-04-02 11:00 → 2019-04-05 10:37 A (+3d) | 10h → 33.62h | 0% → 100% | 24.75d → none | baseline finish 2019-04-02 11:00 → 2019-04-05 10:37 |
| 303 | [v2]Tarea secundaria para integracion funcionalidades opengl en el juego | 2019-04-10 15:00 → 2019-04-10 09:00 | 2019-04-12 13:00 → 2019-04-10 09:00 (-2d) | 16h → 0.01h |  | 16.5d → 31.56d | baseline start 2019-04-10 15:00 → 2019-04-10 09:00; baseline finish 2019-04-12 13:00 → 2019-04-10 09:00 |
| 304 | [v2]Tarea secundaria para arreglos y mejoras | 2019-04-15 09:00 A | 2019-04-17 13:00 → 2019-04-22 09:01 A (+5d) | 20h → 40.02h | 0% → 100% | 13.5d → none | baseline finish 2019-04-17 13:00 → 2019-04-22 09:01 |
| 306 | [tds]Arreglos en tablas cuesheet y metadatos |  | 2019-04-01 13:00 → 2019-04-01 09:00 | 4h → 0.01h |  | 25.5d → 38.56d | baseline finish 2019-04-01 13:00 → 2019-04-01 09:00 |
| 307 | [tds]Integracion de sonidos en el videojuego | 2019-04-08 09:00 A | 2019-04-09 13:00 → 2019-04-08 11:10 (-1d) | 12h → 2.18h | 0% → 2% | 19.5d → 33.29d | baseline finish 2019-04-09 13:00 → 2019-04-08 11:10 |
| 308 | [rv]Texturizar Objetos |  | 2019-04-02 11:00 → 2019-04-01 09:00 (-1d) | 10h → 0.01h |  | 24.75d → 38.56d | baseline finish 2019-04-02 11:00 → 2019-04-01 09:00 |
| 309 | [rv]Texturizar personajes |  | 2019-04-05 11:00 → 2019-04-03 09:00 (-2d) | 18h → 0.01h |  | 21.75d → 36.56d | baseline finish 2019-04-05 11:00 → 2019-04-03 09:00 |
| 310 | [rv]Modelar nivel 2 | 2019-04-03 09:00 A | 2019-04-04 17:00 → 2019-04-11 11:22 A (+7d) | 14h → 50.38h | 0% → 100% | 22.25d → none | baseline finish 2019-04-04 17:00 → 2019-04-11 11:22 |
| 311 | [rv]modelar objetos y armas |  | 2019-04-04 12:00 → 2019-04-04 09:00 | 3h → 0.01h |  | 22.62d → 35.56d | baseline finish 2019-04-04 12:00 → 2019-04-04 09:00 |
| 312 | [rv]modelar rey pollo | 2019-04-01 09:00 A | 2019-04-02 17:00 → 2019-04-04 10:54 A (+2d) | 14h → 25.9h | 0% → 100% | 24.25d → none | baseline finish 2019-04-02 17:00 → 2019-04-04 10:54 |
| 313 | [rv]rigging de personajes |  | 2019-04-03 12:00 → 2019-04-03 09:00 | 3h → 0.01h |  | 23.62d → 36.56d | baseline finish 2019-04-03 12:00 → 2019-04-03 09:00 |
| 314 | [rv]captura de movimiento | 2019-04-08 09:00 A | 2019-04-09 11:00 → 2019-04-10 12:10 (+1d) | 10h → 19.18h | 0% → 90% | 19.75d → 31.16d | baseline finish 2019-04-09 11:00 → 2019-04-10 12:10 |
| 315 | [pd]Video escena final del juego | 2019-04-10 09:00 A | 2019-04-12 13:00 → 2019-04-12 16:09 | 20h → 21.15h | 0% → 50% | 16.5d → 28.92d | resources María Sánchez Marqués [20%] → Jose Ramon Barea Cecilia [20%]; baseline finish 2019-04-12 13:00 → 2019-04-12 16:09 |
| 316 | [tag]Optimizacion del codigo del motor | 2019-04-01 09:00 A | 2019-04-02 17:00 → 2019-04-04 12:02 A (+2d) | 14h → 27.04h | 0% → 100% | 24.25d → none | baseline finish 2019-04-02 17:00 → 2019-04-04 12:02 |
| 317 | [tag]Otros shaders | 2019-04-02 09:00 A | 2019-04-03 13:00 → 2019-04-04 15:00 A (+1d) | 12h → 20.01h | 0% → 100% | 23.5d → none | baseline finish 2019-04-03 13:00 → 2019-04-04 15:00 |
| 318 | [tag]Portales |  | 2019-04-09 10:00 → 2019-04-08 09:00 (-1d) | 9h → 0.01h |  | 19.88d → 33.56d | baseline finish 2019-04-09 10:00 → 2019-04-08 09:00 |
| 319 | [tag]Shadow Mapping | 2019-04-01 09:00 A | 2019-04-02 17:00 → 2019-04-01 11:49 (-1d) | 14h → 2.82h | 0% → 3% | 24.25d → 38.21d | baseline finish 2019-04-02 17:00 → 2019-04-01 11:49 |
| 320 | [tag]Tarea secundaria para entregable arbitrario | 2019-04-10 09:00 A | 2019-04-11 18:00 → 2019-04-17 10:45 A (+6d) | 15h → 41.75h | 0% → 100% | 17.12d → none | baseline finish 2019-04-11 18:00 → 2019-04-17 10:45 |
| 321 | [PM]Comparar la planificación prevista y real en Iteracion 13 | 2019-04-17 09:00 A | 2019-04-17 12:00 A |  | 0% → 100% | 13.62d → none |  |
| 322 | [PM]Confeccionar Informe de iteración 13 | 2019-04-17 09:00 A | 2019-04-17 13:00 A |  | 0% → 100% | 13.5d → none |  |
| 324 | Semana santa |  |  | 1d? → 1d |  | 13d → 24.5d |  |
| 325 | **Iteracion 14** |  | 2019-05-06 19:00 → 2019-05-23 15:30 (+17d) | 1d? → 13.56d |  |  | baseline finish 2019-05-06 19:00 → 2019-05-22 13:00 |
| 354 | Version terminada | 2019-05-06 19:00 → 2019-05-23 15:30 (+17d) | 2019-05-06 19:00 → 2019-05-23 15:30 (+17d) |  |  |  | baseline start 2019-05-06 19:00 → 2019-05-22 13:00; baseline finish 2019-05-06 19:00 → 2019-05-22 13:00 |

## Version 29 (data date 2019-05-24, saved 2019-05-25)

Note of the change: Update ABP Planificacion.mpp

Last finish stays 2019-05-23. Complete tasks 216 → 242.

Changed:

| ID | Task | Start | Finish | Complete | Total float |
| --- | --- | --- | --- | --- | --- |
| 291 | **hito 4** |  |  | 40% → 97% |  |
| 325 | **Iteracion 14** | 2019-05-06 09:00 A |  | 0% → 99% |  |
| 326 | [PM]Detallar plan de iteración Abril-Mayo. Creación Subtareas y precedencias en Project | 2019-05-06 09:00 A | 2019-05-06 13:00 A | 0% → 100% | 13.06d → none |
| 327 | [PM]Detallar plan de iteración Abril-Mayo. Asignar recursos a las tareas en Project | 2019-05-06 09:00 A | 2019-05-06 12:00 A | 0% → 100% | 13.19d → none |
| 328 | [PM]Registrar tiempos y % de realización de tareas en Project | 2019-05-06 09:00 A | 2019-05-06 09:48 A | 0% → 100% | 13.46d → none |
| 329 | [v2]Diseño e implementación b.objetos (final) | 2019-05-06 09:00 A | 2019-05-07 11:00 A | 0% → 100% | 12.31d → none |
| 330 | [v2]Diseño e implementacion b.componentes (final) | 2019-05-06 09:00 A | 2019-05-08 16:00 A | 0% → 100% | 10.94d → none |
| 331 | [v1v2]Reiniciar partida, arboles, LOD | 2019-05-08 09:00 A | 2019-05-10 09:30 A | 0% → 100% | 9.5d → none |
| 332 | [v1]Integracion de comportamientos en el juego | 2019-05-08 09:00 A | 2019-05-16 16:30 A | 0% → 100% | 4.88d → none |
| 333 | [v2]Agregar nivel 2 | 2019-05-08 09:00 A | 2019-05-09 12:00 A | 0% → 100% | 10.19d → none |
| 334 | [v2]Tarea secundaria para integracion funcionalidades opengl en el juego | 2019-05-08 09:00 A | 2019-05-09 19:00 A | 0% → 100% | 9.56d → none |
| 335 | [v2]Tarea secundaria para arreglos y mejoras | 2019-05-13 09:00 A | 2019-05-23 15:30 A | 0% → 100% | 0d → none |
| 336 | [tds]Arreglos en tablas cuesheet y metadatos | 2019-05-10 09:00 A | 2019-05-10 10:00 A | 0% → 100% | 9.44d → none |
| 337 | [tds]Integracion de sonidos en el videojuego | 2019-05-10 09:00 A | 2019-05-23 15:30 A | 0% → 100% | 0d → none |
| 338 | [rv]Texturizar Objetos | 2019-05-14 09:00 A | 2019-05-22 18:30 A | 0% → 100% | 0.62d → none |
| 339 | [rv]Texturizar personajes | 2019-05-14 09:00 A | 2019-05-17 17:45 A | 0% → 100% | 3.72d → none |
| 340 | [rv]modelar objetos y armas | 2019-05-13 09:00 A | 2019-05-16 12:51 A | 0% → 100% | 5.08d → none |
| 341 | [rv]rigging de personajes | 2019-05-16 09:00 A | 2019-05-22 18:00 A | 0% → 100% | 0.69d → none |
| 342 | [rv]captura de movimiento | 2019-05-20 09:00 A | 2019-05-20 17:09 A | 0% → 100% | 2.79d → none |
| 343 | [rv]arreglos y mejoras | 2019-05-21 09:00 A | 2019-05-22 17:00 A | 0% → 100% | 0.81d → none |
| 345 | [pd]Video escena final del juego | 2019-05-17 09:00 A | 2019-05-23 11:48 A | 0% → 100% | 0.21d → none |
| 346 | [tag]Optimizacion del codigo del motor | 2019-05-20 09:00 A | 2019-05-20 12:00 A | 0% → 100% | 3.19d → none |
| 347 | [tag]Portales | 2019-05-20 09:00 A |  |  |  |
| 348 | [tag]Shadow Mapping | 2019-05-15 09:00 A | 2019-05-20 11:30 A | 0% → 100% | 3.25d → none |
| 349 | [tag]Tarea secundaria para entregable arbitrario | 2019-05-14 09:00 A | 2019-05-22 12:00 A | 0% → 100% | 1.19d → none |
| 350 | [General] Scrum | 2019-05-06 09:00 A | 2019-05-07 17:00 A | 0% → 100% | 11.81d → none |
| 351 | [PM]Comparar la planificación prevista y real en Hito 4 | 2019-05-21 09:00 A | 2019-05-21 11:00 A | 0% → 100% | 2.31d → none |
| 352 | [PM]Confeccionar Informes de iteración e informe resumen de Hito 4 | 2019-05-21 09:00 A | 2019-05-21 10:00 A | 0% → 100% | 2.44d → none |
| 353 | Elaborar la presentación del Hito 4 | 2019-05-06 09:00 A | 2019-05-06 13:00 A | 0% → 100% | 13.06d → none |
